# CP09_Silversands - Landscape Works_Phase 1_Rev.01 Mit _UP_ 2026-06-07

Schedule from Primavera P6, 2023-03-05 to 2026-11-18, data date 2026-06-07, costs in USD, A marks actual dates.
Must finish by 2026-01-31

## Calendars

- CP09-6 Days: Mon-Thu 08:00-16:00; Fri off; Sat-Sun 08:00-16:00. Exceptions (off unless hours are given): 2023-03-23 9:00-15:00, 2023-03-25 to 2023-03-30 9:00-15:00, 2023-04-01 to 2023-04-06 9:00-15:00, 2023-04-08 to 2023-04-13 9:00-15:00, 2023-04-15 to 2023-04-16 9:00-15:00, 2023-04-17, 2023-04-18 to 2023-04-20 9:00-15:00, 2023-04-22 to 2023-04-27, 2023-04-29 to 2023-05-04, 2023-06-28 to 2023-06-29, 2023-07-01 to 2023-07-06, 2023-07-19, 2023-07-23, 2023-09-27, 2023-11-16, 2023-11-18 to 2023-11-19, 2023-12-02 to 2023-12-07, 2024-01-07, 2024-01-13 to 2024-01-17, 2024-01-25, 2024-01-28 to 2024-02-01, 2024-02-03, 2024-03-10 to 2024-03-14 9:00-15:00, 2024-03-16 to 2024-03-21 9:00-15:00, 2024-03-23 to 2024-03-28 9:00-15:00, 2024-03-30 to 2024-04-04 9:00-15:00, 2024-04-06 to 2024-04-09 9:00-15:00, 2024-04-10 to 2024-04-11, 2024-04-13 to 2024-04-18, 2024-05-01, 2024-05-06, 2024-06-15 to 2024-06-20, 2024-07-07, 2024-07-23, 2024-09-15, 2024-10-06, 2025-01-07, 2025-01-25, 2025-03-01 to 2025-03-06 9:00-15:00, 2025-03-08 to 2025-03-13 9:00-15:00, 2025-03-15 to 2025-03-20 9:00-15:00, 2025-03-22 to 2025-03-27 9:00-15:00, 2025-03-29 9:00-15:00, 2025-03-30 to 2025-04-03, 2025-04-21, 2025-06-04 to 2025-06-05, 2025-06-07 to 2025-06-12, 2025-06-26, 2025-07-23, 2025-09-04, 2025-10-06.
- 7-Day Workweek: Mon-Sun 08:00-16:00.
- CP09-6 Days: Mon-Thu 08:00-16:00; Fri off; Sat-Sun 08:00-16:00. Exceptions (off unless hours are given): 2023-03-23 9:00-15:00, 2023-03-25 to 2023-03-30 9:00-15:00, 2023-04-01 to 2023-04-06 9:00-15:00, 2023-04-08 to 2023-04-13 9:00-15:00, 2023-04-15 to 2023-04-16 9:00-15:00, 2023-04-17, 2023-04-18 to 2023-04-20 9:00-15:00, 2023-04-22 to 2023-04-27, 2023-04-29 to 2023-05-04, 2023-06-28 to 2023-06-29, 2023-07-01 to 2023-07-06, 2023-07-19, 2023-07-23, 2023-09-27, 2023-11-16, 2023-11-18 to 2023-11-19, 2023-12-02 to 2023-12-07, 2024-01-07, 2024-01-13 to 2024-01-17, 2024-01-25, 2024-01-28 to 2024-02-01, 2024-02-03, 2024-03-10 to 2024-03-14 9:00-15:00, 2024-03-16 to 2024-03-21 9:00-15:00, 2024-03-23 to 2024-03-28 9:00-15:00, 2024-03-30 to 2024-04-04 9:00-15:00, 2024-04-06 to 2024-04-09 9:00-15:00, 2024-04-10 to 2024-04-11, 2024-04-13 to 2024-04-18, 2024-05-01, 2024-05-06, 2024-06-15 to 2024-06-20, 2024-07-07, 2024-07-23, 2024-09-15, 2024-10-06, 2025-01-07, 2025-01-25, 2025-03-01 to 2025-03-06 9:00-15:00, 2025-03-08 to 2025-03-13 9:00-15:00, 2025-03-15 to 2025-03-20 9:00-15:00, 2025-03-22 to 2025-03-27 9:00-15:00, 2025-03-29 9:00-15:00, 2025-03-30 to 2025-04-03, 2025-04-21, 2025-06-04 to 2025-06-05, 2025-06-07 to 2025-06-12, 2025-06-26, 2025-07-23, 2025-09-04, 2025-10-06.
- CP09-7 Days: Mon-Sun 08:00-16:00.

## Resources

| Resource | Group | Unit | Rate |
| --- | --- | --- | --- |
| Cost | material |  | 1 |
| EXCAVATOR | equipment |  |  |
| LOADER | equipment |  |  |
| TRUCK | equipment |  |  |
| Labor | labor |  |  |
| Excavation | material | M3 |  |
| Mason | labor |  |  |
| Plain Concrete | material | M3 |  |
| Waterproofing | material | M2 |  |
| Steel Fixer | labor |  |  |
| Shutter | labor |  |  |
| Reinforced Concrete | material | M3 |  |
| Blocks | material |  |  |
| Backfilling | material | M3 |  |
| Mosaic | material |  |  |
| Granit-Coping | material |  |  |
| Stanless Steel Ladders | material |  |  |
| Stanless Steel Handrial | material |  |  |
| Drainage Gravel | material |  |  |
| Filling | material | M3 |  |
| HDPE | material | M |  |
| Marble | material |  |  |
| Concrete /Exposed Aggregate | material |  |  |
| WPC | material |  |  |
| Gravel Layer | material |  |  |
| Geotextile Sheets | material |  |  |
| Crushed Dolomite stone | material |  |  |
| Loose gravel | material |  |  |
| Clean sand | material |  |  |
| Crushed Stone | material |  |  |
| Interlock | material |  |  |
| Marble Coping | material |  |  |
| Marble Step | material |  |  |
| Flush Curb | material |  |  |
| Glass Handrail | material |  |  |
| Pitch Pine Picnic Table | material |  |  |
| Crcular Cast-iron tree grate | material |  |  |
| Aluminium Cabana | material |  |  |
| Pitch Pine Benchs | material |  |  |
| Polyester Hammocks | material |  |  |
| Adult Play Swing | material |  |  |
| Aluminum Trash Bin | material |  |  |
| tensile Teflon Tent | material |  |  |
| Lanscape Edging ( Rubber) | material |  |  |
| Sweet sand | material |  |  |
| Organic Manure | material |  |  |
| Large Trees | material |  |  |
| Shrubs | material |  |  |
| Ground Covers | material |  |  |
| Succulents | material |  |  |
| Vines & Climbers | material |  |  |
| Ornamental grass | material |  |  |
| Lawn | material |  |  |
| Fitness equipment | material |  |  |
| Kids equipment | material |  |  |
| Sign | material |  |  |
| PipeFitter | labor |  |  |
| UPVC Pipes | material | M |  |
| Dripline | material | Nos_ |  |
| Sprinkle | material | Nos_ |  |
| Valves | material |  |  |
| Solenoid valve | material |  |  |
| Controller | material |  |  |
| Controller Cable | material |  |  |
| Decoder station | material |  |  |
| Electrical Cable | material |  |  |
| Electrican | labor |  |  |
| Pillars | material |  |  |
| Lighting Pole | material |  |  |
| Bollard | material |  |  |
| Diffused Wall | material |  |  |
| Inground Uplight | material |  |  |
| Projectors For Trees | material |  |  |
| Surface Mountaed Light | material |  |  |
| Outlet Lighting Fixtiure | material |  |  |
| Plaster | material |  |  |
| Paint | material |  |  |
| Painter | labor |  |  |
| Epoxy for flooring | material |  |  |
| Metals for MR | material |  |  |

## Schedule

| ID | WBS | Activity | Type | Duration | Start | Finish | Predecessors | Complete | Planned start | Planned finish | Total float | Free float | Constraint | Calendar | CP09_Milestone-7 |
| --- | --- | --- | --- | --- | --- | --- | --- | --- | --- | --- | --- | --- | --- | --- | --- |
|  | 1 | **Contract Sections & Milestones** |  |  | 2024-02-10 | 2026-11-18 |  |  |  |  |  |  |  |  |  |
| CP09-MS-1010 |  | Project Commencment Date | milestone | 0d | 2024-02-10 A | 2024-02-10 A |  | 100% |  |  |  |  | start on 2024-02-10 |  |  |
| CP09-CLD-1000 |  | Site Possession | milestone | 0d | 2024-02-10 A | 2024-02-10 A | CP09-MS-1010 SS | 100% |  |  |  |  |  |  |  |
| CP09-CLD-1010 |  | IFC Drwaings Issuance | milestone | 0d | 2024-02-10 A | 2024-02-10 A | CP09-MS-1010 | 100% |  |  |  |  |  |  |  |
| CP09-MS-1000 |  | Project Completion Date | milestone | 0d | 2026-11-18 | 2026-11-18 | SS.CSM.1090, SS.CSM.1100, SS.CSM.1110, SS.CSM.1120, SS.CSM.1130, SS.CSM.1140, SS.CSM.1150, CP09-MS1-1000, CP09-SE1-1010, CP09-MS2-1000, CP09-SE2-1010, CP09-MS3-1000, CP09-SE3-1010, CP09-MS4-1000, CP09-SE4-1010 |  |  |  | -249.06d | 0d |  |  |  |
|  | ADM | **Adminstratlve &Pre- Construction** |  |  | 2024-02-20 | 2026-06-30 |  |  |  |  |  |  |  |  |  |
|  | SUB | **Pre-Construction Submittals** |  |  | 2024-02-20 | 2026-06-17 |  |  |  |  |  |  |  |  |  |
| SS.CSM.1010 |  | HSE Plan Submittal |  | 7d | 2024-02-20 A | 2024-02-28 A | CP09-MS-1010 | 100% | 2024-08-06 | 2024-08-13 |  |  |  |  |  |
| SS.CSM.1020 |  | QC Plan Submittal |  | 7d | 2024-02-20 A | 2024-02-28 A | CP09-MS-1010 | 100% | 2024-08-06 | 2024-08-13 |  |  |  |  |  |
| SS.CSM.1030 |  | Baseline Schedule Submittal |  | 7d | 2024-03-20 A | 2024-03-27 A | CP09-MS-1010 | 100% | 2024-08-06 | 2024-08-13 |  |  |  |  |  |
| SS.CSM.1040 |  | Excution Plan Submittal |  | 7d | 2024-04-07 A | 2024-04-14 A | CP09-MS-1010 | 100% | 2024-08-06 | 2024-08-13 |  |  |  |  |  |
| SS.CSM.1050 |  | Method of Statement Submittal |  | 7d | 2024-04-15 A | 2024-04-21 A | CP09-MS-1010 | 100% | 2024-08-06 | 2024-08-13 |  |  |  |  |  |
| SS.CSM.1060 |  | Risk Mangement Plan Submittal |  | 7d | 2026-06-07 | 2026-06-14 | CP09-MS-1010 |  |  |  | -129d | 0d |  |  |  |
| SS.CSM.1070 |  | Logistic Plan Submittal |  | 7d | 2026-06-07 | 2026-06-14 | CP09-MS-1010 |  |  |  | -129d | 0d |  |  |  |
| SS.CSM.1080 |  | Performance Bond Insurance |  | 10d | 2026-06-07 | 2026-06-17 | CP09-MS-1010 |  |  |  | -118d | 131.06d |  |  |  |
|  | APP | **Pre-Construction Approvals** |  |  | 2024-03-06 | 2026-06-30 |  |  |  |  |  |  |  |  |  |
| SS.CSM.1090 |  | HSE Plan Approval |  | 14d | 2024-03-06 A | 2024-03-13 A | SS.CSM.1010 | 100% | 2024-08-14 | 2024-08-29 |  |  |  |  |  |
| SS.CSM.1100 |  | QC Plan Approval |  | 14d | 2024-04-02 A | 2024-04-09 A | SS.CSM.1020 | 100% | 2024-08-14 | 2024-08-29 |  |  |  |  |  |
| SS.CSM.1110 |  | Excution Plan Approval |  | 14d | 2024-04-14 A | 2024-04-28 A | SS.CSM.1040 | 100% | 2024-08-14 | 2024-08-29 |  |  |  |  |  |
| SS.CSM.1120 |  | Method of Statement Approval |  | 14d | 2024-05-01 A | 2024-05-13 A | SS.CSM.1050 | 100% | 2024-08-14 | 2024-08-29 |  |  |  |  |  |
| SS.CSM.1150 |  | Baseline Schedule Approval |  | 14d | 2024-07-02 A | 2024-07-17 A | SS.CSM.1030 | 100% | 2024-09-08 | 2024-09-24 |  |  |  |  |  |
| SS.CSM.1130 |  | Risk Mangement Plan Approval |  | 14d | 2026-06-15 | 2026-06-30 | SS.CSM.1060 |  |  |  | -129d | 120.06d |  |  |  |
| SS.CSM.1140 |  | Logistic Plan Approval |  | 14d | 2026-06-15 | 2026-06-30 | SS.CSM.1070 |  |  |  | -129d | 120.06d |  |  |  |
|  | 1 | **Key Dates & Milestones** |  |  | 2026-08-04 | 2026-11-18 |  |  |  |  |  |  |  |  |  |
| CP09-MS1-1000 |  | Completion of all Hardscape Works for Terraces 1,2 | milestone | 0d | 2026-08-04 | 2026-08-04 | CP09-HO-MS1-HD-1110 |  |  |  | -185d | 105.06d | finish on or before 2026-01-31 | CP09-7 Days | MS#01 |
| CP09-SE1-1010 |  | Completion of all Softcape Works for Terraces 1,2 | milestone | 0d | 2026-08-13 | 2026-08-13 | CP09-HO-SE1-SF-1150 |  |  |  | -195d | 96.06d | finish on or before 2026-01-31 | CP09-7 Days | MS#01 |
| CP09-MS2-1000 |  | Completion of all Hardscape Works for Terraces 3,4 | milestone | 0d | 2026-08-17 | 2026-08-17 | CP09-HO-MS2-SW-1030, CP09-HO-MS2-HD-1070 |  |  |  | -197.44d | 92.62d | finish on or before 2026-01-31 | CP09-7 Days | MS#02 |
| CP09-MS3-1000 |  | Completion of all Hardscape Works for Terraces 5,6 | milestone | 0d | 2026-09-27 | 2026-09-27 | CP09-HO-MS3-SW-1070, CP09-HO-MS3-HD-1110 |  |  |  | -239.81d | 51.25d | finish on or before 2026-01-31 | CP09-7 Days | MS#03 |
| CP09-SE2-1010 |  | Completion of all Softscape Works for Terraces 3,4 | milestone | 0d | 2026-09-27 | 2026-09-27 | CP09-HO-SE2-SF-1110 |  |  |  | -238.94d | 51.12d | finish on or before 2026-01-31 | CP09-7 Days | MS#02 |
| CP09-SE3-1010 |  | Completion of all Softcape Works for Terraces 5.6 | milestone | 0d | 2026-10-07 | 2026-10-07 | CP09-HO-SE3-SF-1150 |  |  |  | -249.69d | 41.38d | finish on or before 2026-01-31 | CP09-7 Days | MS#03 |
| CP09-MS4-1000 |  | Completion of all Hardscape Works for Terraces 7,8 | milestone | 0d | 2026-11-02 | 2026-11-02 | CP09-HO-MS4-SW-1110, CP09-HO-MS4-HD-1150 |  |  |  | -275.12d | 15.94d | finish on or before 2026-01-31 | CP09-7 Days | MS#04 |
| CP09-SE4-1010 |  | Completion of all Softcape Works for Terraces 7,8 | milestone | 0d | 2026-11-18 | 2026-11-18 | CP09-HO-SE4-SF-1190 |  |  |  | -290.44d | 0d | finish on or before 2026-01-31 | CP09-7 Days | MS#04 |

| ID | WBS | Activity | Duration | Start | Finish | Predecessors | Complete | Planned start | Planned finish | CP09_Discipline-7 |
| --- | --- | --- | --- | --- | --- | --- | --- | --- | --- | --- |
|  | 9 | **Moblization** |  | 2024-02-10 | 2024-02-20 |  |  |  |  |  |
| CP09-MB-1010 |  | Mobilization Facilities Finishes | 10d | 2024-02-10 A | 2024-02-20 A | CP09-MS-1010 | 100% |  |  |  |
|  | 3 | **Procurement** |  | 2024-02-07 | 2026-07-19 |  |  |  |  |  |
|  | 1 | **Material Submittal** |  | 2024-02-07 | 2026-01-16 |  |  |  |  |  |
|  | 1 | **Civil Materials** |  | 2024-02-26 | 2026-01-16 |  |  |  |  |  |
| CP09-PR-CV-S-1120 |  | Marble for Cheek & Retainig Walls -Material Submittal | 7d | 2024-02-26 A | 2024-05-22 A | CP09-PR-CV-S-1040 SS | 100% | 2024-02-26 | 2024-03-04 | PRO |
| CP09-PR-CV-S-1000 |  | Concrete Mix - Material Submittal | 7d | 2024-06-15 A | 2024-06-30 A | CP09-CLD-1010 | 100% | 2024-08-06 | 2024-08-13 | PRO |
| CP09-PR-CV-S-1130 |  | Rebars - Material Submittal | 7d | 2024-07-10 A | 2024-07-13 A | CP09-CLD-1010 | 100% | 2024-08-06 | 2024-08-13 | PRO |
| CP09-PR-CV-S-1010 |  | Waterproofing - Material Submittal | 7d | 2024-07-20 A | 2024-07-29 A | CP09-PR-CV-S-1000 SS | 100% | 2024-08-31 | 2024-09-07 | PRO |
| CP09-PR-CV-S-1020 |  | Block- Material Submittal | 7d | 2025-05-18 A | 2025-05-22 A | CP09-PR-CV-S-1000 | 100% | 2025-05-18 | 2025-05-25 | PRO |
| CP09-PR-CV-S-1030 |  | Mosaic - Material Submittal | 7d | 2025-05-18 A | 2025-05-22 A | CP09-PR-CV-S-1000 | 100% | 2025-05-18 | 2025-05-25 | PRO |
| CP09-PR-CV-S-1070 |  | Plaster Accessories -Material Submittal | 7d | 2025-05-18 A | 2025-05-22 A | CP09-PR-CV-S-1020 | 100% | 2025-05-26 | 2025-06-02 | PRO |
| CP09-PR-CV-S-1090 |  | Geotextile & Geocomposit for Machine Room - Material Submittal | 7d | 2025-05-18 A | 2025-05-22 A | CP09-PR-CV-S-1000 | 100% | 2025-05-18 | 2025-05-25 | PRO |
| CP09-PR-CV-S-1110 |  | Epoxy for Machine Room - Material Submittal | 7d | 2025-05-18 A | 2025-05-22 A | CP09-PR-CV-S-1080, CP09-PR-CV-S-1070 | 100% | 2025-06-21 | 2025-06-29 | PRO |
| CP09-PR-CV-S-1040 |  | Granite for Swimming Pool - Material Submittal | 7d | 2025-08-18 A | 2025-08-22 A | CP09-PR-CV-S-1030 | 100% | 2025-08-24 | 2025-08-31 | PRO |
| CP09-PR-CV-S-1050 |  | Stanless Steel Ladders for Swimming Pool - Material Submittal | 7d | 2025-08-18 A | 2025-08-22 A | CP09-PR-CV-S-1030, CP09-PR-CV-S-1040 | 100% | 2025-09-01 | 2025-09-09 | PRO |
| CP09-PR-CV-S-1060 |  | Stanless Steel Handrial for Swimming Pool - Material Submittal | 7d | 2025-08-18 A | 2025-08-22 A | CP09-PR-CV-S-1030, CP09-PR-CV-S-1040 | 100% | 2025-09-01 | 2025-09-09 | PRO |
| CP09-PR-CV-S-1100 |  | Drainage Gravel for Machine Room - Material Submittal | 7d | 2025-08-18 A | 2025-08-22 A | CP09-PR-CV-S-1000 | 100% | 2025-08-24 | 2025-08-31 | PRO |
| CP09-PR-CV-S-1080 |  | Emulsion Paint - Material Submittal | 7d | 2026-01-12 A | 2026-01-16 A | CP09-PR-CV-S-1070 | 100% | 2025-08-24 | 2025-08-31 | PRO |
|  | 2 | **Hardscape Materials** |  | 2024-02-10 | 2025-08-22 |  |  |  |  |  |
| CP09-PR-HD-S-1010 |  | Marble Paving - Material Submittal | 7d | 2024-02-10 A | 2024-05-22 A | CP09-CLD-1010 | 100% | 2024-02-10 | 2024-02-17 | PRO |
| CP09-PR-HD-S-1080 |  | Flush Curb -Material Submittal | 3d | 2024-02-10 A | 2024-05-12 A | CP09-CLD-1010 | 100% | 2024-02-10 | 2024-02-12 | PRO |
| CP09-PR-HD-S-1180 |  | Interlocks -Material Submittal | 7d | 2024-02-10 A | 2024-05-08 A | CP09-CLD-1010 | 100% | 2024-02-10 | 2024-02-17 | PRO |
| CP09-PR-HD-S-1100 |  | Marble for Steps -Material Submittal | 7d | 2024-02-18 A | 2024-05-22 A | CP09-CLD-1010, CP09-PR-HD-S-1090 | 100% | 2024-02-18 | 2024-02-25 | PRO |
| CP09-PR-HD-S-1110 |  | Marble for Seat - Material Submittal | 7d | 2024-02-18 A | 2024-05-22 A | CP09-CLD-1010, CP09-PR-HD-S-1100 SS | 100% | 2024-02-18 | 2024-02-25 | PRO |
| CP09-PR-HD-S-1000 |  | Concrete Exposed Aggeregate - Material Submittal | 7d | 2025-05-18 A | 2025-05-22 A | CP09-CLD-1010 | 100% | 2025-05-18 | 2025-05-25 | PRO |
| CP09-PR-HD-S-1020 |  | WPC -Material Submittal | 7d | 2025-05-18 A | 2025-08-22 A | CP09-CLD-1010 | 100% | 2025-08-24 | 2025-08-31 | PRO |
| CP09-PR-HD-S-1030 |  | Gravel Layer - Material Submittal | 7d | 2025-05-18 A | 2025-08-22 A | CP09-CLD-1010 | 100% | 2025-08-24 | 2025-08-31 | PRO |
| CP09-PR-HD-S-1040 |  | Crushed Dolomite stone -Material Submittal | 7d | 2025-05-18 A | 2025-08-22 A | CP09-CLD-1010 | 100% | 2025-08-24 | 2025-08-31 | PRO |
| CP09-PR-HD-S-1050 |  | Loose gravel - Material Submittal | 7d | 2025-05-18 A | 2025-08-22 A | CP09-CLD-1010 | 100% | 2025-08-24 | 2025-08-31 | PRO |
| CP09-PR-HD-S-1060 |  | Geotextile Sheets -Material Submittal | 7d | 2025-05-18 A | 2025-05-22 A | CP09-CLD-1010 | 100% | 2025-05-18 | 2025-05-25 | PRO |
| CP09-PR-HD-S-1070 |  | Clean sand layer - Material Submittal | 7d | 2025-05-18 A | 2025-05-22 A | CP09-CLD-1010 | 100% | 2025-05-18 | 2025-05-25 | PRO |
| CP09-PR-HD-S-1090 |  | Crush Stone below Interlock - Material Submittal | 7d | 2025-05-18 A | 2025-08-22 A | CP09-CLD-1010 | 100% | 2025-08-24 | 2025-08-31 | PRO |
| CP09-PR-HD-S-1120 |  | Mica -Material Submittal | 7d | 2025-05-18 A | 2025-08-22 A | CP09-CLD-1010, CP09-PR-HD-S-1100 | 100% | 2025-08-24 | 2025-08-31 | PRO |
| CP09-PR-HD-S-1130 |  | Blast stone blocks - Material Submittal | 7d | 2025-05-18 A | 2025-08-22 A | CP09-CLD-1010, CP09-PR-HD-S-1120 SS | 100% | 2025-08-24 | 2025-08-31 | PRO |
| CP09-PR-HD-S-1140 |  | Loose Rounded Pebbles - Material Submittal | 7d | 2025-05-18 A | 2025-08-22 A | CP09-CLD-1010, CP09-PR-HD-S-1130 SS | 100% | 2025-08-24 | 2025-08-31 | PRO |
| CP09-PR-HD-S-1150 |  | Shower Head -Material Submittal | 7d | 2025-05-18 A | 2025-08-22 A | CP09-CLD-1010, CP09-PR-HD-S-1130 SS | 100% | 2025-08-24 | 2025-08-31 | PRO |
| CP09-PR-HD-S-1160 |  | Stainless Handrail - Material Submittal | 7d | 2025-05-18 A | 2025-08-22 A | CP09-CLD-1010, CP09-PR-HD-S-1100, CP09-PR-HD-S-1110 | 100% | 2025-08-24 | 2025-08-31 | PRO |
| CP09-PR-HD-S-1170 |  | Glass Handrail -Material Submittal | 7d | 2025-05-18 A | 2025-08-22 A | CP09-CLD-1010, CP09-PR-HD-S-1150 SS | 100% | 2025-08-24 | 2025-08-31 | PRO |

| ID | WBS | Activity | Duration | Start | Finish | Predecessors | Complete | Planned start | Planned finish | CP09_Discipline-7 |
| --- | --- | --- | --- | --- | --- | --- | --- | --- | --- | --- |
|  | 8 | **Sinage** |  | 2024-05-19 | 2025-05-22 |  |  |  |  |  |
| CP09-PR-SN-S-1000 |  | STREET DIRECTIONAL SIGN -Material Submittal | 5d | 2024-05-19 A | 2025-05-22 A | CP09-CLD-1010, CP09-PR-SN-S-1040 SS | 100% | 2024-03-26 | 2024-04-03 | PRO |
| CP09-PR-SN-S-1010 |  | DIRECTIONAL SIGN - Material Submittal | 7d | 2024-05-19 A | 2025-05-22 A | CP09-CLD-1010, CP09-PR-SN-S-1000 SS | 100% | 2024-03-26 | 2024-04-06 | PRO |
| CP09-PR-SN-S-1020 |  | UNIT ID SIGN -Material Submittal | 5d | 2024-05-19 A | 2025-05-22 A | CP09-PR-FN-S-1000 | 100% | 2024-03-26 | 2024-04-03 | PRO |
| CP09-PR-SN-S-1030 |  | RULES SIGN - Material Submittal | 5d | 2024-05-19 A | 2025-05-22 A | CP09-PR-SN-S-1020 SS | 100% | 2024-03-26 | 2024-04-03 | PRO |
| CP09-PR-SN-S-1040 |  | IDENTIFICATION SIGN -Material Submittal | 5d | 2024-05-19 A | 2025-05-22 A | CP09-PR-SN-S-1030 SS | 100% | 2024-03-26 | 2024-04-03 | PRO |
|  | 4 | **Electrical Materials** |  | 2024-02-10 | 2025-08-22 |  |  |  |  |  |
|  | 1 | **Swimming pool & MR** |  | 2025-05-18 | 2025-08-22 |  |  |  |  |  |
| CP09-PR-EL-S-1000 |  | Conduits - Material Submittal | 7d | 2025-05-18 A | 2025-05-22 A | CP09-CLD-1010 | 100% | 2025-05-18 | 2025-05-25 | PRO |
| CP09-PR-EL-S-1010 |  | Cable tray - Material Submittal | 7d | 2025-05-18 A | 2025-05-22 A | CP09-CLD-1010 | 100% | 2025-05-18 | 2025-05-25 | PRO |
| CP09-PR-EL-S-1030 |  | Power Cables & Wires - Material Submittal | 7d | 2025-05-18 A | 2025-05-22 A | CP09-PR-EL-S-1020 SS | 100% | 2025-05-18 | 2025-05-25 | PRO |
| CP09-PR-EL-S-1040 |  | Earthing System -Material Submittal | 7d | 2025-05-18 A | 2025-05-22 A | CP09-PR-EL-S-1030 SS | 100% | 2025-05-18 | 2025-05-25 | PRO |
| CP09-PR-EL-S-1050 |  | Lighting Outlets , Switches Fixture - Material Submittal | 7d | 2025-05-18 A | 2025-05-22 A | CP09-PR-EL-S-1040 | 100% | 2025-05-26 | 2025-06-02 | PRO |
| CP09-PR-EL-S-1140 |  | Underwater Recessed Spotlight Material Submittal | 7d | 2025-05-18 A | 2025-05-22 A | CP09-PR-EL-S-1050 SS | 100% | 2025-05-26 | 2025-06-02 | PRO |
| CP09-PR-EL-S-1020 |  | Panel boards - Material Submittal | 7d | 2025-08-18 A | 2025-08-22 A | CP09-PR-EL-S-1010 SS | 100% | 2025-08-24 | 2025-08-31 | PRO |
|  | 2 | **Landscape** |  | 2024-02-10 | 2024-05-05 |  |  |  |  |  |
| CP09-PR-EL-S-1060 |  | Power Cables for Landscape Lighting - Material Submittal | 7d | 2024-02-10 A | 2024-05-05 A | CP09-CLD-1010 | 100% | 2024-02-10 | 2024-02-17 | PRO |
| CP09-PR-EL-S-1080 |  | Lighting Pole - Material Submittal | 7d | 2024-02-10 A | 2024-05-05 A | CP09-CLD-1010 | 100% | 2024-02-10 | 2024-02-17 | PRO |
|  | 3 | **Mechnical Materials** |  | 2025-05-18 | 2025-05-22 |  |  |  |  |  |
|  | 1 | **Swimmimng Pool & MR** |  | 2025-05-18 | 2025-05-22 |  |  |  |  |  |
| CP09-PR-ME-S-1000 |  | UPVC pipes,Fitting -Material Submittal | 7d | 2025-05-18 A | 2025-05-22 A | CP09-CLD-1010, CP09-CLD-1010 SS | 100% | 2025-05-18 | 2025-05-25 | PRO |
|  | 6 | **Irrigation Materials** |  | 2024-02-07 | 2024-04-29 |  |  |  |  |  |
| CP09-PR-IR-S-1020 |  | Rings -Material Submittal | 5d | 2024-02-07 A | 2024-02-29 A | CP09-PR-IR-S-1000 SS | 100% | 2024-02-10 | 2024-02-14 | PRO |
| CP09-PR-IR-S-1030 |  | Valves -Material Submittal | 5d | 2024-02-07 A | 2024-02-29 A | CP09-PR-IR-S-1000 SS | 100% | 2024-02-10 | 2024-02-14 | PRO |
| CP09-PR-IR-S-1040 |  | Pop up Multi ray sprinkler-Material Submittal | 5d | 2024-02-07 A | 2024-04-29 A | CP09-PR-IR-S-1000 SS | 100% | 2024-02-10 | 2024-02-14 | PRO |
| CP09-PR-IR-S-1070 |  | Direct Cables -Material Submittal | 5d | 2024-02-07 A | 2024-02-17 A | CP09-PR-IR-S-1050 SS | 100% | 2024-02-10 | 2024-02-14 | PRO |
| CP09-PR-IR-S-1000 |  | UPVC pipes for Sub-main Line & Lateral -Material Submittal | 5d | 2024-02-10 A | 2024-04-28 A | CP09-CLD-1010 | 100% | 2024-02-10 | 2024-02-14 | PRO |
| CP09-PR-IR-S-1010 |  | Drip line-Material Submittal | 5d | 2024-02-10 A | 2024-02-28 A | CP09-PR-IR-S-1000 SS | 100% | 2024-02-10 | 2024-02-14 | PRO |
| CP09-PR-IR-S-1050 |  | Electrical Solenoid Valve -Material Submittal | 5d | 2024-02-12 A | 2024-02-17 A | CP09-PR-IR-S-1030 SS | 100% | 2024-02-10 | 2024-02-14 | PRO |
| CP09-PR-IR-S-1060 |  | Test Controller -Material Submittal | 5d | 2024-02-12 A | 2024-02-17 A | CP09-PR-IR-S-1050 SS | 100% | 2024-02-10 | 2024-02-14 | PRO |
| CP09-PR-IR-S-1080 |  | Decoder one station - Material Submittal | 5d | 2024-02-12 A | 2024-02-13 A | CP09-PR-IR-S-1070 SS | 100% | 2024-02-10 | 2024-02-14 | PRO |

| ID | WBS | Activity | Duration | Start | Finish | Predecessors | Complete | Planned start | Planned finish | CP09_Discipline-7 |
| --- | --- | --- | --- | --- | --- | --- | --- | --- | --- | --- |
|  | 5 | **Plantings Materials** |  | 2024-02-27 | 2025-10-24 |  |  |  |  |  |
| CP09-PR-PN-S-1010 |  | Organic Manure - Material Submittal | 5d | 2024-02-27 A | 2024-04-03 A | CP09-PR-PN-S-1000 SS | 100% | 2024-02-27 | 2024-03-03 | PRO |
| CP09-PR-PN-S-1000 |  | Sweet Sand for all plants - Material Submittal | 5d | 2025-07-06 A | 2025-07-10 A | CP09-CLD-1010 FS+15d | 100% | 2025-07-31 | 2025-08-05 | PRO |
| CP09-PR-PN-S-1020 |  | Large Trees - Material Submittal | 5d | 2025-07-06 A | 2025-07-10 A | CP09-PR-PN-S-1010 | 100% | 2025-07-31 | 2025-08-05 | PRO |
| CP09-PR-PN-S-1050 |  | Ornamental grass - Material Submittal | 5d | 2025-07-06 A | 2025-07-10 A | CP09-PR-PN-S-1000, CP09-PR-PN-S-1010 | 100% | 2025-08-06 | 2025-08-11 | PRO |
| CP09-PR-PN-S-1060 |  | Shrubs - Material Submittal | 5d | 2025-07-06 A | 2025-07-10 A | CP09-PR-PN-S-1000, CP09-PR-PN-S-1010 | 100% | 2025-08-06 | 2025-08-11 | PRO |
| CP09-PR-PN-S-1070 |  | Ground Covers - Material Submittal | 5d | 2025-07-06 A | 2025-07-10 A | CP09-PR-PN-S-1000, CP09-PR-PN-S-1010 | 100% | 2025-08-06 | 2025-08-11 | PRO |
| CP09-PR-PN-S-1080 |  | Succulents - Material Submittal | 5d | 2025-07-06 A | 2025-07-10 A | CP09-PR-PN-S-1000, CP09-PR-PN-S-1010 | 100% | 2025-08-06 | 2025-08-11 | PRO |
| CP09-PR-PN-S-1030 |  | Vines & Climbers - Material Submittal | 5d | 2025-10-20 A | 2025-10-24 A | CP09-PR-PN-S-1000, CP09-PR-PN-S-1010 | 100% | 2025-08-24 | 2025-08-28 | PRO |
| CP09-PR-PN-S-1040 |  | Lawn - Material Submittal | 5d | 2025-10-20 A | 2025-10-24 A | CP09-PR-PN-S-1000, CP09-PR-PN-S-1010 | 100% | 2025-08-24 | 2025-08-28 | PRO |
|  | 10 | **Long Lead Item** |  | 2024-02-18 | 2026-01-16 |  |  |  |  |  |
|  | 1 | **Electrical Material** |  | 2024-02-18 | 2025-05-22 |  |  |  |  |  |
| CP09-PR-EL-S-1090 |  | Bollard for Walkways - Material Submittal | 7d | 2024-02-18 A | 2024-05-05 A | CP09-PR-EL-S-1080 | 100% | 2024-02-18 | 2024-02-25 | PRO |
| CP09-PR-EL-S-1100 |  | Surface Mountaed Down Light for Pool Cabans - Material Submittal | 7d | 2024-02-18 A | 2024-05-05 A | CP09-PR-EL-S-1090 SS | 100% | 2024-02-18 | 2024-02-25 | PRO |
| CP09-PR-EL-S-1110 |  | Diffused Wall Recessed Step - Material Submittal | 7d | 2024-02-18 A | 2024-05-05 A | CP09-PR-EL-S-1100 SS | 100% | 2024-02-18 | 2024-02-25 | PRO |
| CP09-PR-EL-S-1120 |  | Inground Uplight For Palms - Material Submittal | 7d | 2024-02-18 A | 2024-05-05 A | CP09-PR-EL-S-1110 SS | 100% | 2024-02-18 | 2024-02-25 | PRO |
| CP09-PR-EL-S-1130 |  | Projectors for Trees - Material Submittal | 7d | 2024-02-18 A | 2024-05-05 A | CP09-PR-EL-S-1120 SS | 100% | 2024-02-18 | 2024-02-25 | PRO |
| CP09-PR-EL-S-1150 |  | Outlet lighting fixtures - Material Submittal | 7d | 2024-02-18 A | 2024-05-05 A | CP09-PR-EL-S-1080 | 100% | 2024-02-18 | 2024-02-25 | PRO |
| CP09-PR-EL-S-1070 |  | Connecting Pillars -Material Submittal | 7d | 2025-05-18 A | 2025-05-22 A | CP09-CLD-1010 | 100% | 2025-05-18 | 2025-05-25 | PRO |
|  | 2 | **Mechanical Material** |  | 2025-05-18 | 2025-05-22 |  |  |  |  |  |
| CP09-PR-ME-S-1010 |  | Valves -Material Submittal | 7d | 2025-05-18 A | 2025-05-22 A | CP09-CLD-1010 | 100% | 2025-05-18 | 2025-05-25 | PRO |
| CP09-PR-ME-S-1020 |  | Sand Filter - Material Submittal | 7d | 2025-05-18 A | 2025-05-22 A | CP09-PR-ME-S-1010 | 100% | 2025-05-26 | 2025-06-02 | PRO |
| CP09-PR-ME-S-1030 |  | Filtration pump - Material Submittal | 7d | 2025-05-18 A | 2025-05-22 A | CP09-CLD-1010 | 100% | 2025-05-18 | 2025-05-25 | PRO |
| CP09-PR-ME-S-1040 |  | Chemical dosing system -Material Submittal | 7d | 2025-05-18 A | 2025-05-22 A | CP09-CLD-1010 | 100% | 2025-05-18 | 2025-05-25 | PRO |
| CP09-PR-ME-S-1050 |  | Chlorinator tablets - Material Submittal | 7d | 2025-05-18 A | 2025-05-22 A | CP09-PR-ME-S-1010 | 100% | 2025-05-26 | 2025-06-02 | PRO |
| CP09-PR-ME-S-1060 |  | GUTTER DRAIN -Material Submittal | 7d | 2025-05-18 A | 2025-05-22 A | CP09-PR-ME-S-1050 SS | 100% | 2025-05-26 | 2025-06-02 | PRO |
| CP09-PR-ME-S-1070 |  | Submersible pump - Material Submittal | 7d | 2025-05-18 A | 2025-05-22 A | CP09-CLD-1010 | 100% | 2025-05-18 | 2025-05-25 | PRO |
| CP09-PR-ME-S-1080 |  | Ventilation Exahust Fan - Material Submittal | 7d | 2025-05-18 A | 2025-05-22 A | CP09-PR-ME-S-1070 | 100% | 2025-05-26 | 2025-06-02 | PRO |

| ID | WBS | Activity | Duration | Start | Finish | Predecessors | Complete | Planned start | Planned finish | CP09_Discipline-7 |
| --- | --- | --- | --- | --- | --- | --- | --- | --- | --- | --- |
|  | 9 | **Play Field Equipment** |  | 2024-05-18 | 2026-01-16 |  |  |  |  |  |
|  | 1 | **Fitness Equipment** |  | 2026-01-12 | 2026-01-16 |  |  |  |  |  |
| CP09-PR-PE-S-1000 |  | OUTDOOR FITNESS-BALANCE BOARD - Material Submittal | 7d | 2026-01-12 A | 2026-01-16 A | CP09-CLD-1010, CP09-PR-FN-S-1000 SS | 100% | 2024-03-19 | 2024-03-30 | PRO |
| CP09-PR-PE-S-1010 |  | OUTDOOR FITNESS-DOUBLE CHEST PRESS - Material Submittal | 7d | 2026-01-12 A | 2026-01-16 A | CP09-PR-PE-S-1000 SS | 100% | 2024-03-19 | 2024-03-30 | PRO |
| CP09-PR-PE-S-1020 |  | OUTDOOR FITNESS-LEG LIFT & PULL UP - Material Submittal | 7d | 2026-01-12 A | 2026-01-16 A | CP09-PR-PE-S-1010 SS | 100% | 2024-03-19 | 2024-03-30 | PRO |
| CP09-PR-PE-S-1030 |  | OUTDOOR FITNESS-STRETCH STATION - Material Submittal | 7d | 2026-01-12 A | 2026-01-16 A | CP09-PR-PE-S-1020 SS | 100% | 2024-03-19 | 2024-03-30 | PRO |
|  | 2 | **Kids playground equipment** |  | 2024-05-18 | 2025-05-22 |  |  |  |  |  |
| CP09-PR-PE-S-1040 |  | Log Pile - Material Submittal | 7d | 2024-05-18 A | 2025-05-22 A | CP09-PR-PE-S-1030 | 100% | 2024-03-30 | 2024-04-09 | PRO |
| CP09-PR-PE-S-1050 |  | Log Tangle - Material Submittal | 7d | 2024-05-18 A | 2025-05-22 A | CP09-PR-PE-S-1040 FF, CP09-PR-PE-S-1040 SS | 100% | 2024-03-30 | 2024-04-09 | PRO |
| CP09-PR-PE-S-1060 |  | Offset Ladder Grid - Material Submittal | 7d | 2024-05-18 A | 2025-05-22 A | CP09-PR-PE-S-1050 FF, CP09-PR-PE-S-1050 SS | 100% | 2024-03-30 | 2024-04-09 | PRO |
| CP09-PR-PE-S-1070 |  | Single Bay Belt Swing - Material Submittal | 7d | 2024-05-18 A | 2025-05-22 A | CP09-PR-PE-S-1060 FF, CP09-PR-PE-S-1060 SS | 100% | 2024-03-30 | 2024-04-09 | PRO |
| CP09-PR-PE-S-1080 |  | Stepper Cluster -Material Submittal | 7d | 2024-05-18 A | 2025-05-22 A | CP09-PR-PE-S-1070 FF, CP09-PR-PE-S-1070 SS | 100% | 2024-03-30 | 2024-04-09 | PRO |
| CP09-PR-PE-S-1090 |  | Wobble Board /Small -Material Submittal | 7d | 2024-05-18 A | 2025-05-22 A | CP09-PR-PE-S-1080 FF, CP09-PR-PE-S-1080 SS | 100% | 2024-03-30 | 2024-04-09 | PRO |
| CP09-PR-PE-S-1100 |  | Wobble Board /Large - Material Submittal | 7d | 2024-05-18 A | 2025-05-22 A | CP09-PR-PE-S-1090 FF, CP09-PR-PE-S-1090 SS | 100% | 2024-03-30 | 2024-04-09 | PRO |
|  | 7 | **Landscape Furntiure** |  | 2025-05-18 | 2025-05-22 |  |  |  |  |  |
| CP09-PR-FN-S-1000 |  | Pitch Pine Picnic Table - Material Submittal | 5d | 2025-05-18 A | 2025-05-22 A | CP09-CLD-1010, CP09-PR-FN-S-1070 | 100% | 2025-06-24 | 2025-06-30 | PRO |
| CP09-PR-FN-S-1010 |  | Crcular Cast-iron tree grate - Material Submittal | 7d | 2025-05-18 A | 2025-05-22 A | CP09-PR-HD-S-1080, CP09-PR-HD-S-1100, CP09-PR-HD-S-1110, CP09-PR-HD-S-1180 | 100% | 2025-05-26 | 2025-06-02 | PRO |
| CP09-PR-FN-S-1020 |  | Aluminium Cabana for Pool Shading - Material Submittal | 7d | 2025-05-18 A | 2025-05-22 A | CP09-PR-FN-S-1010 SS+3d | 100% | 2025-05-29 | 2025-06-15 | PRO |
| CP09-PR-FN-S-1030 |  | Pitch Pine Benchs - Material Submittal | 7d | 2025-05-18 A | 2025-05-22 A | CP09-PR-FN-S-1020 SS | 100% | 2025-05-29 | 2025-06-15 | PRO |
| CP09-PR-FN-S-1040 |  | Polyester Hammocks - Material Submittal | 7d | 2025-05-18 A | 2025-05-22 A | CP09-PR-FN-S-1030 | 100% | 2025-06-16 | 2025-06-23 | PRO |
| CP09-PR-FN-S-1050 |  | Adult Play Swing - Material Submittall | 7d | 2025-05-18 A | 2025-05-22 A | CP09-PR-FN-S-1040 SS | 100% | 2025-06-16 | 2025-06-23 | PRO |
| CP09-PR-FN-S-1060 |  | Aluminum Trash Bin - Material Submittal | 7d | 2025-05-18 A | 2025-05-22 A | CP09-PR-FN-S-1050 SS | 100% | 2025-06-16 | 2025-06-23 | PRO |
| CP09-PR-FN-S-1070 |  | Tensile Teflon Tent - Material Submittal | 7d | 2025-05-18 A | 2025-05-22 A | CP09-PR-FN-S-1060 SS | 100% | 2025-06-16 | 2025-06-23 | PRO |
| CP09-PR-FN-S-1080 |  | Lanscape Edging ( Rubber) - Material Submittal | 7d | 2025-05-18 A | 2025-05-22 A | CP09-PR-FN-S-1070 SS | 100% | 2025-06-16 | 2025-06-23 | PRO |

| ID | WBS | Activity | Duration | Start | Finish | Predecessors | Complete | Planned start | Planned finish | CP09_Discipline-7 |
| --- | --- | --- | --- | --- | --- | --- | --- | --- | --- | --- |
|  | 2 | **Material Approval** |  | 2024-02-13 | 2026-01-16 |  |  |  |  |  |
|  | 1 | **Civil Materials** |  | 2024-03-05 | 2026-01-16 |  |  |  |  |  |
| CP09-PR-CV-A-1120 |  | Marble for Cheek & Retainig Walls | 14d | 2024-03-05 A | 2024-05-30 A | CP09-PR-CV-S-1120 FF+7d, CP09-PR-CV-S-1120 SS+7d | 100% | 2024-03-05 | 2024-03-25 | PRO |
| CP09-PR-CV-A-1000 |  | Concrete Mix - Material Approval | 14d | 2024-07-01 A | 2024-07-04 A | CP09-PR-CV-S-1000 FF+7d, CP09-PR-CV-S-1000 SS+7d | 100% | 2024-08-14 | 2024-08-29 | PRO |
| CP09-PR-CV-A-1130 |  | Rebars - Material Approval | 14d | 2024-07-14 A | 2024-07-22 A | CP09-PR-CV-S-1130 FF+7d, CP09-PR-CV-S-1130 SS+7d | 100% | 2024-08-14 | 2024-08-29 | PRO |
| CP09-PR-CV-A-1010 |  | Waterproofing - Material Approval | 14d | 2024-07-30 A | 2024-08-15 A | CP09-PR-CV-S-1010 FF+7d, CP09-PR-CV-S-1010 SS+7d | 100% | 2024-09-08 | 2024-09-24 | PRO |
| CP09-PR-CV-A-1020 |  | Block - Material Approval | 14d | 2025-05-18 A | 2025-05-22 A | CP09-PR-CV-S-1020 FF+7d, CP09-PR-CV-S-1020 SS+7d | 100% | 2025-05-26 | 2025-06-19 | PRO |
| CP09-PR-CV-A-1070 |  | Plaster Accessories -Material Approval | 14d | 2025-05-18 A | 2025-05-22 A | CP09-PR-CV-S-1070 FF+7d, CP09-PR-CV-S-1070 SS+7d | 100% | 2025-06-03 | 2025-06-29 | PRO |
| CP09-PR-CV-A-1090 |  | Geotextile & Geocomposit for Machine Room - Material Approval | 14d | 2025-05-18 A | 2025-05-22 A | CP09-PR-CV-S-1090 FF+7d, CP09-PR-CV-S-1090 SS+7d | 100% | 2025-05-26 | 2025-06-19 | PRO |
| CP09-PR-CV-A-1110 |  | Epoxy for Machine Room - Material Approval | 14d | 2025-05-18 A | 2025-05-22 A | CP09-PR-CV-S-1110 FF+7d, CP09-PR-CV-S-1110 SS+7d | 100% | 2025-06-30 | 2025-07-15 | PRO |
| CP09-PR-CV-A-1030 |  | Mosaic - Material Approval | 14d | 2025-08-18 A | 2025-08-22 A | CP09-PR-CV-S-1030 FF+7d, CP09-PR-CV-S-1030 SS+7d | 100% | 2025-08-24 | 2025-09-09 | PRO |
| CP09-PR-CV-A-1040 |  | Granite for Swimming Pool - Material Approval | 14d | 2025-08-18 A | 2025-08-22 A | CP09-PR-CV-S-1040 FF+7d, CP09-PR-CV-S-1040 SS+7d | 100% | 2025-09-01 | 2025-09-17 | PRO |
| CP09-PR-CV-A-1050 |  | Stanless Steel Ladders for Swimming Pool - Material Approval | 14d | 2025-08-18 A | 2025-08-22 A | CP09-PR-CV-S-1050 FF+7d, CP09-PR-CV-S-1050 SS+7d | 100% | 2025-09-10 | 2025-09-25 | PRO |
| CP09-PR-CV-A-1060 |  | Stanless Steel Handrial for Swimming Pool - Material Approval | 14d | 2025-08-18 A | 2025-08-22 A | CP09-PR-CV-S-1060 FF+7d, CP09-PR-CV-S-1060 SS+7d | 100% | 2025-09-10 | 2025-09-25 | PRO |
| CP09-PR-CV-A-1100 |  | Drainage Gravel for Machine Room - Material Approval | 14d | 2025-08-18 A | 2025-08-22 A | CP09-PR-CV-S-1100 FF+7d, CP09-PR-CV-S-1100 SS+7d | 100% | 2025-09-01 | 2025-09-17 | PRO |
| CP09-PR-CV-A-1080 |  | Emulsion Paint - Materials Approval | 14d | 2026-01-12 A | 2026-01-16 A | CP09-PR-CV-S-1080 FF+7d, CP09-PR-CV-S-1080 SS+7d | 100% | 2025-09-01 | 2025-09-17 | PRO |
|  | 2 | **Hardscape Materials** |  | 2024-02-13 | 2026-01-16 |  |  |  |  |  |
| CP09-PR-HD-A-1080 |  | Flush Curb - Material Approval | 14d | 2024-02-13 A | 2024-05-16 A | CP09-PR-HD-S-1080 FF+3d, CP09-PR-HD-S-1080 SS+3d | 100% | 2024-02-13 | 2024-02-28 | PRO |
| CP09-PR-HD-A-1010 |  | Marble Paving - - Material Approval | 14d | 2024-02-18 A | 2024-05-30 A | CP09-PR-HD-S-1010 FF+7d, CP09-PR-HD-S-1010 SS+7d | 100% | 2024-02-18 | 2024-03-04 | PRO |
| CP09-PR-HD-A-1180 |  | Interlocks -Material Approval | 14d | 2024-02-18 A | 2024-05-30 A | CP09-PR-HD-S-1180 FF+7d, CP09-PR-HD-S-1180 SS+7d | 100% | 2024-02-18 | 2024-03-04 | PRO |
| CP09-PR-HD-A-1100 |  | Marble for Steps - Material Approval | 14d | 2024-02-26 A | 2024-05-30 A | CP09-PR-HD-S-1100 FF+7d, CP09-PR-HD-S-1100 SS+7d | 100% | 2024-02-26 | 2024-03-13 | PRO |
| CP09-PR-HD-A-1110 |  | Marble for Seat - Material Approval | 14d | 2024-02-26 A | 2024-05-30 A | CP09-PR-HD-S-1110 FF+7d, CP09-PR-HD-S-1110 SS+7d | 100% | 2024-02-26 | 2024-03-13 | PRO |
| CP09-PR-HD-A-1000 |  | Concrete Exposed Aggeregate - Material Approval | 14d | 2025-05-18 A | 2025-05-22 A | CP09-PR-HD-S-1000 FF+7d, CP09-PR-HD-S-1000 SS+7d | 100% | 2025-05-26 | 2025-06-19 | PRO |
| CP09-PR-HD-A-1030 |  | Gravel Layer - Material Approval | 14d | 2025-05-18 A | 2025-08-22 A | CP09-PR-HD-S-1030 FF+7d, CP09-PR-HD-S-1030 SS+7d | 100% | 2025-08-24 | 2025-09-09 | PRO |
| CP09-PR-HD-A-1040 |  | Crushed Dolomite stone - Material Approval | 14d | 2025-05-18 A | 2025-08-22 A | CP09-PR-HD-S-1040 FF+7d, CP09-PR-HD-S-1040 SS+7d | 100% | 2025-08-24 | 2025-09-09 | PRO |
| CP09-PR-HD-A-1050 |  | Loose gravel - Material Approval | 14d | 2025-05-18 A | 2025-08-22 A | CP09-PR-HD-S-1050 FF+7d, CP09-PR-HD-S-1050 SS+7d | 100% | 2025-08-24 | 2025-09-09 | PRO |
| CP09-PR-HD-A-1060 |  | Geotextile Sheets - Materials Approval | 14d | 2025-05-18 A | 2025-05-22 A | CP09-PR-HD-S-1060 FF+7d, CP09-PR-HD-S-1060 SS+7d | 100% | 2025-05-26 | 2025-06-19 | PRO |
| CP09-PR-HD-A-1070 |  | Clean sand layer - Materials Approval | 14d | 2025-05-18 A | 2025-05-22 A | CP09-PR-HD-S-1070 FF+7d, CP09-PR-HD-S-1070 SS+7d | 100% | 2025-05-26 | 2025-06-19 | PRO |
| CP09-PR-HD-A-1090 |  | Crush Stone below Interlock - Material Approval | 14d | 2025-05-18 A | 2025-08-22 A | CP09-PR-HD-S-1090 FF+7d, CP09-PR-HD-S-1090 SS+7d | 100% | 2025-08-24 | 2025-09-09 | PRO |
| CP09-PR-HD-A-1120 |  | Mica - Material Approval | 14d | 2025-05-18 A | 2025-08-22 A | CP09-PR-HD-S-1120 FF+7d, CP09-PR-HD-S-1120 SS+7d | 100% | 2025-09-01 | 2025-09-17 | PRO |
| CP09-PR-HD-A-1130 |  | Blast stone blocks - Material Approval | 14d | 2025-05-18 A | 2025-08-22 A | CP09-PR-HD-S-1130 FF+7d, CP09-PR-HD-S-1130 SS+7d | 100% | 2025-09-01 | 2025-09-17 | PRO |
| CP09-PR-HD-A-1140 |  | Loose Rounded Pebbles - Material Approval | 14d | 2025-05-18 A | 2025-08-22 A | CP09-PR-HD-S-1050 FF+7d, CP09-PR-HD-S-1140 FF+7d, CP09-PR-HD-S-1050 SS+7d, CP09-PR-HD-S-1140 SS+7d | 100% | 2025-09-01 | 2025-09-17 | PRO |
| CP09-PR-HD-A-1150 |  | Shower Head - Material Approval | 14d | 2025-05-18 A | 2025-08-22 A | CP09-PR-HD-S-1150 FF+7d, CP09-PR-HD-S-1150 SS+7d | 100% | 2025-09-01 | 2025-09-17 | PRO |
| CP09-PR-HD-A-1160 |  | Stainless Handrail - Material Approval | 14d | 2025-05-18 A | 2025-08-22 A | CP09-PR-HD-S-1160 FF+7d, CP09-PR-HD-S-1160 SS+7d | 100% | 2025-09-01 | 2025-09-17 | PRO |
| CP09-PR-HD-A-1170 |  | Glass Handrail - Material Approval | 14d | 2025-05-18 A | 2025-08-22 A | CP09-PR-HD-S-1170 FF+7d, CP09-PR-HD-S-1170 SS+7d | 100% | 2025-09-01 | 2025-09-17 | PRO |
| CP09-PR-HD-A-1020 |  | WPC - Material Approval | 14d | 2026-01-12 A | 2026-01-16 A | CP09-PR-HD-S-1020 FF+7d, CP09-PR-HD-S-1020 SS+7d | 100% | 2025-09-01 | 2025-09-17 | PRO |

| ID | WBS | Activity | Duration | Start | Finish | Predecessors | Complete | Planned start | Planned finish | CP09_Discipline-7 |
| --- | --- | --- | --- | --- | --- | --- | --- | --- | --- | --- |
|  | 8 | **Sinage** |  | 2025-05-18 | 2025-05-22 |  |  |  |  |  |
| CP09-PR-SN-A-1000 |  | STREET DIRECTIONAL SIGN - Material Approval | 7d | 2025-05-18 A | 2025-05-22 A | CP09-PR-SN-S-1000 FF+7d, CP09-PR-SN-S-1000 SS+7d | 100% | 2025-07-05 | 2025-07-12 | PRO |
| CP09-PR-SN-A-1010 |  | DIRECTIONAL SIGN - Material Approval | 14d | 2025-05-18 A | 2025-05-22 A | CP09-PR-SN-S-1010 FF+7d, CP09-PR-SN-S-1010 SS+7d | 100% | 2025-07-01 | 2025-07-16 | PRO |
| CP09-PR-SN-A-1020 |  | UNIT ID SIGN - Material Approval | 14d | 2025-05-18 A | 2025-05-22 A | CP09-PR-SN-S-1020 FF+7d, CP09-PR-SN-S-1020 SS+7d | 100% | 2025-07-01 | 2025-07-16 | PRO |
| CP09-PR-SN-A-1030 |  | RULES SIGN - Material Approval | 14d | 2025-05-18 A | 2025-05-22 A | CP09-PR-SN-S-1030 FF+7d, CP09-PR-SN-S-1030 SS+7d | 100% | 2025-07-01 | 2025-07-16 | PRO |
| CP09-PR-SN-A-1040 |  | IDENTIFICATION SIGN - Material Approval | 14d | 2025-05-18 A | 2025-05-22 A | CP09-PR-SN-S-1040 FF+7d, CP09-PR-SN-S-1040 SS+7d | 100% | 2025-07-01 | 2025-07-16 | PRO |
|  | 4 | **Electrical Materials** |  | 2024-02-18 | 2025-08-22 |  |  |  |  |  |
|  | 1 | **Swimming pool & MR** |  | 2025-05-18 | 2025-08-22 |  |  |  |  |  |
| CP09-PR-EL-A-1000 |  | Conduits - Material Approval | 14d | 2025-05-18 A | 2025-05-22 A | CP09-PR-EL-S-1000 FF+7d, CP09-PR-EL-S-1000 SS+7d | 100% | 2025-05-26 | 2025-06-19 | PRO |
| CP09-PR-EL-A-1010 |  | Cable tray - Material Approval | 14d | 2025-05-18 A | 2025-05-22 A | CP09-PR-EL-S-1010 FF+7d, CP09-PR-EL-S-1010 SS+7d | 100% | 2025-05-26 | 2025-06-19 | PRO |
| CP09-PR-EL-A-1030 |  | Power Cables & Wires - Material Approval | 14d | 2025-05-18 A | 2025-05-22 A | CP09-PR-EL-S-1030 FF+7d, CP09-PR-EL-S-1030 SS+7d | 100% | 2025-05-26 | 2025-06-19 | PRO |
| CP09-PR-EL-A-1040 |  | Earthing System - - Material Approval | 14d | 2025-05-18 A | 2025-05-22 A | CP09-PR-EL-S-1040 FF+7d, CP09-PR-EL-S-1040 SS+7d | 100% | 2025-05-26 | 2025-06-19 | PRO |
| CP09-PR-EL-A-1050 |  | Lighting Outlets , Switches Fixture - Material Approval | 14d | 2025-05-18 A | 2025-05-22 A | CP09-PR-EL-S-1050 FF+7d, CP09-PR-EL-S-1050 SS+7d | 100% | 2025-06-03 | 2025-06-29 | PRO |
| CP09-PR-EL-A-1140 |  | Underwater Recessed Spotlight | 14d | 2025-05-18 A | 2025-05-22 A | CP09-PR-EL-S-1140 FF+7d, CP09-PR-EL-S-1140 SS+7d | 100% | 2025-06-03 | 2025-06-29 | PRO |
| CP09-PR-EL-A-1020 |  | Panel boards - Material Approval | 14d | 2025-08-18 A | 2025-08-22 A | CP09-PR-EL-S-1020 FF+7d, CP09-PR-EL-S-1020 SS+7d | 100% | 2025-09-01 | 2025-09-17 | PRO |
|  | 2 | **Landscape** |  | 2024-02-18 | 2024-05-08 |  |  |  |  |  |
| CP09-PR-EL-A-1060 |  | Power Cables for Landscape Lighting - Material Approval | 14d | 2024-02-18 A | 2024-05-08 A | CP09-PR-EL-S-1060 FF+7d, CP09-PR-EL-S-1060 SS+7d | 100% | 2024-02-18 | 2024-03-04 | PRO |
| CP09-PR-EL-A-1080 |  | Lighting Pole - Material Approval | 14d | 2024-02-18 A | 2024-05-08 A | CP09-PR-EL-S-1080 FF+7d, CP09-PR-EL-S-1080 SS+7d | 100% | 2024-02-18 | 2024-03-04 | PRO |
|  | 3 | **Mechnical Materials** |  | 2025-05-18 | 2025-05-22 |  |  |  |  |  |
|  | 1 | **Swimmimng Pool & MR** |  | 2025-05-18 | 2025-05-22 |  |  |  |  |  |
| CP09-PR-ME-A-1000 |  | UPVC pipes,Fitting - Material Approval | 14d | 2025-05-18 A | 2025-05-22 A | CP09-PR-ME-S-1000 FF+7d, CP09-PR-ME-S-1000 SS+7d | 100% | 2025-05-26 | 2025-06-19 | PRO |
|  | 6 | **Irrigation Materials** |  | 2024-02-13 | 2024-05-28 |  |  |  |  |  |
| CP09-PR-IR-A-1080 |  | Decoder one station - Material Approval | 7d | 2024-02-13 A | 2024-02-15 A | CP09-PR-IR-S-1080 FF+7d, CP09-PR-IR-S-1080 SS+7d | 100% | 2024-02-18 | 2024-02-25 | PRO |
| CP09-PR-IR-A-1050 |  | Electrical Solenoid Valve -Material Approval | 7d | 2024-02-17 A | 2024-02-20 A | CP09-PR-IR-S-1050 FF+7d, CP09-PR-IR-S-1050 SS+7d | 100% | 2024-02-18 | 2024-02-25 | PRO |
| CP09-PR-IR-A-1060 |  | Test Controller -Material Approval | 7d | 2024-02-17 A | 2024-02-20 A | CP09-PR-IR-S-1060 FF+7d, CP09-PR-IR-S-1060 SS+7d | 100% | 2024-02-18 | 2024-02-25 | PRO |
| CP09-PR-IR-A-1070 |  | Direct Cables -Material Approval | 7d | 2024-02-17 A | 2024-02-20 A | CP09-PR-IR-S-1070 FF+7d, CP09-PR-IR-S-1070 SS+7d | 100% | 2024-02-18 | 2024-02-25 | PRO |
| CP09-PR-IR-A-1000 |  | UPVC pipes for Sub-main Line & Lateral - Material Approval | 7d | 2024-02-18 A | 2024-05-08 A | CP09-PR-IR-S-1000 FF+7d, CP09-PR-IR-S-1000 SS+7d | 100% | 2024-02-18 | 2024-02-25 | PRO |
| CP09-PR-IR-A-1010 |  | Drip line-Material Approval | 7d | 2024-02-18 A | 2024-03-10 A | CP09-PR-IR-S-1010 FF+7d, CP09-PR-IR-S-1010 SS+7d | 100% | 2024-02-18 | 2024-02-25 | PRO |
| CP09-PR-IR-A-1020 |  | Rings -Material Approval | 7d | 2024-02-18 A | 2024-03-03 A | CP09-PR-IR-S-1020 FF+7d, CP09-PR-IR-S-1020 SS+7d | 100% | 2024-02-18 | 2024-02-25 | PRO |
| CP09-PR-IR-A-1030 |  | Valves -Material Approval | 7d | 2024-02-18 A | 2024-03-03 A | CP09-PR-IR-S-1030 FF+7d, CP09-PR-IR-S-1030 SS+7d | 100% | 2024-02-18 | 2024-02-25 | PRO |
| CP09-PR-IR-A-1040 |  | Pop up Multi ray sprinkler-Material Approval | 7d | 2024-02-18 A | 2024-05-28 A | CP09-PR-IR-S-1040 FF+7d, CP09-PR-IR-S-1040 SS+7d | 100% | 2024-02-18 | 2024-02-25 | PRO |

| ID | WBS | Activity | Duration | Start | Finish | Predecessors | Complete | Planned start | Planned finish | CP09_Discipline-7 |
| --- | --- | --- | --- | --- | --- | --- | --- | --- | --- | --- |
|  | 5 | **Plantings Materials** |  | 2024-03-06 | 2025-10-24 |  |  |  |  |  |
| CP09-PR-PN-A-1010 |  | Organic Manure - Material Approval | 14d | 2024-03-06 A | 2024-04-04 A | CP09-PR-PN-S-1010 FF+7d, CP09-PR-PN-S-1010 SS+7d | 100% | 2024-03-06 | 2024-03-26 | PRO |
| CP09-PR-PN-A-1000 |  | Sweet Sand for all plants - Material Approval | 14d | 2025-07-06 A | 2025-07-10 A | CP09-PR-PN-S-1000 FF+7d, CP09-PR-PN-S-1000 SS+7d | 100% | 2025-08-09 | 2025-08-24 | PRO |
| CP09-PR-PN-A-1020 |  | Large Trees - Material Approval | 14d | 2025-07-06 A | 2025-07-10 A | CP09-PR-PN-S-1020 FF+7d, CP09-PR-PN-S-1020 SS+7d | 100% | 2025-08-09 | 2025-08-24 | PRO |
| CP09-PR-PN-A-1050 |  | Ornamental grass - Material Approval | 14d | 2025-07-06 A | 2025-07-10 A | CP09-PR-PN-S-1050 FF+7d, CP09-PR-PN-S-1050 SS+7d | 100% | 2025-08-14 | 2025-08-30 | PRO |
| CP09-PR-PN-A-1060 |  | Shrubs - Material Approval | 14d | 2025-07-06 A | 2025-07-10 A | CP09-PR-PN-S-1060 FF+7d, CP09-PR-PN-S-1060 SS+7d | 100% | 2025-08-14 | 2025-08-30 | PRO |
| CP09-PR-PN-A-1070 |  | Ground Covers - Material Approval | 14d | 2025-07-06 A | 2025-07-10 A | CP09-PR-PN-S-1070 FF+7d, CP09-PR-PN-S-1070 SS+7d | 100% | 2025-08-14 | 2025-08-30 | PRO |
| CP09-PR-PN-A-1080 |  | Succulents - Material Approval | 14d | 2025-07-06 A | 2025-07-10 A | CP09-PR-PN-S-1080 FF+7d, CP09-PR-PN-S-1080 SS+7d | 100% | 2025-08-14 | 2025-08-30 | PRO |
| CP09-PR-PN-A-1030 |  | Vines & Climbers - Material Approval | 14d | 2025-10-20 A | 2025-10-24 A | CP09-PR-PN-S-1030 FF+7d, CP09-PR-PN-S-1030 SS+7d | 100% | 2025-09-01 | 2025-09-17 | PRO |
| CP09-PR-PN-A-1040 |  | Lawn - Material Approval | 14d | 2025-10-20 A | 2025-10-24 A | CP09-PR-PN-S-1040 FF+7d, CP09-PR-PN-S-1040 SS+7d | 100% | 2025-09-01 | 2025-09-17 | PRO |
|  | 10 | **Long Lead Item** |  | 2024-02-26 | 2026-01-16 |  |  |  |  |  |
|  | 1 | **Electrical Material** |  | 2024-02-26 | 2026-01-16 |  |  |  |  |  |
| CP09-PR-EL-A-1100 |  | Surface Mountaed Down Light for Pool Cabans - Material Approval | 14d | 2024-02-26 A | 2024-05-08 A | CP09-PR-EL-S-1100 FF+7d, CP09-PR-EL-S-1100 SS+7d | 100% | 2024-02-26 | 2024-03-13 | PRO |
| CP09-PR-EL-A-1110 |  | Diffused Wall Recessed Step - Material Approval | 14d | 2024-02-26 A | 2024-05-08 A | CP09-PR-EL-S-1110 FF+7d, CP09-PR-EL-S-1110 SS+7d | 100% | 2024-02-26 | 2024-03-13 | PRO |
| CP09-PR-EL-A-1120 |  | Inground Uplight For Palms - Material Approval | 14d | 2024-02-26 A | 2024-05-08 A | CP09-PR-EL-S-1120 FF+7d, CP09-PR-EL-S-1120 SS+7d | 100% | 2024-02-26 | 2024-03-13 | PRO |
| CP09-PR-EL-A-1130 |  | Projectors for Trees - Material Approval | 14d | 2024-02-26 A | 2024-05-08 A | CP09-PR-EL-S-1130 FF+7d, CP09-PR-EL-S-1130 SS+7d | 100% | 2024-02-26 | 2024-03-13 | PRO |
| CP09-PR-EL-A-1150 |  | Outlet lighting fixtures - Material Approval | 14d | 2024-02-26 A | 2024-05-08 A | CP09-PR-EL-S-1150 FF+7d, CP09-PR-EL-S-1150 SS+7d | 100% | 2024-02-26 | 2024-03-13 | PRO |
| CP09-PR-EL-A-1070 |  | Connecting Pillars - Material Approval | 14d | 2025-05-18 A | 2025-05-22 A | CP09-PR-EL-S-1070 FF+7d, CP09-PR-EL-S-1070 SS+7d | 100% | 2025-05-26 | 2025-06-19 | PRO |
| CP09-PR-EL-A-1090 |  | Bollard for Walkways - Material Approval | 14d | 2026-01-12 A | 2026-01-16 A | CP09-PR-EL-S-1090 FF+7d, CP09-PR-EL-S-1090 SS+7d | 100% | 2025-08-24 | 2025-09-09 | PRO |
|  | 2 | **Mechnical Material** |  | 2025-05-18 | 2025-05-22 |  |  |  |  |  |
| CP09-PR-ME-A-1010 |  | Valves - Material Approval | 14d | 2025-05-18 A | 2025-05-22 A | CP09-PR-ME-S-1010 FF+7d, CP09-PR-ME-S-1010 SS+7d | 100% | 2025-05-26 | 2025-06-19 | PRO |
| CP09-PR-ME-A-1020 |  | Sand Filter - Material Approval | 14d | 2025-05-18 A | 2025-05-22 A | CP09-PR-ME-S-1020 FF+7d, CP09-PR-ME-S-1020 SS+7d | 100% | 2025-06-03 | 2025-06-29 | PRO |
| CP09-PR-ME-A-1030 |  | Filtration pump - Material Approval | 14d | 2025-05-18 A | 2025-05-22 A | CP09-PR-ME-S-1030 FF+7d, CP09-PR-ME-S-1030 SS+7d | 100% | 2025-05-26 | 2025-06-19 | PRO |
| CP09-PR-ME-A-1040 |  | Chemical dosing system - Material Approval | 14d | 2025-05-18 A | 2025-05-22 A | CP09-PR-ME-S-1040 FF+7d, CP09-PR-ME-S-1040 SS+7d | 100% | 2025-05-26 | 2025-06-19 | PRO |
| CP09-PR-ME-A-1050 |  | Chlorinator tablets - Material Approval | 14d | 2025-05-18 A | 2025-05-22 A | CP09-PR-ME-S-1050 FF+7d, CP09-PR-ME-S-1050 SS+7d | 100% | 2025-06-03 | 2025-06-29 | PRO |
| CP09-PR-ME-A-1060 |  | GUTTER DRAIN -Material Approval | 14d | 2025-05-18 A | 2025-05-22 A | CP09-PR-ME-S-1060 FF+7d, CP09-PR-ME-S-1060 SS+7d | 100% | 2025-06-03 | 2025-06-29 | PRO |
| CP09-PR-ME-A-1070 |  | Submersible pump - Material Approval | 14d | 2025-05-18 A | 2025-05-22 A | CP09-PR-ME-S-1070 FF+7d, CP09-PR-ME-S-1070 SS+7d | 100% | 2025-05-26 | 2025-06-19 | PRO |
| CP09-PR-ME-A-1080 |  | Ventilation Exahust Fan - Material Approval | 14d | 2025-05-18 A | 2025-05-22 A | CP09-PR-ME-S-1080 FF+7d, CP09-PR-ME-S-1080 SS+7d | 100% | 2025-06-03 | 2025-06-29 | PRO |

| ID | WBS | Activity | Duration | Start | Finish | Predecessors | Complete | Planned start | Planned finish | CP09_Discipline-7 |
| --- | --- | --- | --- | --- | --- | --- | --- | --- | --- | --- |
|  | 9 | **Play Field Equipment** |  | 2025-05-18 | 2026-01-16 |  |  |  |  |  |
|  | 1 | **Fitness Equipment** |  | 2026-01-12 | 2026-01-16 |  |  |  |  |  |
| CP09-PR-PE-A-1000 |  | OUTDOOR FITNESS-BALANCE BOARD - Material Approval | 14d | 2026-01-12 A | 2026-01-16 A | CP09-PR-PE-S-1000 FF+7d, CP09-PR-PE-S-1000 SS+7d | 100% | 2025-08-24 | 2025-09-09 | PRO |
| CP09-PR-PE-A-1010 |  | OUTDOOR FITNESS-DOUBLE CHEST PRESS - Material Approval | 14d | 2026-01-12 A | 2026-01-16 A | CP09-PR-PE-S-1010 FF+7d, CP09-PR-PE-S-1010 SS+7d | 100% | 2025-08-24 | 2025-09-09 | PRO |
| CP09-PR-PE-A-1020 |  | OUTDOOR FITNESS-LEG LIFT & PULL UP - Material Approval | 14d | 2026-01-12 A | 2026-01-16 A | CP09-PR-PE-S-1020 FF+7d, CP09-PR-PE-S-1020 SS+7d | 100% | 2025-08-24 | 2025-09-09 | PRO |
| CP09-PR-PE-A-1030 |  | OUTDOOR FITNESS-STRETCH STATION - Material Approval | 14d | 2026-01-12 A | 2026-01-16 A | CP09-PR-PE-S-1030 FF+7d, CP09-PR-PE-S-1030 SS+7d | 100% | 2025-08-24 | 2025-09-09 | PRO |
|  | 2 | **Kids playground equipment** |  | 2025-05-18 | 2025-05-22 |  |  |  |  |  |
| CP09-PR-PE-A-1040 |  | Log Pile - Material Approval | 14d | 2025-05-18 A | 2025-05-22 A | CP09-PR-PE-S-1040 FF+7d, CP09-PR-PE-S-1040 SS+7d | 100% | 2025-06-30 | 2025-07-15 | PRO |
| CP09-PR-PE-A-1050 |  | Log Tangle - Material Approval | 14d | 2025-05-18 A | 2025-05-22 A | CP09-PR-PE-S-1050 FF+7d, CP09-PR-PE-S-1050 SS+7d | 100% | 2025-06-30 | 2025-07-15 | PRO |
| CP09-PR-PE-A-1060 |  | Offset Ladder Grid - Material Approval | 14d | 2025-05-18 A | 2025-05-22 A | CP09-PR-PE-S-1060 FF+7d, CP09-PR-PE-S-1060 SS+7d | 100% | 2025-06-30 | 2025-07-15 | PRO |
| CP09-PR-PE-A-1070 |  | Single Bay Belt Swing - Material Approval | 14d | 2025-05-18 A | 2025-05-22 A | CP09-PR-PE-S-1070 FF+7d, CP09-PR-PE-S-1070 SS+7d | 100% | 2025-06-30 | 2025-07-15 | PRO |
| CP09-PR-PE-A-1080 |  | Stepper Cluster - Material Approval | 14d | 2025-05-18 A | 2025-05-22 A | CP09-PR-PE-S-1080 FF+7d, CP09-PR-PE-S-1080 SS+7d | 100% | 2025-06-30 | 2025-07-15 | PRO |
| CP09-PR-PE-A-1090 |  | Wobble Board /Small - Material Approval | 14d | 2025-05-18 A | 2025-05-22 A | CP09-PR-PE-S-1090 FF+7d, CP09-PR-PE-S-1090 SS+7d | 100% | 2025-06-30 | 2025-07-15 | PRO |
| CP09-PR-PE-A-1100 |  | Wobble Board /Large - Material Approval | 14d | 2025-05-18 A | 2025-05-22 A | CP09-PR-PE-S-1100 FF+7d, CP09-PR-PE-S-1100 SS+7d | 100% | 2025-06-30 | 2025-07-15 | PRO |
|  | 7 | **Landscape Furntiure** |  | 2025-05-18 | 2025-05-22 |  |  |  |  |  |
| CP09-PR-FN-A-1000 |  | Pitch Pine Picnic Table - Material Approval | 14d | 2025-05-18 A | 2025-05-22 A | CP09-PR-FN-S-1000 FF+7d, CP09-PR-FN-S-1000 SS+7d | 100% | 2025-07-03 | 2025-07-19 | PRO |
| CP09-PR-FN-A-1010 |  | Crcular Cast-iron tree grate - Material Approval | 14d | 2025-05-18 A | 2025-05-22 A | CP09-PR-FN-S-1010 FF+7d, CP09-PR-FN-S-1010 SS+7d | 100% | 2025-06-03 | 2025-06-29 | PRO |
| CP09-PR-FN-A-1020 |  | Aluminium Cabana for Pool Shading - Material Approval | 14d | 2025-05-18 A | 2025-05-22 A | CP09-PR-FN-S-1020 FF+7d, CP09-PR-FN-S-1020 SS+7d | 100% | 2025-06-16 | 2025-07-02 | PRO |
| CP09-PR-FN-A-1030 |  | Pitch Pine Benchs - Material Approval | 14d | 2025-05-18 A | 2025-05-22 A | CP09-PR-FN-S-1000 FF+7d, CP09-PR-FN-S-1030 FF+7d, CP09-PR-FN-S-1030 SS+7d, CP09-PR-FN-S-1000 SS+7d | 100% | 2025-07-03 | 2025-07-19 | PRO |
| CP09-PR-FN-A-1040 |  | Polyester Hammocks - Material Approval | 14d | 2025-05-18 A | 2025-05-22 A | CP09-PR-FN-S-1040 FF+7d, CP09-PR-FN-S-1040 SS+7d | 100% | 2025-06-24 | 2025-07-10 | PRO |
| CP09-PR-FN-A-1050 |  | Adult Play Swing - Material Approval | 14d | 2025-05-18 A | 2025-05-22 A | CP09-PR-FN-S-1050 FF+7d, CP09-PR-FN-S-1050 SS+7d | 100% | 2025-06-24 | 2025-07-10 | PRO |
| CP09-PR-FN-A-1060 |  | Aluminum Trash Bin - Material Approval | 14d | 2025-05-18 A | 2025-05-22 A | CP09-PR-FN-S-1060 FF+7d, CP09-PR-FN-S-1060 SS+7d | 100% | 2025-06-24 | 2025-07-10 | PRO |
| CP09-PR-FN-A-1070 |  | Tensile Teflon Tent - Material Approval | 14d | 2025-05-18 A | 2025-05-22 A | CP09-PR-FN-S-1070 FF+7d, CP09-PR-FN-S-1070 SS+7d | 100% | 2025-06-24 | 2025-07-10 | PRO |
| CP09-PR-FN-A-1080 |  | Lanscape Edging ( Rubber) - Material Approval | 14d | 2025-05-18 A | 2025-05-22 A | CP09-PR-FN-S-1080 FF+7d, CP09-PR-FN-S-1080 SS+7d | 100% | 2025-06-24 | 2025-07-10 | PRO |

| ID | WBS | Activity | Duration | Start | Finish | Predecessors | Complete | Planned start | Planned finish | Total float | Free float | CP09_Discipline-7 |
| --- | --- | --- | --- | --- | --- | --- | --- | --- | --- | --- | --- | --- |
|  | 3 | **Material PO Issued** |  | 2024-08-08 | 2026-06-11 |  |  |  |  |  |  |  |
|  | 1 | **Civil Materials** |  | 2024-08-08 | 2026-06-09 |  |  |  |  |  |  |  |
| CP09-PR-CV-PO-1000 |  | Concrete Mix - Material PO-Issued | 2d | 2024-08-08 A | 2024-08-11 A | CP09-PR-CV-A-1000 | 100% | 2024-08-25 | 2024-08-26 |  |  | PRO |
| CP09-PR-CV-PO-1010 |  | Waterproofing - Material PO-Issued | 2d | 2024-08-16 A | 2024-08-18 A | CP09-PR-CV-A-1010 | 100% | 2024-09-25 | 2024-09-26 |  |  | PRO |
| CP09-PR-CV-PO-1020 |  | Block - Material PO-Issued | 3d | 2025-05-18 A | 2025-05-22 A | CP09-PR-CV-A-1020 | 100% | 2025-06-21 | 2025-06-23 |  |  | PRO |
| CP09-PR-CV-PO-1070 |  | Plaster Accessories -Material PO-Issued | 3d | 2025-08-22 A | 2025-08-26 A | CP09-PR-CV-A-1070 | 100% | 2025-08-24 | 2025-08-26 |  |  | PRO |
| CP09-PR-CV-PO-1130 |  | Rebars - Material PO-Issued | 3d | 2025-08-22 A | 2025-08-26 A | CP09-PR-CV-A-1130 | 100% | 2025-08-24 | 2025-08-26 |  |  | PRO |
| CP09-PR-CV-PO-1110 |  | Epoxy for Machine Room - Material PO-Issued | 3d | 2025-10-20 A | 2025-10-24 A | CP09-PR-CV-A-1110 | 100% | 2025-10-19 | 2025-10-21 |  |  | PRO |
| CP09-PR-CV-PO-1120 |  | Marble for Cheek & Retainig Walls Material PO-Issued | 3d | 2025-10-20 A | 2025-10-24 A | CP09-PR-CV-A-1120 | 100% | 2025-10-19 | 2025-10-21 |  |  | PRO |
| CP09-PR-CV-PO-1080 |  | Emulsion Paint - Material PO-Issued | 3d | 2026-01-12 A | 2026-01-16 A | CP09-PR-CV-A-1080 | 100% | 2026-01-18 | 2026-01-20 |  |  | PRO |
| CP09-PR-CV-PO-1030 |  | Mosaic - Material PO-Issued | 3d | 2026-06-07 | 2026-06-09 | CP09-PR-CV-A-1030 |  |  |  | -187.56d | 0d | PRO |
| CP09-PR-CV-PO-1040 |  | Granite for Swimming Pool - Material PO-Issued | 3d | 2026-06-07 | 2026-06-09 | CP09-PR-CV-A-1040 |  |  |  | -176.31d | 0d | PRO |
| CP09-PR-CV-PO-1050 |  | Stanless Steel Ladders for Swimming Pool - Material PO-Issued | 3d | 2026-06-07 | 2026-06-09 | CP09-PR-CV-A-1050 |  |  |  | -168.81d | 0d | PRO |
| CP09-PR-CV-PO-1060 |  | Stanless Steel Handrial for Swimming Pool - Material PO-Issued | 3d | 2026-06-07 | 2026-06-09 | CP09-PR-CV-A-1060 |  |  |  | -166d | 0d | PRO |
| CP09-PR-CV-PO-1090 |  | Geotextile & Geocomposit for Machine Room - Material PO-Issued | 3d | 2026-06-07 | 2026-06-09 | CP09-PR-CV-A-1090 |  |  |  | -164d | 0d | PRO |
| CP09-PR-CV-PO-1100 |  | Drainage Gravel for Machine Room - Material PO-Issued | 3d | 2026-06-07 | 2026-06-09 | CP09-PR-CV-A-1100 |  |  |  | -164d | 0d | PRO |
|  | 2 | **Hardscape Materials** |  | 2025-05-18 | 2026-06-09 |  |  |  |  |  |  |  |
| CP09-PR-HD-PO-1080 |  | Flush Curb - Material PO-Issued | 5d | 2025-05-18 A | 2025-05-22 A | CP09-PR-HD-A-1080 | 100% |  |  |  |  | PRO |
| CP09-PR-HD-PO-1180 |  | Interlocks -Material PO-Issued | 3d | 2025-05-18 A | 2025-05-22 A | CP09-PR-HD-A-1180 | 100% | 2025-05-18 | 2025-05-20 |  |  | PRO |
| CP09-PR-HD-PO-1000 |  | Concrete Exposed Aggeregate - Material PO-Issued | 3d | 2025-08-22 A | 2025-08-26 A | CP09-PR-HD-A-1000 | 100% | 2025-08-24 | 2025-08-26 |  |  | PRO |
| CP09-PR-HD-PO-1010 |  | Marble Paving - - Material PO-Issued | 3d | 2025-08-22 A | 2025-08-26 A | CP09-PR-HD-A-1010 | 100% | 2025-08-24 | 2025-08-26 |  |  | PRO |
| CP09-PR-HD-PO-1060 |  | Geotextile Sheets - Material PO-Issued | 3d | 2025-08-22 A | 2025-08-26 A | CP09-PR-HD-A-1060 | 100% | 2025-08-24 | 2025-08-26 |  |  | PRO |
| CP09-PR-HD-PO-1070 |  | Clean sand layer - Material PO-Issued | 3d | 2025-08-22 A | 2025-08-26 A | CP09-PR-HD-A-1070 | 100% | 2025-08-24 | 2025-08-26 |  |  | PRO |
| CP09-PR-HD-PO-1090 |  | Crush Stone below Interlock - Material PO-Issued | 3d | 2025-08-22 A | 2025-08-26 A | CP09-PR-HD-A-1090 | 100% | 2025-08-24 | 2025-08-26 |  |  | PRO |
| CP09-PR-HD-PO-1100 |  | Marble for Steps - Material PO-Issued | 3d | 2025-10-20 A | 2025-10-24 A | CP09-PR-HD-A-1100 | 100% | 2025-10-19 | 2025-10-21 |  |  | PRO |
| CP09-PR-HD-PO-1020 |  | WPC - Material PO-Issued | 3d | 2026-01-12 A | 2026-01-16 A | CP09-PR-HD-A-1020 | 100% | 2026-01-18 | 2026-01-20 |  |  | PRO |
| CP09-PR-HD-PO-1030 |  | Gravel Layer - Material PO-Issued | 3d | 2026-06-07 | 2026-06-09 | CP09-PR-HD-A-1030 |  |  |  | -196.38d | 0d | PRO |
| CP09-PR-HD-PO-1040 |  | Crushed Dolomite stone - Material PO-Issued | 3d | 2026-06-07 | 2026-06-09 | CP09-PR-HD-A-1040 |  |  |  | -188.56d | 0d | PRO |
| CP09-PR-HD-PO-1050 |  | Loose gravel - Material PO-Issued | 3d | 2026-06-07 | 2026-06-09 | CP09-PR-HD-A-1050 |  |  |  | -195.38d | 0d | PRO |
| CP09-PR-HD-PO-1110 |  | Marble for Seat - Material PO-Issued | 3d | 2026-06-07 | 2026-06-09 | CP09-PR-HD-A-1110 |  |  |  | -206d | 0d | PRO |
| CP09-PR-HD-PO-1120 |  | Mica - Material PO-Issued | 3d | 2026-06-07 | 2026-06-09 | CP09-PR-HD-A-1120 |  |  |  | -183.75d | 0d | PRO |
| CP09-PR-HD-PO-1130 |  | Blast stone blocks - Material PO-Issued | 3d | 2026-06-07 | 2026-06-09 | CP09-PR-HD-A-1130 |  |  |  | -167.81d | 0d | PRO |
| CP09-PR-HD-PO-1140 |  | Loose Rounded Pebbles - Material PO-Issued | 3d | 2026-06-07 | 2026-06-09 | CP09-PR-HD-A-1140 |  |  |  | -156d | 0d | PRO |
| CP09-PR-HD-PO-1150 |  | Shower Head - Material PO-Issued | 3d | 2026-06-07 | 2026-06-09 | CP09-PR-HD-A-1150 |  |  |  | -150d | 0d | PRO |
| CP09-PR-HD-PO-1160 |  | Stainless Handrail - Material PO-Issued | 3d | 2026-06-07 | 2026-06-09 | CP09-PR-HD-A-1160 |  |  |  | -187.62d | 0d | PRO |
| CP09-PR-HD-PO-1170 |  | Glass Handrail - Material PO-Issued | 3d | 2026-06-07 | 2026-06-09 | CP09-PR-HD-A-1170 |  |  |  | -187.62d | 0d | PRO |

| ID | WBS | Activity | Duration | Start | Finish | Predecessors | Complete | Planned start | Planned finish | Total float | Free float | CP09_Discipline-7 |
| --- | --- | --- | --- | --- | --- | --- | --- | --- | --- | --- | --- | --- |
|  | 8 | **Sinage** |  | 2025-08-22 | 2025-08-26 |  |  |  |  |  |  |  |
| CP09-PR-SN-PO-1000 |  | STREET DIRECTIONAL SIGN - Material PO-Issued | 5d | 2025-08-22 A | 2025-08-26 A | CP09-PR-SN-A-1000 | 100% | 2025-08-24 | 2025-08-28 |  |  | PRO |
| CP09-PR-SN-PO-1010 |  | DIRECTIONAL SIGN - Material PO-Issued | 5d | 2025-08-22 A | 2025-08-26 A | CP09-PR-SN-A-1010 | 100% | 2025-08-24 | 2025-08-28 |  |  | PRO |
| CP09-PR-SN-PO-1020 |  | UNIT ID SIGN - Material PO-Issued | 5d | 2025-08-22 A | 2025-08-26 A | CP09-PR-SN-A-1020 | 100% | 2025-08-24 | 2025-08-28 |  |  | PRO |
| CP09-PR-SN-PO-1030 |  | RULES SIGN - Material PO-Issued | 5d | 2025-08-22 A | 2025-08-26 A | CP09-PR-SN-A-1030 | 100% | 2025-08-24 | 2025-08-28 |  |  | PRO |
| CP09-PR-SN-PO-1040 |  | IDENTIFICATION SIGN - Material PO-Issued | 5d | 2025-08-22 A | 2025-08-26 A | CP09-PR-SN-A-1040 | 100% | 2025-08-24 | 2025-08-28 |  |  | PRO |
|  | 4 | **Electrical Materials** |  | 2025-05-18 | 2026-06-09 |  |  |  |  |  |  |  |
|  | 1 | **Swimming pool & MR** |  | 2025-05-18 | 2026-06-09 |  |  |  |  |  |  |  |
| CP09-PR-EL-PO-1030 |  | Power Cables & Wires - Material PO-Issued | 3d | 2025-05-18 A | 2025-05-22 A | CP09-PR-EL-A-1030 | 100% | 2025-06-21 | 2025-06-23 |  |  | PRO |
| CP09-PR-EL-PO-1000 |  | Conduits - Material PO-Issued | 3d | 2026-06-07 | 2026-06-09 | CP09-PR-EL-A-1000 |  |  |  | -219d | 0d | PRO |
| CP09-PR-EL-PO-1010 |  | Cable tray - Material PO-Issued | 3d | 2026-06-07 | 2026-06-09 | CP09-PR-EL-A-1010 |  |  |  | -219d | 0d | PRO |
| CP09-PR-EL-PO-1020 |  | Panel boards - Material PO-Issued | 3d | 2026-06-07 | 2026-06-09 | CP09-PR-EL-A-1020 |  |  |  | -205.06d | 0d | PRO |
| CP09-PR-EL-PO-1040 |  | Earthing System - - Material PO-Issued | 3d | 2026-06-07 | 2026-06-09 | CP09-PR-EL-A-1040 |  |  |  | -176.06d | 0d | PRO |
| CP09-PR-EL-PO-1050 |  | Lighting Outlets , Switches Fixture - Material PO-Issued | 3d | 2026-06-07 | 2026-06-09 | CP09-PR-EL-A-1050 |  |  |  | -181.06d | 0d | PRO |
| CP09-PR-EL-PO-1140 |  | Underwater Recessed Spotlight - Material PO-Issued | 3d | 2026-06-07 | 2026-06-09 | CP09-PR-EL-A-1140 |  |  |  | -181.06d | 0d | PRO |
|  | 2 | **Landscape** |  | 2025-08-22 | 2026-01-16 |  |  |  |  |  |  |  |
| CP09-PR-EL-PO-1060 |  | Power Cables for Landscape Lighting - Material PO-Issued | 5d | 2025-08-22 A | 2025-08-26 A | CP09-PR-EL-A-1060 | 100% | 2025-08-24 | 2025-08-28 |  |  | PRO |
| CP09-PR-EL-PO-1080 |  | Lighting Pole - Material PO-Issued | 5d | 2026-01-12 A | 2026-01-16 A | CP09-PR-EL-A-1080 | 100% | 2026-01-18 | 2026-01-22 |  |  | PRO |
|  | 3 | **Mechnical Materials** |  | 2025-05-18 | 2025-05-22 |  |  |  |  |  |  |  |
|  | 1 | **Swimmimng Pool & MR** |  | 2025-05-18 | 2025-05-22 |  |  |  |  |  |  |  |
| CP09-PR-ME-PO-1000 |  | UPVC pipes,Fitting -- Material PO-Issued | 5d | 2025-05-18 A | 2025-05-22 A | CP09-PR-ME-A-1000 | 100% | 2025-06-21 | 2025-06-25 |  |  | PRO |
|  | 6 | **Irrigation Materials** |  | 2024-08-13 | 2024-08-16 |  |  |  |  |  |  |  |
| CP09-PR-IR-PO-1000 |  | UPVC pipes for Sub-main Line & Lateral - Material PO-Issued | 3d | 2024-08-13 A | 2024-08-16 A | CP09-PR-IR-A-1000 | 100% | 2024-08-31 | 2024-09-02 |  |  | PRO |
| CP09-PR-IR-PO-1010 |  | Drip line-Material PO-Issued | 3d | 2024-08-13 A | 2024-08-16 A | CP09-PR-IR-A-1010 | 100% | 2024-08-31 | 2024-09-02 |  |  | PRO |
| CP09-PR-IR-PO-1020 |  | Rings -Material PO-Issued | 3d | 2024-08-13 A | 2024-08-16 A | CP09-PR-IR-A-1020 | 100% | 2024-08-31 | 2024-09-02 |  |  | PRO |
| CP09-PR-IR-PO-1030 |  | Valves -Material PO-Issued | 3d | 2024-08-13 A | 2024-08-16 A | CP09-PR-IR-A-1030 | 100% | 2024-08-31 | 2024-09-02 |  |  | PRO |
| CP09-PR-IR-PO-1040 |  | Pop up Multi ray sprinkler-Material PO-Issued | 3d | 2024-08-13 A | 2024-08-16 A | CP09-PR-IR-A-1040 | 100% | 2024-08-31 | 2024-09-02 |  |  | PRO |
| CP09-PR-IR-PO-1050 |  | Electrical Solenoid Valve -Material PO-Issued | 3d | 2024-08-13 A | 2024-08-16 A | CP09-PR-IR-A-1050 | 100% | 2024-08-31 | 2024-09-02 |  |  | PRO |
| CP09-PR-IR-PO-1060 |  | Test Controller -Material PO-Issued | 3d | 2024-08-13 A | 2024-08-16 A | CP09-PR-IR-A-1060 | 100% | 2024-08-31 | 2024-09-02 |  |  | PRO |
| CP09-PR-IR-PO-1070 |  | Direct Cables -Material PO-Issued | 3d | 2024-08-13 A | 2024-08-16 A | CP09-PR-IR-A-1070 | 100% | 2024-08-31 | 2024-09-02 |  |  | PRO |
| CP09-PR-IR-PO-1080 |  | Decoder one station - Material PO-Issued | 3d | 2024-08-13 A | 2024-08-16 A | CP09-PR-IR-A-1080 | 100% | 2024-08-31 | 2024-09-02 |  |  | PRO |

| ID | WBS | Activity | Duration | Start | Finish | Predecessors | Complete | Planned start | Planned finish | Total float | Free float | CP09_Discipline-7 |
| --- | --- | --- | --- | --- | --- | --- | --- | --- | --- | --- | --- | --- |
|  | 5 | **Plantings Materials** |  | 2025-07-06 | 2025-10-24 |  |  |  |  |  |  |  |
| CP09-PR-PN-PO-1000 |  | Sweet Sand for all plants - Material PO-Issued | 5d | 2025-07-06 A | 2025-07-10 A | CP09-PR-PN-A-1000 | 100% | 2025-08-25 | 2025-08-30 |  |  | PRO |
| CP09-PR-PN-PO-1010 |  | Organic Manure - Material PO-Issued | 5d | 2025-07-06 A | 2025-07-10 A | CP09-PR-PN-A-1010 | 100% | 2025-07-31 | 2025-08-05 |  |  | PRO |
| CP09-PR-PN-PO-1020 |  | Large Trees - Material PO-Issued | 5d | 2025-07-06 A | 2025-07-10 A | CP09-PR-PN-A-1020 | 100% | 2025-08-25 | 2025-08-30 |  |  | PRO |
| CP09-PR-PN-PO-1050 |  | Ornamental grass - Material PO-Issued | 5d | 2025-07-06 A | 2025-07-10 A | CP09-PR-PN-A-1050 | 100% | 2025-08-31 | 2025-09-06 |  |  | PRO |
| CP09-PR-PN-PO-1060 |  | Shrubs - Material PO-Issued | 5d | 2025-07-06 A | 2025-07-10 A | CP09-PR-PN-A-1060 | 100% | 2025-08-31 | 2025-09-06 |  |  | PRO |
| CP09-PR-PN-PO-1070 |  | Ground Covers - Material PO-Issued | 5d | 2025-07-06 A | 2025-07-10 A | CP09-PR-PN-A-1070 | 100% | 2025-08-31 | 2025-09-06 |  |  | PRO |
| CP09-PR-PN-PO-1080 |  | Succulents - Material PO-Issued | 5d | 2025-07-06 A | 2025-07-10 A | CP09-PR-PN-A-1080 | 100% | 2025-08-31 | 2025-09-06 |  |  | PRO |
| CP09-PR-PN-PO-1030 |  | Vines & Climbers - Material PO-Issued | 5d | 2025-10-20 A | 2025-10-24 A | CP09-PR-PN-A-1030 | 100% | 2025-10-19 | 2025-10-23 |  |  | PRO |
| CP09-PR-PN-PO-1040 |  | Lawn - Material PO-Issued | 5d | 2025-10-20 A | 2025-10-24 A | CP09-PR-PN-A-1040 | 100% | 2025-10-19 | 2025-10-23 |  |  | PRO |
|  | 10 | **Long Lead Item** |  | 2025-05-18 | 2026-06-11 |  |  |  |  |  |  |  |
|  | 1 | **Electrical Material** |  | 2026-01-12 | 2026-06-11 |  |  |  |  |  |  |  |
| CP09-PR-EL-PO-1090 |  | Bollard for Walkways - Material PO-Issued | 5d | 2026-01-12 A | 2026-01-16 A | CP09-PR-EL-A-1090 | 100% | 2026-01-18 | 2026-01-22 |  |  | PRO |
| CP09-PR-EL-PO-1070 |  | Connecting Pillars - Material PO-Issued | 5d | 2026-06-07 | 2026-06-11 | CP09-PR-EL-A-1070 |  |  |  | -181d | 0d | PRO |
| CP09-PR-EL-PO-1100 |  | Surface Mountaed Down Light for Pool Cabans - Material PO-Issued | 5d | 2026-06-07 | 2026-06-11 | CP09-PR-EL-A-1100 |  |  |  | -180d | 0d | PRO |
| CP09-PR-EL-PO-1110 |  | Diffused Wall Recessed Step - Material PO-Issued | 5d | 2026-06-07 | 2026-06-11 | CP09-PR-EL-A-1110 |  |  |  | -180d | 0d | PRO |
| CP09-PR-EL-PO-1120 |  | Inground Uplight For Palms - Material PO-Issued | 5d | 2026-06-07 | 2026-06-11 | CP09-PR-EL-A-1120 |  |  |  | -180d | 0d | PRO |
| CP09-PR-EL-PO-1130 |  | Projectors for Trees - Material PO-Issued | 5d | 2026-06-07 | 2026-06-11 | CP09-PR-EL-A-1130 |  |  |  | -180d | 0d | PRO |
| CP09-PR-EL-PO-1150 |  | Outlet lighting fixtures - Material PO-Issued | 5d | 2026-06-07 | 2026-06-11 | CP09-PR-EL-A-1150 |  |  |  | -174.38d | 0d | PRO |
|  | 2 | **Mechnical Material** |  | 2025-05-18 | 2025-05-22 |  |  |  |  |  |  |  |
| CP09-PR-ME-PO-1010 |  | Valves - Material PO-Issued | 5d | 2025-05-18 A | 2025-05-22 A | CP09-PR-ME-A-1010 | 100% | 2025-06-21 | 2025-06-25 |  |  | PRO |
| CP09-PR-ME-PO-1020 |  | Sand Filter - Material PO-Issued | 5d | 2025-05-18 A | 2025-05-22 A | CP09-PR-ME-A-1020 | 100% | 2025-06-30 | 2025-07-05 |  |  | PRO |
| CP09-PR-ME-PO-1030 |  | Filtration pump - Material PO-Issued | 5d | 2025-05-18 A | 2025-05-22 A | CP09-PR-ME-A-1030 | 100% | 2025-06-21 | 2025-06-25 |  |  | PRO |
| CP09-PR-ME-PO-1040 |  | Chemical dosing system -- Material PO-Issued | 5d | 2025-05-18 A | 2025-05-22 A | CP09-PR-ME-A-1040 | 100% | 2025-06-21 | 2025-06-25 |  |  | PRO |
| CP09-PR-ME-PO-1050 |  | Chlorinator tablets - Material PO-Issued | 5d | 2025-05-18 A | 2025-05-22 A | CP09-PR-ME-A-1050 | 100% | 2025-06-30 | 2025-07-05 |  |  | PRO |
| CP09-PR-ME-PO-1060 |  | GUTTER DRAIN -Material PO-Issued | 5d | 2025-05-18 A | 2025-05-22 A | CP09-PR-ME-A-1060 | 100% | 2025-06-30 | 2025-07-05 |  |  | PRO |
| CP09-PR-ME-PO-1070 |  | Submersible pump - Material PO-Issued | 5d | 2025-05-18 A | 2025-05-22 A | CP09-PR-ME-A-1070 | 100% | 2025-06-21 | 2025-06-25 |  |  | PRO |
| CP09-PR-ME-PO-1080 |  | Ventilation Exahust Fan - Material PO-Issued | 5d | 2025-05-18 A | 2025-05-22 A | CP09-PR-ME-A-1080 | 100% | 2025-06-30 | 2025-07-05 |  |  | PRO |

| ID | WBS | Activity | Duration | Start | Finish | Predecessors | Complete | Planned start | Planned finish | CP09_Discipline-7 |
| --- | --- | --- | --- | --- | --- | --- | --- | --- | --- | --- |
|  | 9 | **Play Field Equipment** |  | 2025-05-18 | 2026-01-16 |  |  |  |  |  |
|  | 1 | **Fitness Equipment** |  | 2026-01-12 | 2026-01-16 |  |  |  |  |  |
| CP09-PR-PE-PO-1000 |  | OUTDOOR FITNESS-BALANCE BOARD - Material PO-Issued | 5d | 2026-01-12 A | 2026-01-16 A | CP09-PR-PE-A-1000 | 100% | 2026-01-18 | 2026-01-22 | PRO |
| CP09-PR-PE-PO-1010 |  | OUTDOOR FITNESS-DOUBLE CHEST PRESS - Material PO-Issued | 5d | 2026-01-12 A | 2026-01-16 A | CP09-PR-PE-A-1010 | 100% | 2026-01-18 | 2026-01-22 | PRO |
| CP09-PR-PE-PO-1020 |  | OUTDOOR FITNESS-LEG LIFT & PULL UP - Material PO-Issued | 5d | 2026-01-12 A | 2026-01-16 A | CP09-PR-PE-A-1020 | 100% | 2026-01-18 | 2026-01-22 | PRO |
| CP09-PR-PE-PO-1030 |  | OUTDOOR FITNESS-STRETCH STATION - Material PO-Issued | 5d | 2026-01-12 A | 2026-01-16 A | CP09-PR-PE-A-1030 | 100% | 2026-01-18 | 2026-01-22 | PRO |
|  | 2 | **Kids playground equipment** |  | 2025-05-18 | 2025-05-22 |  |  |  |  |  |
| CP09-PR-PE-PO-1040 |  | Log Pile - Material PO-Issued | 5d | 2025-05-18 A | 2025-05-22 A | CP09-PR-PE-A-1040 | 100% | 2025-07-16 | 2025-07-21 | PRO |
| CP09-PR-PE-PO-1050 |  | Log Tangle - Material PO-Issued | 5d | 2025-05-18 A | 2025-05-22 A | CP09-PR-PE-A-1050 | 100% | 2025-07-16 | 2025-07-21 | PRO |
| CP09-PR-PE-PO-1060 |  | Offset Ladder Grid - Material PO-Issued | 5d | 2025-05-18 A | 2025-05-22 A | CP09-PR-PE-A-1060 | 100% | 2025-07-16 | 2025-07-21 | PRO |
| CP09-PR-PE-PO-1070 |  | Single Bay Belt Swing - Material PO-Issued | 5d | 2025-05-18 A | 2025-05-22 A | CP09-PR-PE-A-1070 | 100% | 2025-07-16 | 2025-07-21 | PRO |
| CP09-PR-PE-PO-1080 |  | Stepper Cluster - Material PO-Issued | 5d | 2025-05-18 A | 2025-05-22 A | CP09-PR-PE-A-1080 | 100% | 2025-07-16 | 2025-07-21 | PRO |
| CP09-PR-PE-PO-1090 |  | Wobble Board /Small - Material PO-Issued | 5d | 2025-05-18 A | 2025-05-22 A | CP09-PR-PE-A-1090 | 100% | 2025-07-16 | 2025-07-21 | PRO |
| CP09-PR-PE-PO-1100 |  | Wobble Board /Large - Material PO-Issued | 5d | 2025-05-18 A | 2025-05-22 A | CP09-PR-PE-A-1100 | 100% | 2025-07-16 | 2025-07-21 | PRO |
|  | 7 | **Landscape Furntiure** |  | 2025-05-18 | 2025-05-22 |  |  |  |  |  |
| CP09-PR-FN-PO-1000 |  | Pitch Pine Picnic Table - Material PO-Issued | 5d | 2025-05-18 A | 2025-05-22 A | CP09-PR-FN-A-1000 | 100% | 2025-07-20 | 2025-07-26 | PRO |
| CP09-PR-FN-PO-1010 |  | Crcular Cast-iron tree grate - Material PO-Issued | 5d | 2025-05-18 A | 2025-05-22 A | CP09-PR-FN-A-1010 | 100% | 2025-06-30 | 2025-07-05 | PRO |
| CP09-PR-FN-PO-1020 |  | Aluminium Cabana for Pool Shading - Material PO-Issued | 5d | 2025-05-18 A | 2025-05-22 A | CP09-PR-FN-A-1020 | 100% | 2025-07-03 | 2025-07-08 | PRO |
| CP09-PR-FN-PO-1030 |  | Pitch Pine Benchs - Material PO-Issued | 5d | 2025-05-18 A | 2025-05-22 A | CP09-PR-FN-A-1030 | 100% | 2025-07-20 | 2025-07-26 | PRO |
| CP09-PR-FN-PO-1040 |  | Polyester Hammocks - Material PO-Issued | 5d | 2025-05-18 A | 2025-05-22 A | CP09-PR-FN-A-1040 | 100% | 2025-07-12 | 2025-07-16 | PRO |
| CP09-PR-FN-PO-1050 |  | Adult Play Swing - Material PO-Issued | 5d | 2025-05-18 A | 2025-05-22 A | CP09-PR-FN-A-1050 | 100% | 2025-07-12 | 2025-07-16 | PRO |
| CP09-PR-FN-PO-1060 |  | Aluminum Trash Bin - Material PO-Issued | 5d | 2025-05-18 A | 2025-05-22 A | CP09-PR-FN-A-1060 | 100% | 2025-07-12 | 2025-07-16 | PRO |
| CP09-PR-FN-PO-1070 |  | Tensile Teflon Tent - Material PO-Issued | 5d | 2025-05-18 A | 2025-05-22 A | CP09-PR-FN-A-1070 | 100% | 2025-07-12 | 2025-07-16 | PRO |
| CP09-PR-FN-PO-1080 |  | Lanscape Edging ( Rubber) - Material PO-Issued | 5d | 2025-05-18 A | 2025-05-22 A | CP09-PR-FN-A-1080 | 100% | 2025-07-12 | 2025-07-16 | PRO |

| ID | WBS | Activity | Duration | Start | Finish | Predecessors | Complete | Planned start | Planned finish | Total float | Free float | Calendar | CP09_Discipline-7 |
| --- | --- | --- | --- | --- | --- | --- | --- | --- | --- | --- | --- | --- | --- |
|  | 4 | **Material Delivery** |  | 2024-08-12 | 2026-07-19 |  |  |  |  |  |  |  |  |
|  | 1 | **Civil Materials** |  | 2024-08-12 | 2026-06-23 |  |  |  |  |  |  |  |  |
| CP09-PR-CV-DY-1000 |  | Concrete - Material Delivery | 14d | 2024-08-12 A | 2024-08-21 A | CP09-PR-CV-PO-1000 | 100% | 2024-08-27 | 2024-09-09 |  |  | 7-Day Workweek | PRO |
| CP09-PR-CV-DY-1010 |  | Waterproofing - Material Delivery | 14d | 2024-08-19 A | 2024-08-28 A | CP09-PR-CV-PO-1010 | 100% | 2024-09-27 | 2024-10-10 |  |  | 7-Day Workweek | PRO |
| CP09-PR-CV-DY-1020 |  | Block - Material Delivery | 14d | 2025-05-18 A | 2025-05-22 A | CP09-PR-CV-PO-1020 | 100% | 2025-06-24 | 2025-07-07 |  |  | 7-Day Workweek | PRO |
| CP09-PR-CV-DY-1070 |  | Plaster Accessories -Material Delivery | 14d | 2025-08-22 A | 2025-08-26 A | CP09-PR-CV-PO-1070 | 100% | 2025-08-27 | 2025-09-09 |  |  | 7-Day Workweek | PRO |
| CP09-PR-CV-DY-1130 |  | Rebars - Material Delivery | 15d | 2025-08-22 A | 2025-08-26 A | CP09-PR-CV-PO-1130 | 100% | 2025-08-27 | 2025-09-10 |  |  | 7-Day Workweek | PRO |
| CP09-PR-CV-DY-1110 |  | Epoxy for Machine Room - Material Delivery | 14d | 2025-10-20 A | 2025-10-24 A | CP09-PR-CV-PO-1110 | 100% | 2025-10-22 | 2025-11-04 |  |  | 7-Day Workweek | PRO |
| CP09-PR-CV-DY-1080 |  | Emulsion Paint - Material Delivery | 14d | 2026-01-12 A | 2026-01-16 A | CP09-PR-CV-PO-1080 | 100% | 2026-01-21 | 2026-02-03 |  |  | 7-Day Workweek | PRO |
| CP09-PR-CV-DY-1120 |  | Marble for Cheek & Retainig Walls Material Delivery | 14d | 2026-06-07 | 2026-06-20 | CP09-PR-CV-PO-1120 |  |  |  | -250.25d | 0d | 7-Day Workweek | PRO |
| CP09-PR-CV-DY-1030 |  | Mosaic - Material Delivery | 14d | 2026-06-10 | 2026-06-23 | CP09-PR-CV-PO-1030 |  |  |  | -218.56d | 0d | 7-Day Workweek | PRO |
| CP09-PR-CV-DY-1040 |  | Granite for Swimming Pool - Material Delivery | 14d | 2026-06-10 | 2026-06-23 | CP09-PR-CV-PO-1040 |  |  |  | -205.31d | 6d | 7-Day Workweek | PRO |
| CP09-PR-CV-DY-1050 |  | Stanless Steel Ladders for Swimming Pool - Material Delivery | 14d | 2026-06-10 | 2026-06-23 | CP09-PR-CV-PO-1050 |  |  |  | -196.81d | 0d | 7-Day Workweek | PRO |
| CP09-PR-CV-DY-1060 |  | Stanless Steel Handrial for Swimming Pool - Material Delivery | 14d | 2026-06-10 | 2026-06-23 | CP09-PR-CV-PO-1060 |  |  |  | -193d | 3.81d | 7-Day Workweek | PRO |
| CP09-PR-CV-DY-1090 |  | Geotextile & Geocomposit for Machine Room - Material Delivery | 14d | 2026-06-10 | 2026-06-23 | CP09-PR-CV-PO-1090 |  |  |  | -191d | 0d | 7-Day Workweek | PRO |
| CP09-PR-CV-DY-1100 |  | Drainage Gravel for Machine Room - Material Delivery | 14d | 2026-06-10 | 2026-06-23 | CP09-PR-CV-PO-1100 |  |  |  | -191d | 0d | 7-Day Workweek | PRO |
|  | 2 | **Hardscape Materials** |  | 2025-05-18 | 2026-06-23 |  |  |  |  |  |  |  |  |
| CP09-PR-HD-DY-1080 |  | Flush Curb - Material Delivery | 9.38d | 2025-05-18 A | 2025-05-22 A | CP09-PR-HD-PO-1080 | 100% | 2025-05-23 | 2025-06-01 |  |  | 7-Day Workweek | PRO |
| CP09-PR-HD-DY-1180 |  | Interlocks -Material Delivery | 9.38d | 2025-05-18 A | 2025-05-22 A | CP09-PR-HD-PO-1180 | 100% | 2025-05-21 | 2025-05-30 |  |  | 7-Day Workweek | PRO |
| CP09-PR-HD-DY-1000 |  | Concrete Exposed Aggeregate - Material Delivery | 14d | 2025-08-22 A | 2025-08-26 A | CP09-PR-HD-PO-1000 | 100% | 2025-08-27 | 2025-09-09 |  |  | 7-Day Workweek | PRO |
| CP09-PR-HD-DY-1010 |  | Marble Paving - - Material Delivery | 14d | 2025-08-22 A | 2025-08-26 A | CP09-PR-HD-PO-1010 | 100% | 2025-08-27 | 2025-09-09 |  |  | 7-Day Workweek | PRO |
| CP09-PR-HD-DY-1060 |  | Geotextile Sheets - Material Delivery | 14d | 2025-08-22 A | 2025-08-26 A | CP09-PR-HD-PO-1060 | 100% | 2025-08-27 | 2025-09-09 |  |  | 7-Day Workweek | PRO |
| CP09-PR-HD-DY-1070 |  | Clean sand layer - Material Delivery | 14d | 2025-08-22 A | 2025-08-26 A | CP09-PR-HD-PO-1070 | 100% | 2025-08-27 | 2025-09-09 |  |  | 7-Day Workweek | PRO |
| CP09-PR-HD-DY-1090 |  | Crush Stone below Interlock - Material Delivery | 14d | 2025-08-22 A | 2025-08-26 A | CP09-PR-HD-PO-1090 | 100% | 2025-08-27 | 2025-09-09 |  |  | 7-Day Workweek | PRO |
| CP09-PR-HD-DY-1100 |  | Marble for Steps - Material Delivery | 14d | 2025-08-22 A | 2025-08-26 A | CP09-PR-HD-PO-1100 | 100% | 2025-08-27 | 2025-09-09 |  |  | 7-Day Workweek | PRO |
| CP09-PR-HD-DY-1020 |  | WPC - Material Delivery | 14d | 2026-01-12 A | 2026-01-16 A | CP09-PR-HD-PO-1020 | 100% | 2026-01-21 | 2026-02-03 |  |  | 7-Day Workweek | PRO |
| CP09-PR-HD-DY-1030 |  | Gravel Layer - Material Delivery | 14d | 2026-06-10 | 2026-06-23 | CP09-PR-HD-PO-1030 |  |  |  | -229.38d | 0d | 7-Day Workweek | PRO |
| CP09-PR-HD-DY-1040 |  | Crushed Dolomite stone - Material Delivery | 14d | 2026-06-10 | 2026-06-23 | CP09-PR-HD-PO-1040 |  |  |  | -219.56d | 7.56d | 7-Day Workweek | PRO |
| CP09-PR-HD-DY-1050 |  | Loose gravel - Material Delivery | 14d | 2026-06-10 | 2026-06-23 | CP09-PR-HD-PO-1050 |  |  |  | -227.38d | 0d | 7-Day Workweek | PRO |
| CP09-PR-HD-DY-1110 |  | Marble for Seat - Material Delivery | 14d | 2026-06-10 | 2026-06-23 | CP09-PR-HD-PO-1110 |  |  |  | -240d | 0d | 7-Day Workweek | PRO |
| CP09-PR-HD-DY-1120 |  | Mica - Material Delivery | 14d | 2026-06-10 | 2026-06-23 | CP09-PR-HD-PO-1120 |  |  |  | -213.75d | 3.56d | 7-Day Workweek | PRO |
| CP09-PR-HD-DY-1130 |  | Blast stone blocks - Material Delivery | 14d | 2026-06-10 | 2026-06-23 | CP09-PR-HD-PO-1130 |  |  |  | -195.81d | 12.06d | 7-Day Workweek | PRO |
| CP09-PR-HD-DY-1140 |  | Loose Rounded Pebbles - Material Delivery | 14d | 2026-06-10 | 2026-06-23 | CP09-PR-HD-PO-1140 |  |  |  | -182d | 19.06d | 7-Day Workweek | PRO |
| CP09-PR-HD-DY-1150 |  | Shower Head - Material Delivery | 14d | 2026-06-10 | 2026-06-23 | CP09-PR-HD-PO-1150 |  |  |  | -175d | 22.81d | 7-Day Workweek | PRO |
| CP09-PR-HD-DY-1160 |  | Stainless Handrail - Material Delivery | 14d | 2026-06-10 | 2026-06-23 | CP09-PR-HD-PO-1160 |  |  |  | -218.62d | 0d | 7-Day Workweek | PRO |
| CP09-PR-HD-DY-1170 |  | Glass Handrail - Material Delivery | 14d | 2026-06-10 | 2026-06-23 | CP09-PR-HD-PO-1170 |  |  |  | -218.62d | 0d | 7-Day Workweek | PRO |

| ID | WBS | Activity | Duration | Start | Finish | Predecessors | Complete | Planned start | Planned finish | Total float | Free float | Calendar | CP09_Discipline-7 |
| --- | --- | --- | --- | --- | --- | --- | --- | --- | --- | --- | --- | --- | --- |
|  | 8 | **Sinage** |  | 2025-08-22 | 2025-08-26 |  |  |  |  |  |  |  |  |
| CP09-PR-SN-DY-1000 |  | STREET DIRECTIONAL SIGN - Material Delivery | 19.69d | 2025-08-22 A | 2025-08-26 A | CP09-PR-SN-PO-1000 | 100% | 2025-08-29 | 2025-09-17 |  |  | 7-Day Workweek | PRO |
| CP09-PR-SN-DY-1010 |  | DIRECTIONAL SIGN - Material Delivery | 19.69d | 2025-08-22 A | 2025-08-26 A | CP09-PR-SN-PO-1010 | 100% | 2025-08-29 | 2025-09-17 |  |  | 7-Day Workweek | PRO |
| CP09-PR-SN-DY-1020 |  | UNIT ID SIGN - Material Delivery | 19.69d | 2025-08-22 A | 2025-08-26 A | CP09-PR-SN-PO-1020 | 100% | 2025-08-29 | 2025-09-17 |  |  | 7-Day Workweek | PRO |
| CP09-PR-SN-DY-1030 |  | RULES SIGN - Material Delivery | 19.69d | 2025-08-22 A | 2025-08-26 A | CP09-PR-SN-PO-1030 | 100% | 2025-08-29 | 2025-09-17 |  |  | 7-Day Workweek | PRO |
| CP09-PR-SN-DY-1040 |  | IDENTIFICATION SIGN - Material Delivery | 19.69d | 2025-08-22 A | 2025-08-26 A | CP09-PR-SN-PO-1040 | 100% | 2025-08-29 | 2025-09-17 |  |  | 7-Day Workweek | PRO |
|  | 4 | **Electrical Materials** |  | 2025-05-18 | 2026-06-24 |  |  |  |  |  |  |  |  |
|  | 1 | **Swimming pool & MR** |  | 2025-05-18 | 2026-06-24 |  |  |  |  |  |  |  |  |
| CP09-PR-EL-DY-1030 |  | Power Cables & Wires - Material Delivery | 28.12d | 2025-05-18 A | 2025-05-22 A | CP09-PR-EL-PO-1030 | 100% | 2025-06-24 | 2025-07-22 |  |  | 7-Day Workweek | PRO |
| CP09-PR-EL-DY-1000 |  | Conduits - Material Delivery | 14.06d | 2026-06-10 | 2026-06-24 | CP09-PR-EL-PO-1000 |  |  |  | -256.06d | 0d | 7-Day Workweek | PRO |
| CP09-PR-EL-DY-1010 |  | Cable tray - Material Delivery | 14.06d | 2026-06-10 | 2026-06-24 | CP09-PR-EL-PO-1010 |  |  |  | -256.06d | 0d | 7-Day Workweek | PRO |
| CP09-PR-EL-DY-1020 |  | Panel boards - Material Delivery | 14.06d | 2026-06-10 | 2026-06-24 | CP09-PR-EL-PO-1020 |  |  |  | -239.06d | 6d | 7-Day Workweek | PRO |
| CP09-PR-EL-DY-1040 |  | Earthing System - - Material Delivery | 14.06d | 2026-06-10 | 2026-06-24 | CP09-PR-EL-PO-1040 |  |  |  | -205.06d | 12d | 7-Day Workweek | PRO |
| CP09-PR-EL-DY-1050 |  | Lighting Outlets , Switches Fixture - Material Delivery | 14.06d | 2026-06-10 | 2026-06-24 | CP09-PR-EL-PO-1050 |  |  |  | -211.06d | 18d | 7-Day Workweek | PRO |
| CP09-PR-EL-DY-1140 |  | Underwater Recessed Spotlight | 14.06d | 2026-06-10 | 2026-06-24 | CP09-PR-EL-PO-1140 |  |  |  | -211.06d | 18d | 7-Day Workweek | PRO |
|  | 2 | **Landscape** |  | 2025-07-01 | 2026-01-16 |  |  |  |  |  |  |  |  |
| CP09-PR-EL-DY-1060 |  | Power Cables for Landscape Lighting - Material Delivery | 45d | 2025-07-01 A | 2025-09-05 A | CP09-PR-EL-PO-1060 | 100% | 2025-08-29 | 2025-10-12 |  |  | 7-Day Workweek | PRO |
| CP09-PR-EL-DY-1080 |  | Lighting Pole - Material Delivery | 30d | 2026-01-12 A | 2026-01-16 A | CP09-PR-EL-PO-1080 | 100% | 2026-01-23 | 2026-02-21 |  |  | 7-Day Workweek | PRO |
|  | 3 | **Mechnical Materials** |  | 2025-05-18 | 2025-05-22 |  |  |  |  |  |  |  |  |
|  | 1 | **Swimmimng Pool & MR** |  | 2025-05-18 | 2025-05-22 |  |  |  |  |  |  |  |  |
| CP09-PR-ME-DY-1000 |  | UPVC pipes,Fitting -Material Delivery | 19.69d | 2025-05-18 A | 2025-05-22 A | CP09-PR-ME-PO-1000 | 100% | 2025-06-26 | 2025-07-15 |  |  | 7-Day Workweek | PRO |
|  | 6 | **Irrigation Materials** |  | 2025-05-18 | 2025-08-26 |  |  |  |  |  |  |  |  |
| CP09-PR-IR-DY-1000 |  | UPVC pipes for Sub-main Line & Lateral - Material Delivery | 15d | 2025-05-18 A | 2025-05-22 A | CP09-PR-IR-PO-1000 | 100% | 2025-05-18 | 2025-06-01 |  |  | 7-Day Workweek | PRO |
| CP09-PR-IR-DY-1010 |  | Drip line-Material Delivery | 15d | 2025-08-22 A | 2025-08-26 A | CP09-PR-IR-PO-1010 | 100% | 2025-08-24 | 2025-09-07 |  |  | 7-Day Workweek | PRO |
| CP09-PR-IR-DY-1020 |  | Rings -Material Delivery | 60d | 2025-08-22 A | 2025-08-26 A | CP09-PR-IR-PO-1020 | 100% | 2025-08-24 | 2025-10-22 |  |  | 7-Day Workweek | PRO |
| CP09-PR-IR-DY-1030 |  | Valves -Material Delivery | 60d | 2025-08-22 A | 2025-08-26 A | CP09-PR-IR-PO-1030 | 100% | 2025-08-24 | 2025-10-22 |  |  | 7-Day Workweek | PRO |
| CP09-PR-IR-DY-1040 |  | Pop up Multi ray sprinkler-Material Delivery | 60d | 2025-08-22 A | 2025-08-26 A | CP09-PR-IR-PO-1040 | 100% | 2025-08-24 | 2025-10-22 |  |  | 7-Day Workweek | PRO |
| CP09-PR-IR-DY-1050 |  | Electrical Solenoid Valve -Material Delivery | 60d | 2025-08-22 A | 2025-08-26 A | CP09-PR-IR-PO-1050 | 100% | 2025-08-24 | 2025-10-22 |  |  | 7-Day Workweek | PRO |
| CP09-PR-IR-DY-1060 |  | Test Controller -Material Delivery | 60d | 2025-08-22 A | 2025-08-26 A | CP09-PR-IR-PO-1060 | 100% | 2025-08-24 | 2025-10-22 |  |  | 7-Day Workweek | PRO |
| CP09-PR-IR-DY-1070 |  | Direct Cables -Material Delivery | 60d | 2025-08-22 A | 2025-08-26 A | CP09-PR-IR-PO-1070 | 100% | 2025-08-24 | 2025-10-22 |  |  | 7-Day Workweek | PRO |
| CP09-PR-IR-DY-1080 |  | Decoder one station - Material Delivery | 60d | 2025-08-22 A | 2025-08-26 A | CP09-PR-IR-PO-1080 | 100% | 2025-08-24 | 2025-10-22 |  |  | 7-Day Workweek | PRO |

| ID | WBS | Activity | Duration | Start | Finish | Predecessors | Complete | Planned start | Planned finish | Total float | Free float | Calendar | CP09_Discipline-7 |
| --- | --- | --- | --- | --- | --- | --- | --- | --- | --- | --- | --- | --- | --- |
|  | 5 | **Plantings Materials** |  | 2025-07-06 | 2026-07-06 |  |  |  |  |  |  |  |  |
| CP09-PR-PN-DY-1000 |  | Sweet Sand for all plants - Material Delivery | 30d | 2025-07-06 A | 2025-07-10 A | CP09-PR-PN-PO-1000 | 100% | 2025-08-31 | 2025-09-29 |  |  | 7-Day Workweek | PRO |
| CP09-PR-PN-DY-1010 |  | Organic Manure - Material Delivery | 30d | 2025-07-06 A | 2025-07-10 A | CP09-PR-PN-PO-1010 FS+7d | 100% | 2025-08-14 | 2025-09-12 |  |  | 7-Day Workweek | PRO |
| CP09-PR-PN-DY-1020 |  | Large Trees - Material Delivery | 30d | 2025-07-06 A | 2025-07-10 A | CP09-PR-PN-PO-1020 FS+7d | 100% | 2025-09-09 | 2025-10-08 |  |  | 7-Day Workweek | PRO |
| CP09-PR-PN-DY-1060 |  | Shrubs - Material Delivery | 30d | 2025-07-06 A | 2025-07-10 A | CP09-PR-PN-PO-1060 FS+7d | 100% | 2025-09-15 | 2025-10-14 |  |  | 7-Day Workweek | PRO |
| CP09-PR-PN-DY-1070 |  | Ground Covers - Material Delivery | 30d | 2025-07-06 A | 2025-07-10 A | CP09-PR-PN-PO-1070 FS+7d | 100% | 2025-09-15 | 2025-10-14 |  |  | 7-Day Workweek | PRO |
| CP09-PR-PN-DY-1080 |  | Succulents - Material Delivery | 30d | 2025-07-06 A | 2025-07-10 A | CP09-PR-PN-PO-1080 FS+7d | 100% | 2025-09-15 | 2025-10-14 |  |  | 7-Day Workweek | PRO |
| CP09-PR-PN-DY-1030 |  | Vines & Climbers - Material Delivery | 30d | 2025-10-20 A | 2025-10-24 A | CP09-PR-PN-PO-1030 FS+7d | 100% | 2025-11-02 | 2025-12-01 |  |  | 7-Day Workweek | PRO |
| CP09-PR-PN-DY-1040 |  | Lawn - Material Delivery | 30d | 2025-10-20 A | 2025-10-24 A | CP09-PR-PN-PO-1040 FS+7d | 100% | 2025-11-02 | 2025-12-01 |  |  | 7-Day Workweek | PRO |
| CP09-PR-PN-DY-1050 |  | Ornamental grass - Material Delivery | 30d | 2026-06-07 | 2026-07-06 | CP09-PR-PN-PO-1050 FS+7d |  |  |  | -216.38d | 0d | 7-Day Workweek | PRO |
|  | 10 | **Long Lead Item** |  | 2025-05-18 | 2026-07-19 |  |  |  |  |  |  |  |  |
|  | 2 | **Mechnical Material** |  | 2025-05-18 | 2025-05-22 |  |  |  |  |  |  |  |  |
| CP09-PR-ME-DY-1010 |  | Valves - Material Delivery | 28.12d | 2025-05-18 A | 2025-05-22 A | CP09-PR-ME-PO-1010 | 100% | 2025-06-26 | 2025-07-24 |  |  | 7-Day Workweek | PRO |
| CP09-PR-ME-DY-1020 |  | Sand Filter - Material Delivery | 56.25d | 2025-05-18 A | 2025-05-22 A | CP09-PR-ME-PO-1020 | 100% | 2025-07-06 | 2025-08-31 |  |  | 7-Day Workweek | PRO |
| CP09-PR-ME-DY-1030 |  | Filtration pump - Material Delivery | 56.25d | 2025-05-18 A | 2025-05-22 A | CP09-PR-ME-PO-1030 | 100% | 2025-06-26 | 2025-08-21 |  |  | 7-Day Workweek | PRO |
| CP09-PR-ME-DY-1040 |  | Chemical dosing system -- Material Delivery | 56.25d | 2025-05-18 A | 2025-05-22 A | CP09-PR-ME-PO-1040 | 100% | 2025-06-26 | 2025-08-21 |  |  | 7-Day Workweek | PRO |
| CP09-PR-ME-DY-1050 |  | Chlorinator tablets - Material Delivery | 56.25d | 2025-05-18 A | 2025-05-22 A | CP09-PR-ME-PO-1050 | 100% | 2025-07-06 | 2025-08-31 |  |  | 7-Day Workweek | PRO |
| CP09-PR-ME-DY-1060 |  | GUTTER DRAIN -Material Delivery | 56.25d | 2025-05-18 A | 2025-05-22 A | CP09-PR-ME-PO-1060 | 100% | 2025-07-06 | 2025-08-31 |  |  | 7-Day Workweek | PRO |
| CP09-PR-ME-DY-1070 |  | Submersible pump - Material Delivery | 56.25d | 2025-05-18 A | 2025-05-22 A | CP09-PR-ME-PO-1070 | 100% | 2025-06-26 | 2025-08-21 |  |  | 7-Day Workweek | PRO |
| CP09-PR-ME-DY-1080 |  | Ventilation Exahust Fan - Material Delivery | 42.19d | 2025-05-18 A | 2025-05-22 A | CP09-PR-ME-PO-1080 | 100% | 2025-07-06 | 2025-08-17 |  |  | 7-Day Workweek | PRO |
|  | 1 | **Electrical Material** |  | 2026-01-12 | 2026-07-11 |  |  |  |  |  |  |  |  |
| CP09-PR-EL-DY-1090 |  | Bollard for Walkways - Material Delivery | 30d | 2026-01-12 A | 2026-01-16 A | CP09-PR-EL-PO-1090 | 100% | 2026-01-23 | 2026-02-21 |  |  | 7-Day Workweek | PRO |
| CP09-PR-EL-DY-1070 |  | Connecting Pillars - Material Delivery | 30d | 2026-06-12 | 2026-07-11 | CP09-PR-EL-PO-1070 |  |  |  | -211d | 0d | 7-Day Workweek | PRO |
| CP09-PR-EL-DY-1100 |  | Surface Mountaed Down Light for Pool Cabans - Material Delivery | 30d | 2026-06-12 | 2026-07-11 | CP09-PR-EL-PO-1100 |  |  |  | -209.38d | 0d | 7-Day Workweek | PRO |
| CP09-PR-EL-DY-1110 |  | Diffused Wall Recessed Step - Material Delivery | 30d | 2026-06-12 | 2026-07-11 | CP09-PR-EL-PO-1110 |  |  |  | -209.38d | 0d | 7-Day Workweek | PRO |
| CP09-PR-EL-DY-1120 |  | Inground Uplight For Palms - Material Delivery | 30d | 2026-06-12 | 2026-07-11 | CP09-PR-EL-PO-1120 |  |  |  | -209.38d | 0d | 7-Day Workweek | PRO |
| CP09-PR-EL-DY-1130 |  | Projectors for Trees - Material Delivery | 30d | 2026-06-12 | 2026-07-11 | CP09-PR-EL-PO-1130 |  |  |  | -209.38d | 0d | 7-Day Workweek | PRO |
| CP09-PR-EL-DY-1150 |  | Outlet lighting fixtures - Material Delivery | 30d | 2026-06-12 | 2026-07-11 | CP09-PR-EL-PO-1150 |  |  |  | -203.38d | 9.12d | 7-Day Workweek | PRO |

| ID | WBS | Activity | Duration | Start | Finish | Predecessors | Complete | Planned start | Planned finish | Total float | Free float | Calendar | CP09_Discipline-7 |
| --- | --- | --- | --- | --- | --- | --- | --- | --- | --- | --- | --- | --- | --- |
|  | 9 | **Play Field Equipment** |  | 2026-01-12 | 2026-07-19 |  |  |  |  |  |  |  |  |
|  | 1 | **Fitness Equipment** |  | 2026-01-12 | 2026-01-16 |  |  |  |  |  |  |  |  |
| CP09-PR-PE-DY-1000 |  | OUTDOOR FITNESS-BALANCE BOARD - Material Delivery | 42.19d | 2026-01-12 A | 2026-01-16 A | CP09-PR-PE-PO-1000 | 100% | 2026-01-23 | 2026-03-06 |  |  | 7-Day Workweek | PRO |
| CP09-PR-PE-DY-1010 |  | OUTDOOR FITNESS-DOUBLE CHEST PRESS - Material Delivery | 42.19d | 2026-01-12 A | 2026-01-16 A | CP09-PR-PE-PO-1010 | 100% | 2026-01-23 | 2026-03-06 |  |  | 7-Day Workweek | PRO |
| CP09-PR-PE-DY-1020 |  | OUTDOOR FITNESS-LEG LIFT & PULL UP - Material Delivery | 42.19d | 2026-01-12 A | 2026-01-16 A | CP09-PR-PE-PO-1020 | 100% | 2026-01-23 | 2026-03-06 |  |  | 7-Day Workweek | PRO |
| CP09-PR-PE-DY-1030 |  | OUTDOOR FITNESS-STRETCH STATION - Material Delivery | 42.19d | 2026-01-12 A | 2026-01-16 A | CP09-PR-PE-PO-1030 | 100% | 2026-01-23 | 2026-03-06 |  |  | 7-Day Workweek | PRO |
|  | 2 | **Kids playground equipment** |  | 2026-06-07 | 2026-07-19 |  |  |  |  |  |  |  |  |
| CP09-PR-PE-DY-1040 |  | Log Pile - Material Delivery | 42.19d | 2026-06-07 | 2026-07-19 | CP09-PR-PE-PO-1040 |  |  |  | -220.19d | 0d | 7-Day Workweek | PRO |
| CP09-PR-PE-DY-1050 |  | Log Tangle - Material Delivery | 42.19d | 2026-06-07 | 2026-07-19 | CP09-PR-PE-PO-1050 |  |  |  | -220.19d | 0d | 7-Day Workweek | PRO |
| CP09-PR-PE-DY-1060 |  | Offset Ladder Grid - Material Delivery | 42.19d | 2026-06-07 | 2026-07-19 | CP09-PR-PE-PO-1060 |  |  |  | -220.19d | 0d | 7-Day Workweek | PRO |
| CP09-PR-PE-DY-1070 |  | Single Bay Belt Swing - Material Delivery | 42.19d | 2026-06-07 | 2026-07-19 | CP09-PR-PE-PO-1070 |  |  |  | -220.19d | 0d | 7-Day Workweek | PRO |
| CP09-PR-PE-DY-1080 |  | Stepper Cluster - Material Delivery | 42.19d | 2026-06-07 | 2026-07-19 | CP09-PR-PE-PO-1080 |  |  |  | -220.19d | 0d | 7-Day Workweek | PRO |
| CP09-PR-PE-DY-1090 |  | Wobble Board /Small - Material Delivery | 42.19d | 2026-06-07 | 2026-07-19 | CP09-PR-PE-PO-1090 |  |  |  | -220.19d | 0d | 7-Day Workweek | PRO |
| CP09-PR-PE-DY-1100 |  | Wobble Board /Large - Material Delivery | 42.19d | 2026-06-07 | 2026-07-19 | CP09-PR-PE-PO-1100 |  |  |  | -220.19d | 0d | 7-Day Workweek | PRO |
|  | 7 | **Landscape Furntiure** |  | 2025-05-18 | 2026-07-05 |  |  |  |  |  |  |  |  |
| CP09-PR-FN-DY-1000 |  | Pitch Pine Picnic Table - Material Delivery | 28.12d | 2025-05-18 A | 2025-05-22 A | CP09-PR-FN-PO-1000 | 100% | 2025-07-27 | 2025-08-24 |  |  | 7-Day Workweek | PRO |
| CP09-PR-FN-DY-1030 |  | Pitch Pine Benchs - Material Delivery | 28.12d | 2025-05-18 A | 2025-05-22 A | CP09-PR-FN-PO-1030 | 100% | 2025-07-27 | 2025-08-24 |  |  | 7-Day Workweek | PRO |
| CP09-PR-FN-DY-1060 |  | Aluminum Trash Bin - Material Delivery | 28.12d | 2025-05-18 A | 2025-05-22 A | CP09-PR-FN-PO-1060 | 100% | 2025-07-17 | 2025-08-14 |  |  | 7-Day Workweek | PRO |
| CP09-PR-FN-DY-1040 |  | Polyester Hammocks - Material Delivery | 28.12d | 2025-08-22 A | 2025-08-26 A | CP09-PR-FN-PO-1040 | 100% | 2025-08-24 | 2025-09-21 |  |  | 7-Day Workweek | PRO |
| CP09-PR-FN-DY-1050 |  | Adult Play Swing - Material Delivery | 28.12d | 2025-08-22 A | 2025-08-26 A | CP09-PR-FN-PO-1050 | 100% | 2025-08-24 | 2025-09-21 |  |  | 7-Day Workweek | PRO |
| CP09-PR-FN-DY-1070 |  | Tensile Teflon Tent - Material Delivery | 28.12d | 2025-08-22 A | 2025-08-26 A | CP09-PR-FN-PO-1070 | 100% | 2025-08-24 | 2025-09-21 |  |  | 7-Day Workweek | PRO |
| CP09-PR-FN-DY-1010 |  | Crcular Cast-iron tree grate - Material Delivery | 28.12d | 2026-06-07 | 2026-07-05 | CP09-PR-FN-PO-1010 |  |  |  | -208.5d | 8.62d | 7-Day Workweek | PRO |
| CP09-PR-FN-DY-1020 |  | Aluminium Cabana for Pool Shading - Material Delivery | 28.12d | 2026-06-07 | 2026-07-05 | CP09-PR-FN-PO-1020 |  |  |  | -213.12d | 8.62d | 7-Day Workweek | PRO |
| CP09-PR-FN-DY-1080 |  | Lanscape Edging ( Rubber) - Material Delivery | 28.12d | 2026-06-07 | 2026-07-05 | CP09-PR-FN-PO-1080 |  |  |  | -208.5d | 8.62d | 7-Day Workweek | PRO |

| ID | WBS | Activity | Duration | Start | Finish | Predecessors | Complete | Planned start | Planned finish | CP09_Terrace-7 | CP09_Milestone-7 | CP09_Discipline-7 |
| --- | --- | --- | --- | --- | --- | --- | --- | --- | --- | --- | --- | --- |
|  | 2 | **Engineering** |  | 2023-03-05 | 2026-01-16 |  |  |  |  |  |  |  |
|  | 14 | **Terrace # 01** |  | 2023-03-05 | 2025-08-22 |  |  |  |  |  |  |  |
|  | 2 | **Shopdrwaings Submittal** |  | 2023-03-05 | 2025-08-22 |  |  |  |  |  |  |  |
|  | 2 | **Earth Work** |  | 2024-02-10 | 2024-05-20 |  |  |  |  |  |  |  |
| CP09-EN-TR1-S-1470 |  | Sub Garde shop drawing Submittal | 3d | 2024-02-10 A | 2024-05-20 A | CP09-CLD-1010 | 100% | 2024-02-10 | 2024-02-12 | TR01 | MS#01 | ENG |
|  | 3 | **Cheek & Retaning Wall** |  | 2024-05-18 | 2024-11-10 |  |  |  |  |  |  |  |
| CP09-EN-TR1-S-1480 |  | Cheek & Retaning Wall Concrete dimension shop drawing Submittal | 3d | 2024-05-18 A | 2024-11-10 A | CP09-CLD-1010 | 100% | 2024-02-10 | 2024-02-12 | TR01 | MS#01 | ENG |
| CP09-EN-TR1-S-1490 |  | Cheek & Retaning Wall Steel reinforcement shop drawing Submittal | 6.56d | 2024-05-18 A | 2024-11-10 A | CP09-EN-TR1-S-1480 | 100% | 2024-02-13 | 2024-02-20 | TR01 | MS#01 | ENG |
| CP09-EN-TR1-S-1500 |  | Cheek & Retaning Wall Water Proofing Works shop drawing Submittal | 6.56d | 2024-05-18 A | 2024-07-02 A | CP09-EN-TR1-S-1490 | 100% | 2024-02-20 | 2024-02-28 | TR01 | MS#01 | ENG |
| CP09-EN-TR1-S-1510 |  | Cheek & Retaning Wall Masonary Works shop drawing Submittal | 6.56d | 2024-05-18 A | 2024-07-02 A | CP09-EN-TR1-S-1500 | 100% | 2024-02-28 | 2024-03-06 | TR01 | MS#01 | ENG |
| CP09-EN-TR1-S-1520 |  | Cheek & Retaning Wall Marble Works shop drawing Submittal | 6.56d | 2024-05-18 A | 2024-07-02 A | CP09-EN-TR1-S-1510 | 100% | 2024-03-06 | 2024-03-16 | TR01 | MS#01 | ENG |
|  | 4 | **Hardscape Works** |  | 2023-03-05 | 2025-08-22 |  |  |  |  |  |  |  |
| CP09-EN-TR1-S-1600 |  | Curb Works Shop Drawing Submittal | 5d | 2023-03-05 A | 2024-04-29 A | CP09-EN-TR1-S-1470 | 100% | 2024-10-27 | 2024-10-31 | TR01 | MS#01 | ENG |
| CP09-EN-TR1-S-1610 |  | Interlocking Paving Works Shop Drawing Submittal | 6.56d | 2024-03-05 A | 2024-04-29 A | CP09-PR-HD-A-1090, CP09-PR-HD-A-1180 | 100% | 2024-03-05 | 2024-03-13 | TR01 | MS#01 | ENG |
| CP09-EN-TR1-S-1530 |  | Concrete Exposed Aggregate - Side Walks Shop Drawing Submittal | 6.56d | 2024-04-30 A | 2024-09-12 A | CP09-PR-HD-A-1000 | 100% | 2024-03-05 | 2024-03-13 | TR01 | MS#01 | ENG |
| CP09-EN-TR1-S-1540 |  | Marble Paving - Side Walks Works Shop Drawing Submittal | 6.56d | 2024-04-30 A | 2024-09-28 A | CP09-PR-HD-A-1010 | 100% | 2024-03-05 | 2024-03-13 | TR01 | MS#01 | ENG |
| CP09-EN-TR1-S-1560 |  | Gravel - Side Walks Works Shop Drawing Submittal | 6.56d | 2024-04-30 A | 2024-09-28 A | CP09-PR-HD-A-1030 | 100% | 2024-03-05 | 2024-03-13 | TR01 | MS#01 | ENG |
| CP09-EN-TR1-S-1570 |  | Crushed Stone - Side Walks Works Shop Drawing Submittal | 6.56d | 2024-04-30 A | 2024-09-28 A | CP09-PR-HD-A-1040 | 100% | 2024-03-05 | 2024-03-13 | TR01 | MS#01 | ENG |
| CP09-EN-TR1-S-1580 |  | Loose Gravel - Side Walks Works Shop Drawing Submittal | 6.56d | 2024-04-30 A | 2024-09-28 A | CP09-PR-HD-A-1050 | 100% | 2024-03-05 | 2024-03-13 | TR01 | MS#01 | ENG |
| CP09-EN-TR1-S-1590 |  | Clean sand layer - Side Walks Works Shop Drawing Submittal | 7d | 2024-04-30 A | 2024-09-28 A | CP09-PR-HD-A-1060, CP09-PR-HD-A-1070 | 100% | 2024-03-05 | 2024-03-13 | TR01 | MS#01 | ENG |
| CP09-EN-TR1-S-1620 |  | Steps Works shop Shop Drawing Submittal | 6.56d | 2024-05-12 A | 2024-10-02 A | CP09-PR-HD-A-1100 | 100% | 2024-03-14 | 2024-03-24 | TR01 | MS#01 | ENG |
| CP09-EN-TR1-S-1630 |  | Seats Works Shop Shop Drawing Submittal | 6.56d | 2024-05-18 A | 2024-07-02 A | CP09-PR-HD-A-1110 | 100% | 2024-03-14 | 2024-03-24 | TR01 | MS#01 | ENG |
| CP09-EN-TR1-S-1660 |  | Landscape Furntiure Shop Drawing Submittal | 6.56d | 2024-08-11 A | 2025-08-22 A | CP09-PR-FN-A-1000, CP09-PR-FN-A-1010, CP09-PR-FN-A-1020, CP09-PR-FN-A-1030, CP09-PR-FN-A-1040, CP09-PR-FN-A-1050, CP09-PR-FN-A-1060, CP09-PR-FN-A-1070, CP09-PR-FN-A-1080 | 100% | 2024-10-03 | 2024-10-12 | TR01 | MS#01 | ENG |
| CP09-EN-TR1-S-1640 |  | Pool Shower Works Shop Drawing Submittal | 6.56d | 2025-08-18 A | 2025-08-22 A | CP09-PR-HD-A-1120, CP09-PR-HD-A-1130, CP09-PR-HD-A-1140, CP09-PR-HD-A-1150 | 100% | 2025-08-24 | 2025-08-31 | TR01 | MS#01 | ENG |
| CP09-EN-TR1-S-1650 |  | Handrails Works Shop Drawing Submittal | 6.56d | 2025-08-18 A | 2025-08-22 A | CP09-PR-HD-A-1160, CP09-PR-HD-A-1170 | 100% | 2025-08-24 | 2025-08-31 | TR01 | MS#01 | ENG |

| ID | WBS | Activity | Duration | Start | Finish | Predecessors | Complete | Planned start | Planned finish | CP09_Terrace-7 | CP09_Milestone-7 | CP09_Discipline-7 | DES |
| --- | --- | --- | --- | --- | --- | --- | --- | --- | --- | --- | --- | --- | --- |
|  | 5 | **Electrical Works** |  | 2024-08-24 | 2024-09-18 |  |  |  |  |  |  |  |  |
| CP09-EN-TR1-S-1670 |  | Power Cables Shop Drawing Submittal | 6.56d | 2024-08-24 A | 2024-09-18 A | CP09-PR-EL-A-1060 | 100% | 2024-10-27 | 2024-11-03 | TR01 | MS#01 | ENG |  |
| CP09-EN-TR1-S-1680 |  | Connecting Pillars Shop Drawing Submittal | 6.56d | 2024-08-24 A | 2024-09-18 A | CP09-PR-EL-A-1070 | 100% | 2024-11-20 | 2024-11-27 | TR01 | MS#01 | ENG |  |
|  | 6 | **Sinage** |  | 2024-07-29 | 2025-07-10 |  |  |  |  |  |  |  |  |
| CP09-EN-TR1-S-1690 |  | Sinage Shop Drawing Submittal | 5d | 2024-07-29 A | 2025-07-10 A | CP09-PR-SN-S-1010, CP09-PR-SN-A-1000 FF, CP09-PR-SN-A-1010 FF, CP09-PR-SN-A-1020 FF, CP09-PR-SN-A-1030 FF, CP09-PR-SN-A-1040 FF | 100% | 2024-09-14 | 2024-09-19 | TR01 | MS#01 | ENG |  |
|  | 7 | **Play Field Equipment** |  | 2024-07-07 | 2025-08-22 |  |  |  |  |  |  |  |  |
| CP09-EN-TR1-S-1700 |  | Play Field Equipment Shop Drawing Submittal | 6.56d | 2024-07-07 A | 2025-08-22 A | CP09-PR-PE-A-1000, CP09-PR-PE-A-1010, CP09-PR-PE-A-1020, CP09-PR-PE-A-1030, CP09-PR-PE-A-1040, CP09-PR-PE-A-1050, CP09-PR-PE-A-1060, CP09-PR-PE-A-1070, CP09-PR-PE-A-1080, CP09-PR-PE-A-1090, CP09-PR-PE-A-1100 | 100% | 2024-09-30 | 2024-10-08 | TR01 | MS#01 | ENG | SO |
|  | 8 | **Irrigation Networks** |  | 2024-02-17 | 2024-02-22 |  |  |  |  |  |  |  |  |
| CP09-EN-TR1-S-1710 |  | Irrigation Networks Layout Shop Drawing Submittal | 5d | 2024-02-17 A | 2024-02-22 A | CP09-PR-IR-A-1000, CP09-PR-IR-A-1010, CP09-PR-IR-A-1020, CP09-PR-IR-A-1030, CP09-PR-IR-A-1040, CP09-PR-IR-A-1050, CP09-PR-IR-A-1060, CP09-PR-IR-A-1070, CP09-PR-IR-A-1080 | 100% | 2024-02-26 | 2024-03-02 | TR01 | MS#01 | ENG |  |
|  | 9 | **Planting** |  | 2024-02-10 | 2024-09-29 |  |  |  |  |  |  |  |  |
| CP09-EN-TR1-S-1720 |  | Plantings Shop Drawing Submittal | 5d | 2024-02-10 A | 2024-09-29 A | CP09-PR-PN-A-1000, CP09-PR-PN-A-1010, CP09-PR-PN-A-1020, CP09-PR-PN-A-1030, CP09-PR-PN-A-1040, CP09-PR-PN-A-1050, CP09-PR-PN-A-1060, CP09-PR-PN-A-1070, CP09-PR-PN-A-1080 | 100% | 2024-04-03 | 2024-04-20 | TR01 | MS#01 | ENG |  |
|  | 10 | **Lighting** |  | 2024-06-29 | 2024-08-07 |  |  |  |  |  |  |  |  |
| CP09-EN-TR1-S-1730 |  | Exterior Lighting for Softlandscape Shop Drawing Submittal | 6.56d | 2024-06-29 A | 2024-08-07 A | CP09-PR-EL-A-1080, CP09-PR-EL-A-1090, CP09-PR-EL-A-1100, CP09-PR-EL-A-1110, CP09-PR-EL-A-1120, CP09-PR-EL-A-1130 | 100% | 2024-08-27 | 2024-09-03 | TR01 | MS#01 | ENG |  |
|  | 1 | **Shopdrwaings Approval** |  | 2024-02-13 | 2025-08-22 |  |  |  |  |  |  |  |  |
|  | 2 | **Earth Work** |  | 2024-02-13 | 2024-06-03 |  |  |  |  |  |  |  |  |
| CP09-EN-TR1-A-1470 |  | Sub Garde Shopdrwaings-Shop Drawing Approval | 7d | 2024-02-13 A | 2024-06-03 A | CP09-EN-TR1-S-1470 FF+3d, CP09-EN-TR1-S-1470 SS+3d | 100% | 2024-02-13 | 2024-02-20 | TR01 | MS#01 | ENG |  |
|  | 3 | **Cheek & Retaning Wall** |  | 2024-07-02 | 2024-11-19 |  |  |  |  |  |  |  |  |
| CP09-EN-TR1-A-1500 |  | Cheek & Retaning Wall Water Proofing Works-Shop Drawing Approval | 14d | 2024-07-02 A | 2024-08-05 A | CP09-EN-TR1-S-1500 FF+7d, CP09-EN-TR1-S-1500 SS+7d | 100% | 2024-11-03 | 2024-11-18 | TR01 | MS#01 | ENG |  |
| CP09-EN-TR1-A-1510 |  | Cheek & Retaning Wall Masonary Works-Shop Drawing Approval | 14d | 2024-07-02 A | 2024-08-05 A | CP09-EN-TR1-S-1510 FF+7d, CP09-EN-TR1-S-1510 SS+7d | 100% | 2024-11-07 | 2024-11-23 | TR01 | MS#01 | ENG |  |
| CP09-EN-TR1-A-1520 |  | Cheek & Retaning Wall Marble Works-Shop Drawing Approval | 14d | 2024-07-02 A | 2024-08-05 A | CP09-EN-TR1-S-1520 FF+7d, CP09-EN-TR1-S-1520 SS+7d | 100% | 2024-11-12 | 2024-11-27 | TR01 | MS#01 | ENG |  |
| CP09-EN-TR1-A-1480 |  | Cheek & Retaning Wall Concrete dimension-ShopDrawing Approval | 14d | 2024-11-10 A | 2024-11-19 A | CP09-EN-TR1-S-1480 FF+7d, CP09-EN-TR1-S-1480 SS+7d | 100% | 2024-12-01 | 2024-12-16 | TR01 | MS#01 | ENG |  |
| CP09-EN-TR1-A-1490 |  | Cheek & Retaning Wall Steel reinforcement-Shop Drawing Approval | 14d | 2024-11-10 A | 2024-11-19 A | CP09-EN-TR1-S-1490 FF+7d, CP09-EN-TR1-S-1490 SS+7d | 100% | 2024-12-03 | 2024-12-18 | TR01 | MS#01 | ENG |  |
|  | 4 | **Hardscape Works** |  | 2024-03-14 | 2025-08-22 |  |  |  |  |  |  |  |  |
| CP09-EN-TR1-A-1600 |  | Curb Works-Shop Drawing Approval | 7d | 2024-03-14 A | 2024-05-13 A | CP09-EN-TR1-S-1600 FF+7d, CP09-EN-TR1-S-1600 SS+7d | 100% | 2024-11-04 | 2024-11-11 | TR01 | MS#01 | ENG |  |
| CP09-EN-TR1-A-1610 |  | Interlocking Paving Works-Shop Drawing Approval | 14d | 2024-03-14 A | 2024-05-13 A | CP09-EN-TR1-S-1610 FF+7d, CP09-EN-TR1-S-1610 SS+7d | 100% | 2024-03-14 | 2024-04-04 | TR01 | MS#01 | ENG |  |
| CP09-EN-TR1-A-1630 |  | Seats Works-Shop Drawing Approval | 14d | 2024-07-02 A | 2024-08-05 A | CP09-EN-TR1-S-1630 FF+7d, CP09-EN-TR1-S-1630 SS+7d | 100% | 2024-11-04 | 2024-11-19 | TR01 | MS#01 | ENG |  |
| CP09-EN-TR1-A-1530 |  | Concrete Exposed Aggregate - Side Walks-Shop Drawing Approval | 14d | 2024-09-12 A | 2024-09-19 A | CP09-EN-TR1-S-1530 FF+7d, CP09-EN-TR1-S-1530 SS+7d | 100% | 2024-11-20 | 2024-12-05 | TR01 | MS#01 | ENG |  |
| CP09-EN-TR1-A-1590 |  | Clean sand layer - Side Walks Works-Shop Drawing Approval | 14d | 2024-09-28 A | 2024-10-02 A | CP09-EN-TR1-S-1590 FF+7d, CP09-EN-TR1-S-1590 SS+7d | 100% | 2024-11-20 | 2024-12-05 | TR01 | MS#01 | ENG |  |
| CP09-EN-TR1-A-1540 |  | Marble Paving - Side Walks Works-Shop Drawing Approval | 5d | 2024-09-28 A | 2024-10-02 A | CP09-EN-TR1-S-1540 FF+7d, CP09-EN-TR1-S-1540 SS+7d | 100% |  |  | TR01 | MS#01 | ENG |  |
| CP09-EN-TR1-A-1560 |  | Gravel - Side Walks Works-Shop Drawing Approval | 5d | 2024-09-28 A | 2024-10-02 A | CP09-EN-TR1-S-1560 FF+7d, CP09-EN-TR1-S-1560 SS+7d | 100% |  |  | TR01 | MS#01 | ENG |  |
| CP09-EN-TR1-A-1570 |  | Crushed Stone - Side Walks Works-Shop Drawing Approval | 5d | 2024-09-28 A | 2024-10-02 A | CP09-EN-TR1-S-1570 FF+7d, CP09-EN-TR1-S-1570 SS+7d | 100% |  |  | TR01 | MS#01 | ENG |  |
| CP09-EN-TR1-A-1580 |  | Loose Gravel - Side Walks Works-Shop Drawing Approval | 5d | 2024-09-28 A | 2024-10-02 A | CP09-EN-TR1-S-1580 FF+7d, CP09-EN-TR1-S-1580 SS+7d | 100% |  |  | TR01 | MS#01 | ENG |  |
| CP09-EN-TR1-A-1620 |  | Steps Works-Shop Drawing Approval | 14d | 2024-10-02 A | 2024-10-09 A | CP09-EN-TR1-S-1620 FF+7d, CP09-EN-TR1-S-1620 SS+7d | 100% | 2024-11-04 | 2024-11-19 | TR01 | MS#01 | ENG |  |
| CP09-EN-TR1-A-1640 |  | Pool Shower Works-Shop Drawing Approval | 14d | 2025-08-18 A | 2025-08-22 A | CP09-EN-TR1-S-1640 FF+7d, CP09-EN-TR1-S-1640 SS+7d | 100% | 2025-09-01 | 2025-09-17 | TR01 | MS#01 | ENG |  |
| CP09-EN-TR1-A-1650 |  | Handrails Works-Shop Drawing Approval | 14d | 2025-08-18 A | 2025-08-22 A | CP09-EN-TR1-S-1650 FF+7d, CP09-EN-TR1-S-1650 SS+7d | 100% | 2025-09-01 | 2025-09-17 | TR01 | MS#01 | ENG |  |
| CP09-EN-TR1-A-1660 |  | Landscape Furntiure-Shop Drawing Approval | 14d | 2025-08-18 A | 2025-08-22 A | CP09-EN-TR1-S-1660 FF+7d, CP09-EN-TR1-S-1660 SS+7d | 100% | 2025-08-24 | 2025-09-09 | TR01 | MS#01 | ENG |  |

| ID | WBS | Activity | Duration | Start | Finish | Predecessors | Complete | Planned start | Planned finish | CP09_Terrace-7 | CP09_Milestone-7 | CP09_Discipline-7 | DES |
| --- | --- | --- | --- | --- | --- | --- | --- | --- | --- | --- | --- | --- | --- |
|  | 5 | **Electrical Works** |  | 2024-09-18 | 2024-09-22 |  |  |  |  |  |  |  |  |
| CP09-EN-TR1-A-1670 |  | Power Cables-Shop Drawing Approval | 14d | 2024-09-18 A | 2024-09-22 A | CP09-EN-TR1-S-1670 FF+7d, CP09-EN-TR1-S-1670 SS+7d | 100% | 2024-11-04 | 2024-11-19 | TR01 | MS#01 | ENG |  |
| CP09-EN-TR1-A-1680 |  | Connecting Pillars-Shop Drawing Approval | 14d | 2024-09-18 A | 2024-09-22 A | CP09-EN-TR1-S-1680 FF+7d, CP09-EN-TR1-S-1680 SS+7d | 100% | 2024-11-28 | 2024-12-14 | TR01 | MS#01 | ENG |  |
|  | 6 | **Sinage** |  | 2025-07-06 | 2025-07-10 |  |  |  |  |  |  |  |  |
| CP09-EN-TR1-A-1690 |  | Sinage-Shop Drawing Approval | 7d | 2025-07-06 A | 2025-07-10 A | CP09-EN-TR1-S-1690 FF+7d, CP09-EN-TR1-S-1690 SS+7d | 100% | 2025-07-17 | 2025-07-26 | TR01 | MS#01 | ENG |  |
|  | 7 | **Play Field Equipment** |  | 2025-08-18 | 2025-08-22 |  |  |  |  |  |  |  |  |
| CP09-EN-TR1-A-1700 |  | Play Field Equipment-Shop Drawing Approval | 14d | 2025-08-18 A | 2025-08-22 A | CP09-EN-TR1-S-1700 FF+7d, CP09-EN-TR1-S-1700 SS+7d | 100% | 2025-08-24 | 2025-09-09 | TR01 | MS#01 | ENG | SO |
|  | 8 | **Irrigation Networks** |  | 2024-06-14 | 2024-06-29 |  |  |  |  |  |  |  |  |
| CP09-EN-TR1-A-1710 |  | Irrigation Networks Layout -Shop Drawing Approval | 7d | 2024-06-14 A | 2024-06-29 A | CP09-EN-TR1-S-1710 FF+7d, CP09-EN-TR1-S-1710 SS+7d | 100% | 2024-09-05 | 2024-09-12 | TR01 | MS#01 | ENG |  |
|  | 9 | **Planting** |  | 2024-09-29 | 2024-10-02 |  |  |  |  |  |  |  |  |
| CP09-EN-TR1-A-1720 |  | Plantings -Shop Drawing Approval | 10d | 2024-09-29 A | 2024-10-02 A | CP09-EN-TR1-S-1720 FF+7d, CP09-EN-TR1-S-1720 SS+7d | 100% | 2024-11-28 | 2024-12-09 | TR01 | MS#01 | ENG |  |
|  | 10 | **Lighting** |  | 2024-08-07 | 2024-08-14 |  |  |  |  |  |  |  |  |
| CP09-EN-TR1-A-1730 |  | Exterior Lighting for Softlandscape-Shop Drawing Approval | 14d | 2024-08-07 A | 2024-08-14 A | CP09-EN-TR1-S-1730 FF+7d, CP09-EN-TR1-S-1730 SS+7d | 100% | 2024-11-12 | 2024-11-27 | TR01 | MS#01 | ENG |  |
|  | 16 | **Terrace # 02** |  | 2024-02-17 | 2025-08-22 |  |  |  |  |  |  |  |  |
|  | 2 | **Shopdrwaings Submittal** |  | 2024-02-17 | 2025-08-22 |  |  |  |  |  |  |  |  |
|  | 2 | **Earth Work** |  | 2024-03-16 | 2025-07-10 |  |  |  |  |  |  |  |  |
| CP09-EN-TR2-S-1740 |  | Sub Garde shop drawing Submittal | 3d | 2024-03-16 A | 2025-07-10 A | CP09-CLD-1010 | 100% | 2024-02-10 | 2024-02-12 | TR02 | MS#01 | ENG |  |
|  | 3 | **Cheek & Retaning Wall** |  | 2024-09-17 | 2024-11-10 |  |  |  |  |  |  |  |  |
| CP09-EN-TR2-S-1770 |  | Cheek & Retaning Wall Water Proofing Works shop drawing Submittal | 6.56d | 2024-09-17 A | 2024-09-23 A | CP09-EN-TR2-S-1760 | 100% | 2024-12-11 | 2024-12-19 | TR02 | MS#01 | ENG |  |
| CP09-EN-TR2-S-1780 |  | Cheek & Retaning Wall Masonary Works shop drawing Submittal | 6.56d | 2024-09-17 A | 2024-09-23 A | CP09-EN-TR2-S-1770 | 100% | 2024-12-19 | 2024-12-26 | TR02 | MS#01 | ENG |  |
| CP09-EN-TR2-S-1790 |  | Cheek & Retaning Wall Marble Works shop drawing Submittal | 6.56d | 2024-09-17 A | 2024-09-23 A | CP09-EN-TR2-S-1780 | 100% | 2024-12-26 | 2025-01-04 | TR02 | MS#01 | ENG |  |
| CP09-EN-TR2-S-1750 |  | Cheek & Retaning Wall Concrete dimension shop drawing Submittal | 3d | 2024-11-03 A | 2024-11-10 A | CP09-CLD-1010 | 100% | 2024-12-01 | 2024-12-03 | TR02 | MS#01 | ENG |  |
| CP09-EN-TR2-S-1760 |  | Cheek & Retaning Wall Steel reinforcement shop drawing Submittal | 6.56d | 2024-11-03 A | 2024-11-10 A | CP09-EN-TR2-S-1750 | 100% | 2024-12-04 | 2024-12-11 | TR02 | MS#01 | ENG |  |
|  | 4 | **Hardscape Works** |  | 2024-03-05 | 2025-08-22 |  |  |  |  |  |  |  |  |
| CP09-EN-TR2-S-1870 |  | Curb Works Shop Drawing Submittal | 5d | 2024-03-05 A | 2024-05-13 A | CP09-EN-TR2-S-1740 | 100% | 2024-10-29 | 2024-11-03 | TR02 | MS#01 | ENG |  |
| CP09-EN-TR2-S-1880 |  | Interlocking Paving Works Shop Drawing Submittal | 6.56d | 2024-03-05 A | 2024-05-13 A | CP09-PR-HD-A-1090, CP09-PR-HD-A-1180 | 100% | 2024-03-05 | 2024-03-13 | TR02 | MS#01 | ENG |  |
| CP09-EN-TR2-S-1800 |  | Concrete Exposed Aggregate - Side Walks Shop Drawing Submittal | 6.56d | 2024-05-26 A | 2024-09-21 A | CP09-PR-HD-A-1000 | 100% | 2024-03-05 | 2024-03-13 | TR02 | MS#01 | ENG |  |
| CP09-EN-TR2-S-1810 |  | q | 6.56d | 2024-05-26 A | 2024-09-26 A | CP09-PR-HD-A-1010 | 100% | 2024-03-05 | 2024-03-13 | TR02 | MS#01 | ENG |  |
| CP09-EN-TR2-S-1830 |  | Gravel - Side Walks Works Shop Drawing Submittal | 6.56d | 2024-05-26 A | 2024-09-26 A | CP09-PR-HD-A-1030 | 100% | 2024-03-05 | 2024-03-13 | TR02 | MS#01 | ENG |  |
| CP09-EN-TR2-S-1840 |  | Crushed Stone - Side Walks Works Shop Drawing Submittal | 6.56d | 2024-05-26 A | 2024-09-26 A | CP09-PR-HD-A-1040 | 100% | 2024-03-05 | 2024-03-13 | TR02 | MS#01 | ENG |  |
| CP09-EN-TR2-S-1850 |  | Loose Gravel - Side Walks Works Shop Drawing Submittal | 6.56d | 2024-05-26 A | 2024-09-26 A | CP09-PR-HD-A-1050 | 100% | 2024-03-05 | 2024-03-13 | TR02 | MS#01 | ENG |  |
| CP09-EN-TR2-S-1860 |  | Clean sand layer - Side Walks Works Shop Drawing Submittal | 7d | 2024-05-26 A | 2024-09-26 A | CP09-PR-HD-A-1060, CP09-PR-HD-A-1070 | 100% | 2024-03-05 | 2024-03-13 | TR02 | MS#01 | ENG |  |
| CP09-EN-TR2-S-1890 |  | Steps Works shop Shop Drawing Submittal | 6.56d | 2024-06-19 A | 2024-06-26 A | CP09-PR-HD-A-1100 | 100% | 2024-12-09 | 2024-12-16 | TR02 | MS#01 | ENG |  |
| CP09-EN-TR2-S-1900 |  | Seats Works Shop Shop Drawing Submittal | 6.56d | 2024-09-17 A | 2024-09-23 A | CP09-PR-HD-A-1110 | 100% | 2024-12-09 | 2024-12-16 | TR02 | MS#01 | ENG |  |
| CP09-EN-TR2-S-1910 |  | Pool Shower Works Shop Drawing Submittal | 6.56d | 2025-08-18 A | 2025-08-22 A | CP09-PR-HD-A-1120, CP09-PR-HD-A-1130, CP09-PR-HD-A-1140, CP09-PR-HD-A-1150 | 100% | 2025-08-24 | 2025-08-31 | TR02 | MS#01 | ENG |  |
| CP09-EN-TR2-S-1920 |  | Handrails Works Shop Drawing Submittal | 6.56d | 2025-08-18 A | 2025-08-22 A | CP09-PR-HD-A-1160, CP09-PR-HD-A-1170 | 100% | 2025-08-24 | 2025-08-31 | TR02 | MS#01 | ENG |  |
| CP09-EN-TR2-S-1930 |  | Landscape Furntiure Shop Drawing Submittal | 6.56d | 2025-08-18 A | 2025-08-22 A | CP09-PR-FN-A-1000, CP09-PR-FN-A-1010, CP09-PR-FN-A-1020, CP09-PR-FN-A-1030, CP09-PR-FN-A-1040, CP09-PR-FN-A-1050, CP09-PR-FN-A-1060, CP09-PR-FN-A-1070, CP09-PR-FN-A-1080 | 100% | 2024-10-03 | 2024-10-12 | TR02 | MS#01 | ENG |  |

| ID | WBS | Activity | Duration | Start | Finish | Predecessors | Complete | Planned start | Planned finish | CP09_Terrace-7 | CP09_Milestone-7 | CP09_Discipline-7 | DES |
| --- | --- | --- | --- | --- | --- | --- | --- | --- | --- | --- | --- | --- | --- |
|  | 5 | **Electrical Works** |  | 2024-10-02 | 2025-05-22 |  |  |  |  |  |  |  |  |
| CP09-EN-TR2-S-1940 |  | Power Cables Shop Drawing Submittal | 6.56d | 2024-10-02 A | 2025-05-22 A | CP09-PR-EL-A-1060 | 100% | 2024-10-27 | 2024-11-03 | TR02 | MS#01 | ENG |  |
| CP09-EN-TR2-S-1950 |  | Connecting Pillars Shop Drawing Submittal | 6.56d | 2024-10-02 A | 2025-05-22 A | CP09-PR-EL-A-1070 | 100% | 2024-11-20 | 2024-11-27 | TR02 | MS#01 | ENG |  |
|  | 6 | **Sinage** |  | 2025-07-06 | 2025-07-10 |  |  |  |  |  |  |  |  |
| CP09-EN-TR2-S-1960 |  | Sinage Shop Drawing Submittal | 5d | 2025-07-06 A | 2025-07-10 A | CP09-PR-SN-A-1000 FF, CP09-PR-SN-A-1010 FF, CP09-PR-SN-A-1020 FF, CP09-PR-SN-A-1030 FF, CP09-PR-SN-A-1040 FF, CP09-PR-SN-S-1010 | 100% | 2024-09-25 | 2024-09-30 | TR02 | MS#01 | ENG |  |
|  | 7 | **Play Field Equipment** |  | 2025-08-18 | 2025-08-22 |  |  |  |  |  |  |  |  |
| CP09-EN-TR2-S-1970 |  | Play Field Equipment Shop Drawing Submittal | 6.56d | 2025-08-18 A | 2025-08-22 A | CP09-PR-PE-A-1000, CP09-PR-PE-A-1010, CP09-PR-PE-A-1020, CP09-PR-PE-A-1030, CP09-PR-PE-A-1040, CP09-PR-PE-A-1050, CP09-PR-PE-A-1060, CP09-PR-PE-A-1070, CP09-PR-PE-A-1080, CP09-PR-PE-A-1090, CP09-PR-PE-A-1100 | 100% | 2024-09-30 | 2024-10-08 | TR02 | MS#01 | ENG | SO |
|  | 8 | **Irrigation Networks** |  | 2024-04-24 | 2024-08-19 |  |  |  |  |  |  |  |  |
| CP09-EN-TR2-S-1980 |  | Irrigation Networks Layout Shop Drawing Submittal | 5d | 2024-04-24 A | 2024-08-19 A | CP09-PR-IR-A-1000, CP09-PR-IR-A-1010, CP09-PR-IR-A-1020, CP09-PR-IR-A-1030, CP09-PR-IR-A-1040, CP09-PR-IR-A-1050, CP09-PR-IR-A-1060, CP09-PR-IR-A-1070, CP09-PR-IR-A-1080 | 100% | 2024-02-26 | 2024-03-02 | TR02 | MS#01 | ENG |  |
|  | 9 | **Planting** |  | 2024-02-17 | 2024-10-01 |  |  |  |  |  |  |  |  |
| CP09-EN-TR2-S-1990 |  | Plantings Shop Drawing Submittal | 5d | 2024-02-17 A | 2024-10-01 A | CP09-PR-PN-A-1000, CP09-PR-PN-A-1010, CP09-PR-PN-A-1020, CP09-PR-PN-A-1030, CP09-PR-PN-A-1040, CP09-PR-PN-A-1050, CP09-PR-PN-A-1060, CP09-PR-PN-A-1070, CP09-PR-PN-A-1080 | 100% | 2024-04-03 | 2024-04-20 | TR02 | MS#01 | ENG |  |
|  | 10 | **Lighting** |  | 2024-08-10 | 2024-08-10 |  |  |  |  |  |  |  |  |
| CP09-EN-TR2-S-2000 |  | Exterior Lighting for Softlandscape Shop Drawing Submittal | 6.56d | 2024-08-10 A | 2024-08-10 A | CP09-PR-EL-A-1080, CP09-PR-EL-A-1090, CP09-PR-EL-A-1100, CP09-PR-EL-A-1110, CP09-PR-EL-A-1120, CP09-PR-EL-A-1130 | 100% | 2024-08-27 | 2024-09-03 | TR02 | MS#01 | ENG |  |
|  | 1 | **Shopdrwaings Approval** |  | 2024-03-14 | 2025-08-22 |  |  |  |  |  |  |  |  |
|  | 2 | **Earth Work** |  | 2025-07-06 | 2025-07-10 |  |  |  |  |  |  |  |  |
| CP09-EN-TR2-A-1740 |  | Sub Garde Shopdrwaings-Shop Drawing Approval | 7d | 2025-07-06 A | 2025-07-10 A | CP09-EN-TR2-S-1740 SS+3d, CP09-EN-TR2-S-1740 FF+3d | 100% | 2025-07-12 | 2025-07-19 | TR02 | MS#01 | ENG |  |
|  | 3 | **Cheek & Retaning Wall** |  | 2024-10-27 | 2024-11-27 |  |  |  |  |  |  |  |  |
| CP09-EN-TR2-A-1770 |  | Cheek & Retaning Wall Water Proofing Works-Shop Drawing Approval | 14d | 2024-10-27 A | 2024-11-03 A | CP09-EN-TR2-S-1770 SS+7d, CP09-EN-TR2-S-1770 FF+7d | 100% | 2024-12-19 | 2025-01-05 | TR02 | MS#01 | ENG |  |
| CP09-EN-TR2-A-1780 |  | Cheek & Retaning Wall Masonary Works-Shop Drawing Approval | 14d | 2024-10-27 A | 2024-11-03 A | CP09-EN-TR2-S-1780 SS+7d, CP09-EN-TR2-S-1780 FF+7d | 100% | 2024-12-28 | 2025-01-14 | TR02 | MS#01 | ENG |  |
| CP09-EN-TR2-A-1790 |  | Cheek & Retaning Wall Marble Works-Shop Drawing Approval | 14d | 2024-10-27 A | 2024-11-03 A | CP09-EN-TR2-S-1790 SS+7d, CP09-EN-TR2-S-1790 FF+7d | 100% | 2025-01-04 | 2025-01-21 | TR02 | MS#01 | ENG |  |
| CP09-EN-TR2-A-1750 |  | Cheek & Retaning Wall Concrete dimension-ShopDrawing Approval | 14d | 2024-11-10 A | 2024-11-27 A | CP09-EN-TR2-S-1750 SS+7d, CP09-EN-TR2-S-1750 FF+7d | 100% | 2024-12-09 | 2024-12-24 | TR02 | MS#01 | ENG |  |
| CP09-EN-TR2-A-1760 |  | Cheek & Retaning Wall Steel reinforcement-Shop Drawing Approval | 14d | 2024-11-10 A | 2024-11-27 A | CP09-EN-TR2-S-1760 SS+7d, CP09-EN-TR2-S-1760 FF+7d | 100% | 2024-12-12 | 2024-12-28 | TR02 | MS#01 | ENG |  |
|  | 4 | **Hardscape Works** |  | 2024-03-14 | 2025-08-22 |  |  |  |  |  |  |  |  |
| CP09-EN-TR2-A-1870 |  | Curb Works-Shop Drawing Approval | 7d | 2024-03-14 A | 2024-05-14 A | CP09-EN-TR2-S-1870 SS+7d, CP09-EN-TR2-S-1870 FF+7d | 100% | 2024-11-06 | 2024-11-13 | TR02 | MS#01 | ENG |  |
| CP09-EN-TR2-A-1880 |  | Interlocking Paving Works-Shop Drawing Approval | 14d | 2024-03-14 A | 2024-05-14 A | CP09-EN-TR2-S-1880 SS+7d, CP09-EN-TR2-S-1880 FF+7d | 100% | 2024-03-14 | 2024-04-04 | TR02 | MS#01 | ENG |  |
| CP09-EN-TR2-A-1890 |  | Steps Works-Shop Drawing Approval | 14d | 2024-06-26 A | 2024-09-16 A | CP09-EN-TR2-S-1890 SS+7d, CP09-EN-TR2-S-1890 FF+7d | 100% | 2024-12-17 | 2025-01-01 | TR02 | MS#01 | ENG |  |
| CP09-EN-TR2-A-1800 |  | Concrete Exposed Aggregate - Side Walks-Shop Drawing Approval | 14d | 2024-09-21 A | 2024-10-01 A | CP09-EN-TR2-S-1800 SS+7d, CP09-EN-TR2-S-1800 FF+7d | 100% | 2024-11-20 | 2024-12-05 | TR02 | MS#01 | ENG |  |
| CP09-EN-TR2-A-1810 |  | Marble Paving - Side Walks Works-Shop Drawing Approval | 14d | 2024-09-26 A | 2024-10-06 A | CP09-EN-TR2-S-1810 SS+7d, CP09-EN-TR2-S-1810 FF+7d | 100% | 2024-10-27 | 2024-11-11 | TR02 | MS#01 | ENG |  |
| CP09-EN-TR2-A-1830 |  | Gravel - Side Walks Works-Shop Drawing Approval | 14d | 2024-09-26 A | 2024-10-06 A | CP09-EN-TR2-S-1830 SS+7d, CP09-EN-TR2-S-1830 FF+7d | 100% | 2024-11-20 | 2024-12-05 | TR02 | MS#01 | ENG |  |
| CP09-EN-TR2-A-1840 |  | Crushed Stone - Side Walks Works-Shop Drawing Approval | 14d | 2024-09-26 A | 2024-10-06 A | CP09-EN-TR2-S-1840 SS+7d, CP09-EN-TR2-S-1840 FF+7d | 100% | 2024-11-20 | 2024-12-05 | TR02 | MS#01 | ENG |  |
| CP09-EN-TR2-A-1850 |  | Loose Gravel - Side Walks Works-Shop Drawing Approval | 14d | 2024-09-26 A | 2024-10-06 A | CP09-EN-TR2-S-1850 SS+7d, CP09-EN-TR2-S-1850 FF+7d | 100% | 2024-11-20 | 2024-12-05 | TR02 | MS#01 | ENG |  |
| CP09-EN-TR2-A-1860 |  | Clean sand layer - Side Walks Works-Shop Drawing Approval | 14d | 2024-09-26 A | 2024-10-06 A | CP09-EN-TR2-S-1860 SS+7d, CP09-EN-TR2-S-1860 FF+7d | 100% | 2024-11-20 | 2024-12-05 | TR02 | MS#01 | ENG |  |
| CP09-EN-TR2-A-1900 |  | Seats Works-Shop Drawing Approval | 14d | 2024-10-27 A | 2024-11-03 A | CP09-EN-TR2-S-1900 SS+7d, CP09-EN-TR2-S-1900 FF+7d | 100% | 2024-12-17 | 2025-01-01 | TR02 | MS#01 | ENG |  |
| CP09-EN-TR2-A-1910 |  | Pool Shower Works-Shop Drawing Approval | 14d | 2025-08-18 A | 2025-08-22 A | CP09-EN-TR2-S-1910 SS+7d, CP09-EN-TR2-S-1910 FF+7d | 100% | 2025-09-01 | 2025-09-17 | TR02 | MS#01 | ENG |  |
| CP09-EN-TR2-A-1920 |  | Handrails Works-Shop Drawing Approval | 14d | 2025-08-18 A | 2025-08-22 A | CP09-EN-TR2-S-1920 SS+7d, CP09-EN-TR2-S-1920 FF+7d | 100% | 2025-09-01 | 2025-09-17 | TR02 | MS#01 | ENG |  |
| CP09-EN-TR2-A-1930 |  | Landscape Furntiure-Shop Drawing Approval | 14d | 2025-08-18 A | 2025-08-22 A | CP09-EN-TR2-S-1930 SS+7d, CP09-EN-TR2-S-1930 FF+7d | 100% | 2025-08-24 | 2025-09-09 | TR02 | MS#01 | ENG |  |

| ID | WBS | Activity | Duration | Start | Finish | Predecessors | Complete | Planned start | Planned finish | CP09_Terrace-7 | CP09_Milestone-7 | CP09_Discipline-7 | DES |
| --- | --- | --- | --- | --- | --- | --- | --- | --- | --- | --- | --- | --- | --- |
|  | 5 | **Electrical Works** |  | 2025-07-06 | 2025-08-22 |  |  |  |  |  |  |  |  |
| CP09-EN-TR2-A-1940 |  | Power Cables-Shop Drawing Approval | 14d | 2025-07-06 A | 2025-07-10 A | CP09-EN-TR2-S-1940 SS+7d, CP09-EN-TR2-S-1940 FF+7d | 100% | 2025-07-12 | 2025-07-28 | TR02 | MS#01 | ENG |  |
| CP09-EN-TR2-A-1950 |  | Connecting Pillars-Shop Drawing Approval | 14d | 2025-08-18 A | 2025-08-22 A | CP09-EN-TR2-S-1950 SS+7d, CP09-EN-TR2-S-1950 FF+7d | 100% | 2025-08-24 | 2025-09-09 | TR02 | MS#01 | ENG |  |
|  | 6 | **Sinage** |  | 2025-07-06 | 2025-07-10 |  |  |  |  |  |  |  |  |
| CP09-EN-TR2-A-1960 |  | Sinage-Shop Drawing Approval | 7d | 2025-07-06 A | 2025-07-10 A | CP09-EN-TR2-S-1960 SS+7d, CP09-EN-TR2-S-1960 FF+7d | 100% | 2025-07-14 | 2025-07-22 | TR02 | MS#01 | ENG |  |
|  | 7 | **Play Field Equipment** |  | 2025-08-18 | 2025-08-22 |  |  |  |  |  |  |  |  |
| CP09-EN-TR2-A-1970 |  | Play Field Equipment-Shop Drawing Approval | 14d | 2025-08-18 A | 2025-08-22 A | CP09-EN-TR2-S-1970 SS+7d, CP09-EN-TR2-S-1970 FF+7d | 100% | 2025-08-24 | 2025-09-09 | TR02 | MS#01 | ENG | SO |
|  | 8 | **Irrigation Networks** |  | 2024-08-19 | 2024-08-22 |  |  |  |  |  |  |  |  |
| CP09-EN-TR2-A-1980 |  | Irrigation Networks Layout -Shop Drawing Approval | 7d | 2024-08-19 A | 2024-08-22 A | CP09-EN-TR2-S-1980 SS+7d, CP09-EN-TR2-S-1980 FF+7d | 100% | 2024-10-29 | 2024-11-06 | TR02 | MS#01 | ENG |  |
|  | 9 | **Planting** |  | 2024-10-01 | 2024-10-05 |  |  |  |  |  |  |  |  |
| CP09-EN-TR2-A-1990 |  | Plantings -Shop Drawing Approval | 10d | 2024-10-01 A | 2024-10-05 A | CP09-EN-TR2-S-1990 SS+7d, CP09-EN-TR2-S-1990 FF+7d | 100% | 2024-11-28 | 2024-12-09 | TR02 | MS#01 | ENG |  |
|  | 10 | **Lighting** |  | 2024-08-10 | 2024-08-15 |  |  |  |  |  |  |  |  |
| CP09-EN-TR2-A-2000 |  | Exterior Lighting for Softlandscape-Shop Drawing Approval | 14d | 2024-08-10 A | 2024-08-15 A | CP09-EN-TR2-S-2000 SS+7d, CP09-EN-TR2-S-2000 FF+7d | 100% | 2024-11-12 | 2024-11-27 | TR02 | MS#01 | ENG |  |
|  | 8 | **Terrace # 03** |  | 2024-02-19 | 2026-01-16 |  |  |  |  |  |  |  |  |
|  | 2 | **Shopdrwaings Submittal** |  | 2024-02-19 | 2026-01-16 |  |  |  |  |  |  |  |  |
|  | 1 | **Swimming Pool & MR** |  | 2024-07-30 | 2026-01-16 |  |  |  |  |  |  |  |  |
| CP09-EN-TR3-S-1000 |  | Swimmimg Pool & MR Concrete dimension shop drawing Submittal | 7d | 2024-07-30 A | 2024-08-07 A | CP09-CLD-1010 | 100% | 2024-08-25 | 2024-09-01 | TR03 | MS#02 | ENG |  |
| CP09-EN-TR3-S-1020 |  | Swimmimg Pool & MR Water Proofing Worksshop drawing Submittal | 7d | 2024-07-30 A | 2024-08-07 A | CP09-PR-CV-A-1010 SS | 100% | 2024-09-02 | 2024-09-09 | TR03 | MS#02 | ENG |  |
| CP09-EN-TR3-S-1080 |  | Swimmimg Pool & MR Mechnical Works shop drawing Submittal | 7d | 2024-08-03 A | 2024-08-21 A | CP09-PR-ME-A-1000, CP09-PR-ME-A-1010, CP09-PR-ME-A-1020, CP09-PR-ME-A-1030, CP09-PR-ME-A-1040, CP09-PR-ME-A-1050, CP09-PR-ME-A-1060, CP09-PR-ME-A-1070, CP09-PR-ME-A-1080 | 100% | 2024-10-20 | 2024-10-27 | TR03 | MS#02 | ENG |  |
| CP09-EN-TR3-S-1090 |  | Swimmimg Pool & MR Electrical Works shop drawing Submittal | 7d | 2024-09-26 A | 2026-01-16 A | CP09-PR-EL-A-1000, CP09-PR-EL-A-1010, CP09-PR-EL-A-1020 FF, CP09-PR-EL-A-1030, CP09-PR-EL-A-1040, CP09-PR-EL-A-1050, CP09-PR-EL-A-1140 | 100% | 2024-11-28 | 2024-12-05 | TR03 | MS#02 | ENG |  |
| CP09-EN-TR3-S-1010 |  | Swimmimg Pool & MR Steel reinforcement shop drawing Submittal | 7d | 2024-10-09 A | 2025-05-22 A | CP09-EN-TR3-S-1000 | 100% | 2024-10-27 | 2024-11-03 | TR03 | MS#02 | ENG |  |
| CP09-EN-TR3-S-1050 |  | Swimmimg Pool & MR Granite Works shop drawing Submittal | 7d | 2025-08-18 A | 2025-08-22 A | CP09-PR-CV-A-1040 | 100% | 2025-09-18 | 2025-09-25 | TR03 | MS#02 | ENG |  |
| CP09-EN-TR3-S-1060 |  | Swimmimg Pool & MR Ladders Works shop drawing Submittal | 7d | 2025-08-18 A | 2025-08-22 A | CP09-PR-CV-A-1050 | 100% | 2025-09-27 | 2025-10-04 | TR03 | MS#02 | ENG |  |
| CP09-EN-TR3-S-1070 |  | Swimmimg Pool & MR Handrial Works shop drawing Submittal | 7d | 2025-08-18 A | 2025-08-22 A | CP09-PR-CV-A-1060 | 100% | 2025-09-27 | 2025-10-04 | TR03 | MS#02 | ENG |  |
| CP09-EN-TR3-S-1040 |  | Swimmimg Pool & MR Mosaics Works shop drawing Submittal | 7d | 2026-01-12 A | 2026-01-16 A | CP09-PR-CV-A-1030 | 100% | 2025-09-10 | 2025-09-17 | TR03 | MS#02 | ENG |  |
| CP09-EN-TR3-S-1370 |  | Swimmimg Pool & MR Fininshes shop drawing Submittal | 7d | 2026-01-12 A | 2026-01-16 A | CP09-PR-CV-A-1070, CP09-PR-CV-A-1080, CP09-PR-CV-A-1110 | 100% | 2025-09-18 | 2025-09-25 | TR03 | MS#02 | ENG |  |

| ID | WBS | Activity | Duration | Start | Finish | Predecessors | Complete | Planned start | Planned finish | CP09_Terrace-7 | CP09_Milestone-7 | CP09_Discipline-7 |
| --- | --- | --- | --- | --- | --- | --- | --- | --- | --- | --- | --- | --- |
|  | 2 | **Earth Work** |  | 2024-04-15 | 2025-07-10 |  |  |  |  |  |  |  |
| CP09-EN-TR3-S-1100 |  | Sub Garde shop drawing Submittal | 3d | 2024-04-15 A | 2025-07-10 A | CP09-CLD-1010 | 100% | 2024-02-10 | 2024-02-12 | TR03 | MS#02 | ENG |
|  | 3 | **Cheek & Retaning Wall** |  | 2024-09-21 | 2024-10-30 |  |  |  |  |  |  |  |
| CP09-EN-TR3-S-1130 |  | Cheek & Retaning Wall Water Proofing Works shop drawing Submittal | 6.56d | 2024-09-21 A | 2024-09-28 A | CP09-EN-TR2-S-1770, CP09-PR-CV-A-1010 | 100% | 2024-12-19 | 2024-12-26 | TR03 | MS#02 | ENG |
| CP09-EN-TR3-S-1140 |  | Cheek & Retaning Wall Masonary Works shop drawing Submittal | 6.56d | 2024-09-21 A | 2024-09-28 A | CP09-EN-TR2-S-1780, CP09-PR-CV-A-1020 | 100% | 2024-12-26 | 2025-01-04 | TR03 | MS#02 | ENG |
| CP09-EN-TR3-S-1150 |  | Cheek & Retaning Wall Marble Works shop drawing Submittal | 6.56d | 2024-09-21 A | 2024-09-28 A | CP09-EN-TR2-S-1790, CP09-PR-CV-A-1120 | 100% | 2025-01-04 | 2025-01-12 | TR03 | MS#02 | ENG |
| CP09-EN-TR3-S-1110 |  | Cheek & Retaning Wall Concrete dimension shop drawing Submittal | 6.56d | 2024-10-23 A | 2024-10-30 A | CP09-EN-TR2-S-1750, CP09-PR-CV-A-1000 | 100% | 2024-12-04 | 2024-12-11 | TR03 | MS#02 | ENG |
| CP09-EN-TR3-S-1120 |  | Cheek & Retaning Wall Steel reinforcement shop drawing Submittal | 6.56d | 2024-10-23 A | 2024-10-30 A | CP09-EN-TR2-S-1760, CP09-PR-CV-A-1130 | 100% | 2024-12-11 | 2024-12-19 | TR03 | MS#02 | ENG |
|  | 4 | **Hardscape Works** |  | 2024-08-11 | 2025-08-22 |  |  |  |  |  |  |  |
| CP09-EN-TR3-S-1230 |  | Flush Curb Works Shop Drawing Submittal | 6.56d | 2024-08-11 A | 2024-08-21 A | CP09-EN-TR2-S-1870, CP09-PR-HD-A-1080 | 100% | 2024-11-04 | 2024-11-11 | TR03 | MS#02 | ENG |
| CP09-EN-TR3-S-1240 |  | Interlocking Paving Works Shop Drawing Submittal | 6.56d | 2024-08-11 A | 2024-08-21 A | CP09-EN-TR1-S-1610, CP09-PR-HD-A-1090, CP09-PR-HD-A-1180 | 100% | 2024-11-20 | 2024-11-27 | TR03 | MS#02 | ENG |
| CP09-EN-TR3-S-1290 |  | Landscape Furntiure Shop Drawing Submittal | 6.56d | 2024-08-11 A | 2025-08-22 A | CP09-EN-TR1-S-1660, CP09-PR-FN-A-1000, CP09-PR-FN-A-1010, CP09-PR-FN-A-1020, CP09-PR-FN-A-1030, CP09-PR-FN-A-1040, CP09-PR-FN-A-1050, CP09-PR-FN-A-1060, CP09-PR-FN-A-1070, CP09-PR-FN-A-1080 | 100% | 2024-10-12 | 2024-10-20 | TR03 | MS#02 | ENG |
| CP09-EN-TR3-S-1260 |  | Seats Works Shop Shop Drawing Submittal | 6.56d | 2024-09-21 A | 2024-09-28 A | CP09-EN-TR1-S-1630, CP09-PR-HD-A-1110 | 100% | 2024-12-09 | 2024-12-16 | TR03 | MS#02 | ENG |
| CP09-EN-TR3-S-1170 |  | Marble Paving - Side Walks Works Shop Drawing Submittal | 6.56d | 2024-09-26 A | 2024-09-26 A | CP09-EN-TR2-S-1810, CP09-PR-HD-A-1010 | 100% | 2024-10-31 | 2024-11-07 | TR03 | MS#02 | ENG |
| CP09-EN-TR3-S-1180 |  | WPC - Side Walks Works Shop Drawing Submittal | 6.56d | 2024-09-26 A | 2024-09-26 A | CP09-PR-HD-A-1020 | 100% | 2024-11-20 | 2024-11-27 | TR03 | MS#02 | ENG |
| CP09-EN-TR3-S-1190 |  | Gravel - Side Walks Works Shop Drawing Submittal | 6.56d | 2024-09-26 A | 2024-09-26 A | CP09-EN-TR2-S-1830, CP09-PR-HD-A-1030 | 100% | 2024-11-25 | 2024-12-02 | TR03 | MS#02 | ENG |
| CP09-EN-TR3-S-1200 |  | Crushed Stone - Side Walks Works Shop Drawing Submittal | 6.56d | 2024-09-26 A | 2024-09-26 A | CP09-EN-TR2-S-1840, CP09-PR-HD-A-1040 | 100% | 2024-11-25 | 2024-12-02 | TR03 | MS#02 | ENG |
| CP09-EN-TR3-S-1210 |  | Loose Gravel - Side Walks Works Shop Drawing Submittal | 6.56d | 2024-09-26 A | 2024-09-26 A | CP09-EN-TR2-S-1850, CP09-PR-HD-A-1050 | 100% | 2024-11-25 | 2024-12-02 | TR03 | MS#02 | ENG |
| CP09-EN-TR3-S-1220 |  | Clean sand layer - Side Walks Works Shop Drawing Submittal | 7d | 2024-09-26 A | 2024-09-26 A | CP09-EN-TR2-S-1860, CP09-PR-HD-A-1060, CP09-PR-HD-A-1070 | 100% | 2024-11-25 | 2024-12-02 | TR03 | MS#02 | ENG |
| CP09-EN-TR3-S-1250 |  | Steps Works shop Shop Drawing Submittal | 6.56d | 2024-10-01 A | 2024-10-07 A | CP09-EN-TR1-S-1620, CP09-PR-HD-A-1100 | 100% | 2024-12-09 | 2024-12-16 | TR03 | MS#02 | ENG |
| CP09-EN-TR3-S-1160 |  | Concrete Exposed Aggregate - Side Walks Shop Drawing Submittal | 6.56d | 2024-10-02 A | 2024-10-08 A | CP09-EN-TR2-S-1800, CP09-PR-HD-A-1000 | 100% | 2024-11-25 | 2024-12-02 | TR03 | MS#02 | ENG |
| CP09-EN-TR3-S-1270 |  | Pool Shower Works Shop Drawing Submittal | 6.56d | 2025-08-18 A | 2025-08-22 A | CP09-EN-TR1-S-1640, CP09-PR-HD-A-1120, CP09-PR-HD-A-1130, CP09-PR-HD-A-1140, CP09-PR-HD-A-1150 | 100% | 2025-08-31 | 2025-09-09 | TR03 | MS#02 | ENG |
| CP09-EN-TR3-S-1280 |  | Handrails Works Shop Drawing Submittal | 6.56d | 2025-08-18 A | 2025-08-22 A | CP09-EN-TR1-S-1650, CP09-PR-HD-A-1160, CP09-PR-HD-A-1170 | 100% | 2025-08-31 | 2025-09-09 | TR03 | MS#02 | ENG |
|  | 5 | **Electrical Works** |  | 2025-07-06 | 2025-08-22 |  |  |  |  |  |  |  |
| CP09-EN-TR3-S-1300 |  | Power Cables Shop Drawing Submittal | 6.56d | 2025-07-06 A | 2025-07-10 A | CP09-EN-TR1-S-1670, CP09-PR-EL-A-1060 | 100% | 2025-07-12 | 2025-07-19 | TR03 | MS#02 | ENG |
| CP09-EN-TR3-S-1310 |  | Connecting Pillars Shop Drawing Submittal | 6.56d | 2025-08-18 A | 2025-08-22 A | CP09-EN-TR1-S-1680, CP09-PR-EL-A-1070 | 100% | 2025-08-24 | 2025-08-31 | TR03 | MS#02 | ENG |

| ID | WBS | Activity | Duration | Start | Finish | Predecessors | Complete | Planned start | Planned finish | CP09_Terrace-7 | CP09_Milestone-7 | CP09_Discipline-7 | DES |
| --- | --- | --- | --- | --- | --- | --- | --- | --- | --- | --- | --- | --- | --- |
|  | 6 | **Sinage** |  | 2025-07-06 | 2025-07-10 |  |  |  |  |  |  |  |  |
| CP09-EN-TR3-S-1320 |  | Sinage Shop Drawing Submittal | 6.56d | 2025-07-06 A | 2025-07-10 A | CP09-EN-TR1-S-1690, CP09-PR-SN-A-1000, CP09-PR-SN-A-1010, CP09-PR-SN-A-1020, CP09-PR-SN-A-1030, CP09-PR-SN-A-1040 | 100% | 2024-10-01 | 2024-10-09 | TR03 | MS#02 | ENG |  |
|  | 7 | **Play Field Equipment** |  | 2025-08-18 | 2025-08-22 |  |  |  |  |  |  |  |  |
| CP09-EN-TR3-S-1330 |  | Play Field Equipment Shop Drawing Submittal | 6.56d | 2025-08-18 A | 2025-08-22 A | CP09-EN-TR1-S-1700, CP09-PR-PE-A-1000, CP09-PR-PE-A-1010, CP09-PR-PE-A-1020, CP09-PR-PE-A-1030, CP09-PR-PE-A-1040, CP09-PR-PE-A-1050, CP09-PR-PE-A-1060, CP09-PR-PE-A-1070, CP09-PR-PE-A-1080, CP09-PR-PE-A-1090, CP09-PR-PE-A-1100 | 100% | 2024-10-08 | 2024-10-16 | TR03 | MS#02 | ENG | SO |
|  | 8 | **Irrigation Networks** |  | 2024-05-17 | 2024-05-25 |  |  |  |  |  |  |  |  |
| CP09-EN-TR3-S-1340 |  | Irrigation Networks Layout Shop Drawing Submittal | 6.56d | 2024-05-17 A | 2024-05-25 A | CP09-EN-TR2-S-1980, CP09-EN-TR1-S-1710, CP09-PR-IR-A-1000, CP09-PR-IR-A-1010, CP09-PR-IR-A-1020, CP09-PR-IR-A-1030, CP09-PR-IR-A-1040, CP09-PR-IR-A-1050, CP09-PR-IR-A-1060, CP09-PR-IR-A-1070, CP09-PR-IR-A-1080 | 100% | 2024-03-03 | 2024-03-10 | TR03 | MS#02 | ENG |  |
|  | 9 | **Planting** |  | 2024-02-19 | 2024-10-14 |  |  |  |  |  |  |  |  |
| CP09-EN-TR3-S-1350 |  | Plantings Shop Drawing Submittal | 6.56d | 2024-02-19 A | 2024-10-14 A | CP09-EN-TR1-S-1720, CP09-PR-PN-A-1000, CP09-PR-PN-A-1010, CP09-PR-PN-A-1020, CP09-PR-PN-A-1030, CP09-PR-PN-A-1040, CP09-PR-PN-A-1050, CP09-PR-PN-A-1060, CP09-PR-PN-A-1070, CP09-PR-PN-A-1080 | 100% | 2024-04-20 | 2024-04-28 | TR03 | MS#02 | ENG |  |
|  | 10 | **Lighting** |  | 2024-09-28 | 2024-10-02 |  |  |  |  |  |  |  |  |
| CP09-EN-TR3-S-1360 |  | Exterior Lighting for Softlandscape Shop Drawing Submittal | 6.56d | 2024-09-28 A | 2024-10-02 A | CP09-EN-TR1-S-1730, CP09-PR-EL-A-1080, CP09-PR-EL-A-1090, CP09-PR-EL-A-1100, CP09-PR-EL-A-1110, CP09-PR-EL-A-1120, CP09-PR-EL-A-1130 | 100% | 2024-11-16 | 2024-11-24 | TR03 | MS#02 | ENG |  |
|  | 1 | **Shopdrwaings Approval** |  | 2024-05-27 | 2026-01-16 |  |  |  |  |  |  |  |  |
|  | 1 | **Swimming Pool & MR** |  | 2024-08-08 | 2026-01-16 |  |  |  |  |  |  |  |  |
| CP09-EN-TR3-A-1000 |  | Swimmimg Pool & MR Concrete dimension-Shop Drawing Approval | 14d | 2024-08-08 A | 2024-08-25 A | CP09-EN-TR3-S-1000 FF+7d, CP09-EN-TR3-S-1000 SS+7d | 100% | 2024-09-02 | 2024-09-18 | TR03 | MS#02 | ENG |  |
| CP09-EN-TR3-A-1020 |  | Swimmimg Pool & MR Water Proofing Works-Shop Drawing Approval | 14d | 2024-08-08 A | 2024-08-25 A | CP09-EN-TR3-S-1020 FF+7d, CP09-EN-TR3-S-1020 SS+7d | 100% | 2024-09-10 | 2024-09-26 | TR03 | MS#02 | ENG |  |
| CP09-EN-TR3-A-1080 |  | Swimmimg Pool & MR Mechnical Works-Shop Drawing Approval | 14d | 2024-08-10 A | 2024-08-27 A | CP09-EN-TR3-S-1080 FF+7d, CP09-EN-TR3-S-1080 SS+7d | 100% | 2024-10-28 | 2024-11-12 | TR03 | MS#02 | ENG |  |
| CP09-EN-TR3-A-1040 |  | Swimmimg Pool & MR Mosaics Works-Shop Drawing Approval | 14d | 2025-08-18 A | 2025-08-22 A | CP09-EN-TR3-S-1040 FF+7d, CP09-EN-TR3-S-1040 SS+7d | 100% | 2025-09-18 | 2025-10-04 | TR03 | MS#02 | ENG |  |
| CP09-EN-TR3-A-1050 |  | Swimmimg Pool & MR Granite Works-Shop Drawing Approval | 14d | 2025-08-18 A | 2025-08-22 A | CP09-EN-TR3-S-1050 FF+7d, CP09-EN-TR3-S-1050 SS+7d | 100% | 2025-09-27 | 2025-10-13 | TR03 | MS#02 | ENG |  |
| CP09-EN-TR3-A-1060 |  | Swimmimg Pool & MR Ladders Works-Shop Drawing Approval | 14d | 2025-08-18 A | 2025-08-22 A | CP09-EN-TR3-S-1060 FF+7d, CP09-EN-TR3-S-1060 SS+7d | 100% | 2025-10-05 | 2025-10-21 | TR03 | MS#02 | ENG |  |
| CP09-EN-TR3-A-1070 |  | Swimmimg Pool & MR Handrial Works-Shop Drawing Approval | 14d | 2025-08-18 A | 2025-08-22 A | CP09-EN-TR3-S-1070 FF+7d, CP09-EN-TR3-S-1070 SS+7d | 100% | 2025-10-05 | 2025-10-21 | TR03 | MS#02 | ENG |  |
| CP09-EN-TR3-A-1010 |  | Swimmimg Pool & MR Steel reinforcement-Shop Drawing Approval | 14d | 2026-01-12 A | 2026-01-16 A | CP09-EN-TR3-S-1010 FF+7d, CP09-EN-TR3-S-1010 SS+7d | 100% | 2025-08-24 | 2025-09-09 | TR03 | MS#02 | ENG |  |
| CP09-EN-TR3-A-1090 |  | Swimmimg Pool & MR Electrical Works-Shop Drawing Approval | 14d | 2026-01-12 A | 2026-01-16 A | CP09-EN-TR3-S-1090 FF+7d, CP09-EN-TR3-S-1090 SS+7d | 100% | 2025-09-10 | 2025-09-25 | TR03 | MS#02 | ENG |  |
| CP09-EN-TR3-A-1370 |  | Swimmimg Pool & MR Fininshes shop drawing Approval | 14d | 2026-01-12 A | 2026-01-16 A | CP09-EN-TR3-S-1370 FF+7d, CP09-EN-TR3-S-1370 SS+7d | 100% | 2025-09-27 | 2025-10-13 | TR03 | MS#02 | ENG |  |
|  | 2 | **Earth Work** |  | 2025-07-06 | 2025-07-10 |  |  |  |  |  |  |  |  |
| CP09-EN-TR3-A-1100 |  | Sub Garde Shopdrwaings-Shop Drawing Approval | 14d | 2025-07-06 A | 2025-07-10 A | CP09-EN-TR3-S-1100 FF+7d, CP09-EN-TR3-S-1100 SS+7d | 100% | 2025-07-12 | 2025-07-28 | TR03 | MS#02 | ENG |  |

| ID | WBS | Activity | Duration | Start | Finish | Predecessors | Complete | Planned start | Planned finish | CP09_Terrace-7 | CP09_Milestone-7 | CP09_Discipline-7 |
| --- | --- | --- | --- | --- | --- | --- | --- | --- | --- | --- | --- | --- |
|  | 3 | **Cheek & Retaning Wall** |  | 2024-09-28 | 2025-11-03 |  |  |  |  |  |  |  |
| CP09-EN-TR3-A-1130 |  | Cheek & Retaning Wall Water Proofing Works-Shop Drawing Approval | 14d | 2024-09-28 A | 2024-11-03 A | CP09-EN-TR3-S-1130 FF+7d, CP09-EN-TR3-S-1130 SS+7d | 100% | 2024-12-28 | 2025-01-14 | TR03 | MS#02 | ENG |
| CP09-EN-TR3-A-1140 |  | Cheek & Retaning Wall Masonary Works-Shop Drawing Approval | 14d | 2024-09-28 A | 2024-11-03 A | CP09-EN-TR3-S-1140 FF+7d, CP09-EN-TR3-S-1140 SS+7d | 100% | 2025-01-04 | 2025-01-21 | TR03 | MS#02 | ENG |
| CP09-EN-TR3-A-1150 |  | Cheek & Retaning Wall Marble Works-Shop Drawing Approval | 14d | 2024-09-28 A | 2025-11-03 A | CP09-EN-TR3-S-1150 FF+7d, CP09-EN-TR3-S-1150 SS+7d | 100% | 2025-01-13 | 2025-01-30 | TR03 | MS#02 | ENG |
| CP09-EN-TR3-A-1110 |  | Cheek & Retaning Wall Concrete dimension-ShopDrawing Approval | 14d | 2024-10-30 A | 2024-11-12 A | CP09-EN-TR3-S-1110 FF+7d, CP09-EN-TR3-S-1110 SS+7d | 100% | 2024-12-12 | 2024-12-28 | TR03 | MS#02 | ENG |
| CP09-EN-TR3-A-1120 |  | Cheek & Retaning Wall Steel reinforcement-Shop Drawing Approval | 14d | 2024-10-30 A | 2024-11-12 A | CP09-EN-TR3-S-1120 FF+7d, CP09-EN-TR3-S-1120 SS+7d | 100% | 2024-12-19 | 2025-01-05 | TR03 | MS#02 | ENG |
|  | 4 | **Hardscape Works** |  | 2024-08-21 | 2025-08-22 |  |  |  |  |  |  |  |
| CP09-EN-TR3-A-1230 |  | Flush Curb Works-Shop Drawing Approval | 14d | 2024-08-21 A | 2024-08-21 A | CP09-EN-TR3-S-1230 FF+7d, CP09-EN-TR3-S-1230 SS+7d | 100% | 2024-11-12 | 2024-11-27 | TR03 | MS#02 | ENG |
| CP09-EN-TR3-A-1240 |  | Interlocking Paving Works-Shop Drawing Approval | 14d | 2024-08-21 A | 2024-08-21 A | CP09-EN-TR3-S-1240 FF+7d, CP09-EN-TR3-S-1240 SS+7d | 100% | 2024-11-28 | 2024-12-14 | TR03 | MS#02 | ENG |
| CP09-EN-TR3-A-1170 |  | Marble Paving - Side Walks Works-Shop Drawing Approval | 14d | 2024-09-26 A | 2024-09-30 A | CP09-EN-TR3-S-1170 FF+7d, CP09-EN-TR3-S-1170 SS+7d | 100% | 2024-11-09 | 2024-11-24 | TR03 | MS#02 | ENG |
| CP09-EN-TR3-A-1180 |  | WPC - Side Walks Works -Shop Drawing Approval | 14d | 2024-09-26 A | 2024-09-30 A | CP09-EN-TR3-S-1180 FF+7d, CP09-EN-TR3-S-1180 SS+7d | 100% | 2024-11-28 | 2024-12-14 | TR03 | MS#02 | ENG |
| CP09-EN-TR3-A-1190 |  | Gravel - Side Walks Works-Shop Drawing Approval | 14d | 2024-09-26 A | 2024-09-30 A | CP09-EN-TR3-S-1190 FF+7d, CP09-EN-TR3-S-1190 SS+7d | 100% | 2024-12-03 | 2024-12-18 | TR03 | MS#02 | ENG |
| CP09-EN-TR3-A-1200 |  | Crushed Stone - Side Walks Works-Shop Drawing Approval | 14d | 2024-09-26 A | 2024-09-30 A | CP09-EN-TR3-S-1200 FF+7d, CP09-EN-TR3-S-1200 SS+7d | 100% | 2024-12-03 | 2024-12-18 | TR03 | MS#02 | ENG |
| CP09-EN-TR3-A-1210 |  | Loose Gravel - Side Walks Works-Shop Drawing Approval | 14d | 2024-09-26 A | 2024-09-30 A | CP09-EN-TR3-S-1210 FF+7d, CP09-EN-TR3-S-1210 SS+7d | 100% | 2024-12-03 | 2024-12-18 | TR03 | MS#02 | ENG |
| CP09-EN-TR3-A-1220 |  | Clean sand layer - Side Walks Works-Shop Drawing Approval | 14d | 2024-09-26 A | 2024-09-30 A | CP09-EN-TR3-S-1220 FF+7d, CP09-EN-TR3-S-1220 SS+7d | 100% | 2024-12-03 | 2024-12-18 | TR03 | MS#02 | ENG |
| CP09-EN-TR3-A-1260 |  | Seats Works-Shop Drawing Approval | 14d | 2024-09-28 A | 2024-11-03 A | CP09-EN-TR3-S-1260 FF+7d, CP09-EN-TR3-S-1260 SS+7d | 100% | 2024-12-17 | 2025-01-01 | TR03 | MS#02 | ENG |
| CP09-EN-TR3-A-1250 |  | Steps Works-Shop Drawing Approval | 14d | 2024-10-07 A | 2024-10-14 A | CP09-EN-TR3-S-1250 FF+7d, CP09-EN-TR3-S-1250 SS+7d | 100% | 2024-12-17 | 2025-01-01 | TR03 | MS#02 | ENG |
| CP09-EN-TR3-A-1160 |  | Concrete Exposed Aggregate - Side Walks-Shop Drawing Approval | 14d | 2024-10-08 A | 2024-10-10 A | CP09-EN-TR3-S-1160 FF+7d, CP09-EN-TR3-S-1160 SS+7d | 100% | 2024-12-03 | 2024-12-18 | TR03 | MS#02 | ENG |
| CP09-EN-TR3-A-1270 |  | Pool Shower Works-Shop Drawing Approval | 14d | 2025-08-18 A | 2025-08-22 A | CP09-EN-TR3-S-1270 FF+7d, CP09-EN-TR3-S-1270 SS+7d | 100% | 2025-09-09 | 2025-09-25 | TR03 | MS#02 | ENG |
| CP09-EN-TR3-A-1280 |  | Handrails Works-Shop Drawing Approval | 14d | 2025-08-18 A | 2025-08-22 A | CP09-EN-TR3-S-1280 FF+7d, CP09-EN-TR3-S-1280 SS+7d | 100% | 2025-09-09 | 2025-09-25 | TR03 | MS#02 | ENG |
| CP09-EN-TR3-A-1290 |  | Landscape Furntiure-Shop Drawing Approval | 14d | 2025-08-18 A | 2025-08-22 A | CP09-EN-TR3-S-1290 FF+7d, CP09-EN-TR3-S-1290 SS+7d | 100% | 2025-08-24 | 2025-09-09 | TR03 | MS#02 | ENG |
|  | 5 | **Electrical Works** |  | 2025-07-06 | 2025-08-22 |  |  |  |  |  |  |  |
| CP09-EN-TR3-A-1300 |  | Power Cables-Shop Drawing Approval | 14d | 2025-07-06 A | 2025-07-10 A | CP09-EN-TR3-S-1300 FF+7d, CP09-EN-TR3-S-1300 SS+7d | 100% | 2025-07-20 | 2025-08-05 | TR03 | MS#02 | ENG |
| CP09-EN-TR3-A-1310 |  | Connecting Pillars-Shop Drawing Approval | 14d | 2025-08-18 A | 2025-08-22 A | CP09-EN-TR3-S-1310 FF+7d, CP09-EN-TR3-S-1310 SS+7d | 100% | 2025-09-01 | 2025-09-17 | TR03 | MS#02 | ENG |

| ID | WBS | Activity | Duration | Start | Finish | Predecessors | Complete | Planned start | Planned finish | CP09_Terrace-7 | CP09_Milestone-7 | CP09_Discipline-7 | DES |
| --- | --- | --- | --- | --- | --- | --- | --- | --- | --- | --- | --- | --- | --- |
|  | 6 | **Sinage** |  | 2025-07-06 | 2025-07-10 |  |  |  |  |  |  |  |  |
| CP09-EN-TR3-A-1320 |  | Sinage-Shop Drawing Approval | 14d | 2025-07-06 A | 2025-07-10 A | CP09-EN-TR3-S-1320 FF+7d, CP09-EN-TR3-S-1320 SS+7d | 100% | 2025-07-12 | 2025-07-28 | TR03 | MS#02 | ENG |  |
|  | 7 | **Play Field Equipment** |  | 2025-08-18 | 2025-08-22 |  |  |  |  |  |  |  |  |
| CP09-EN-TR3-A-1330 |  | Play Field Equipment-Shop Drawing Approval | 14d | 2025-08-18 A | 2025-08-22 A | CP09-EN-TR3-S-1330 FF+7d, CP09-EN-TR3-S-1330 SS+7d | 100% | 2025-08-24 | 2025-09-09 | TR03 | MS#02 | ENG | SO |
|  | 8 | **Irrigation Networks** |  | 2024-05-27 | 2024-06-12 |  |  |  |  |  |  |  |  |
| CP09-EN-TR3-A-1340 |  | Irrigation Networks Layout -Shop Drawing Approval | 14d | 2024-05-27 A | 2024-06-12 A | CP09-EN-TR3-S-1340 FF+7d, CP09-EN-TR3-S-1340 SS+7d | 100% | 2024-09-05 | 2024-09-22 | TR03 | MS#02 | ENG |  |
|  | 9 | **Planting** |  | 2024-10-14 | 2024-10-16 |  |  |  |  |  |  |  |  |
| CP09-EN-TR3-A-1350 |  | Plantings -Shop Drawing Approval | 14d | 2024-10-14 A | 2024-10-16 A | CP09-EN-TR3-S-1350 FF+7d, CP09-EN-TR3-S-1350 SS+7d | 100% | 2024-12-02 | 2024-12-17 | TR03 | MS#02 | ENG |  |
|  | 10 | **Lighting** |  | 2024-10-02 | 2024-10-06 |  |  |  |  |  |  |  |  |
| CP09-EN-TR3-A-1360 |  | Exterior Lighting for Softlandscape-Shop Drawing Approval | 14d | 2024-10-02 A | 2024-10-06 A | CP09-EN-TR3-S-1360 FF+7d, CP09-EN-TR3-S-1360 SS+7d | 100% | 2024-11-24 | 2024-12-10 | TR03 | MS#02 | ENG |  |
|  | 1 | **Terrace # 04** |  | 2024-02-29 | 2026-01-16 |  |  |  |  |  |  |  |  |
|  | 2 | **Shopdrwaings Submittal** |  | 2024-02-29 | 2026-01-16 |  |  |  |  |  |  |  |  |
|  | 1 | **Swimming Pool & MR** |  | 2024-05-28 | 2026-01-16 |  |  |  |  |  |  |  |  |
| CP09-EN-TR4-S-1460 |  | Swimmimg Pool & MR Electrical Works shop drawing Submittal | 7d | 2024-05-28 A | 2026-01-16 A | CP09-EN-TR3-S-1090, CP09-PR-EL-A-1000, CP09-PR-EL-A-1010, CP09-PR-EL-A-1020, CP09-PR-EL-A-1030, CP09-PR-EL-A-1040, CP09-PR-EL-A-1050, CP09-PR-EL-A-1140 | 100% | 2024-12-07 | 2024-12-14 | TR04 | MS#02 | ENG |  |
| CP09-EN-TR4-S-1380 |  | Swimmimg Pool & MR Concrete dimension shop drawing Submittal | 7d | 2024-08-21 A | 2025-07-10 A | CP09-CLD-1010 | 100% | 2024-08-25 | 2024-09-01 | TR04 | MS#02 | ENG |  |
| CP09-EN-TR4-S-1400 |  | Swimmimg Pool & MR Water Proofing Worksshop drawing Submittal | 7d | 2024-08-21 A | 2025-07-10 A | CP09-PR-CV-A-1010 SS | 100% | 2024-08-21 | 2024-08-28 | TR04 | MS#02 | ENG |  |
| CP09-EN-TR4-S-1450 |  | Swimmimg Pool & MR Mechnical Works shop drawing Submittal | 7d | 2024-08-21 A | 2024-08-21 A | CP09-EN-TR3-S-1080, CP09-PR-ME-A-1000, CP09-PR-ME-A-1010, CP09-PR-ME-A-1020, CP09-PR-ME-A-1030, CP09-PR-ME-A-1040, CP09-PR-ME-A-1050, CP09-PR-ME-A-1060, CP09-PR-ME-A-1070, CP09-PR-ME-A-1080 | 100% | 2024-10-28 | 2024-11-04 | TR04 | MS#02 | ENG |  |
| CP09-EN-TR4-S-1390 |  | Swimmimg Pool & MR Steel reinforcement shop drawing Submittal | 7d | 2024-10-17 A | 2025-07-10 A | CP09-EN-TR4-S-1380 | 100% | 2024-10-30 | 2024-11-07 | TR04 | MS#02 | ENG |  |
| CP09-EN-TR4-S-1420 |  | Swimmimg Pool & MR Granite Works shop drawing Submittal | 7d | 2025-08-18 A | 2025-08-22 A | CP09-EN-TR3-S-1050, CP09-PR-CV-A-1040 | 100% | 2025-09-27 | 2025-10-04 | TR04 | MS#02 | ENG |  |
| CP09-EN-TR4-S-1430 |  | Swimmimg Pool & MR Ladders Works shop drawing Submittal | 7d | 2025-08-18 A | 2025-08-22 A | CP09-PR-CV-A-1050 | 100% | 2025-09-27 | 2025-10-04 | TR04 | MS#02 | ENG |  |
| CP09-EN-TR4-S-1440 |  | Swimmimg Pool & MR Handrial Works shop drawing Submittal | 7d | 2025-08-18 A | 2025-08-22 A | CP09-PR-CV-A-1060 | 100% | 2025-09-27 | 2025-10-04 | TR04 | MS#02 | ENG |  |
| CP09-EN-TR4-S-1410 |  | Swimmimg Pool & MR Mosaics Works shop drawing Submittal | 7d | 2026-01-12 A | 2026-01-16 A | CP09-PR-CV-A-1030 | 100% | 2025-09-10 | 2025-09-17 | TR04 | MS#02 | ENG |  |
| CP09-EN-TR4-S-1740 |  | Swimmimg Pool & MR Fininshes shop drawing Submittal | 7d | 2026-01-12 A | 2026-01-16 A | CP09-PR-CV-A-1070, CP09-PR-CV-A-1080, CP09-PR-CV-A-1110 | 100% | 2025-09-18 | 2025-09-25 | TR04 | MS#02 | ENG |  |
|  | 2 | **Earth Work** |  | 2024-04-23 | 2025-07-10 |  |  |  |  |  |  |  |  |
| CP09-EN-TR4-S-1470 |  | Sub Garde shop drawing Submittal | 3d | 2024-04-23 A | 2025-07-10 A | CP09-EN-TR2-S-1740, CP09-CLD-1010 | 100% | 2024-02-13 | 2024-02-15 | TR04 | MS#02 | ENG |  |

| ID | WBS | Activity | Duration | Start | Finish | Predecessors | Complete | Planned start | Planned finish | CP09_Terrace-7 | CP09_Milestone-7 | CP09_Discipline-7 |
| --- | --- | --- | --- | --- | --- | --- | --- | --- | --- | --- | --- | --- |
|  | 3 | **Cheek & Retaning Wall** |  | 2024-10-14 | 2024-10-27 |  |  |  |  |  |  |  |
| CP09-EN-TR4-S-1500 |  | Cheek & Retaning Wall Water Proofing Works shop drawing Submittal | 6.56d | 2024-10-14 A | 2024-10-21 A | CP09-EN-TR2-S-1770, CP09-PR-CV-A-1010 | 100% | 2024-12-19 | 2024-12-26 | TR04 | MS#02 | ENG |
| CP09-EN-TR4-S-1510 |  | Cheek & Retaning Wall Masonary Works shop drawing Submittal | 6.56d | 2024-10-14 A | 2024-10-21 A | CP09-EN-TR2-S-1780, CP09-PR-CV-A-1020 | 100% | 2024-12-26 | 2025-01-04 | TR04 | MS#02 | ENG |
| CP09-EN-TR4-S-1520 |  | Cheek & Retaning Wall Marble Works shop drawing Submittal | 6.56d | 2024-10-14 A | 2024-10-21 A | CP09-EN-TR2-S-1790, CP09-PR-CV-A-1120 | 100% | 2025-01-04 | 2025-01-12 | TR04 | MS#02 | ENG |
| CP09-EN-TR4-S-1480 |  | Cheek & Retaning Wall Concrete dimension shop drawing Submittal | 6.56d | 2024-10-20 A | 2024-10-27 A | CP09-EN-TR2-S-1750, CP09-PR-CV-A-1000 | 100% | 2024-12-04 | 2024-12-11 | TR04 | MS#02 | ENG |
| CP09-EN-TR4-S-1490 |  | Cheek & Retaning Wall Steel reinforcement shop drawing Submittal | 6.56d | 2024-10-20 A | 2024-10-27 A | CP09-EN-TR2-S-1760, CP09-PR-CV-A-1130 | 100% | 2024-12-11 | 2024-12-19 | TR04 | MS#02 | ENG |
|  | 4 | **Hardscape Works** |  | 2024-08-11 | 2025-08-22 |  |  |  |  |  |  |  |
| CP09-EN-TR4-S-1660 |  | Landscape Furntiure Shop Drawing Submittal | 6.56d | 2024-08-11 A | 2025-08-22 A | CP09-EN-TR2-S-1930, CP09-PR-FN-A-1000, CP09-PR-FN-A-1010, CP09-PR-FN-A-1020, CP09-PR-FN-A-1030, CP09-PR-FN-A-1040, CP09-PR-FN-A-1050, CP09-PR-FN-A-1060, CP09-PR-FN-A-1070, CP09-PR-FN-A-1080 | 100% | 2024-10-12 | 2024-10-20 | TR04 | MS#02 | ENG |
| CP09-EN-TR4-S-1600 |  | Flush Curb Works Shop Drawing Submittal | 6.56d | 2024-08-21 A | 2024-08-26 A | CP09-PR-HD-A-1080 | 100% | 2024-10-27 | 2024-11-03 | TR04 | MS#02 | ENG |
| CP09-EN-TR4-S-1610 |  | Interlocking Paving Works Shop Drawing Submittal | 6.56d | 2024-08-21 A | 2024-08-26 A | CP09-EN-TR2-S-1880, CP09-PR-HD-A-1090, CP09-PR-HD-A-1180 | 100% | 2024-11-20 | 2024-11-27 | TR04 | MS#02 | ENG |
| CP09-EN-TR4-S-1620 |  | Steps Works shop Shop Drawing Submittal | 6.56d | 2024-10-07 A | 2024-10-14 A | CP09-EN-TR2-S-1890, CP09-PR-HD-A-1100 | 100% | 2024-12-16 | 2024-12-24 | TR04 | MS#02 | ENG |
| CP09-EN-TR4-S-1530 |  | Concrete Exposed Aggregate - Side Walks Shop Drawing Submittal | 6.56d | 2024-10-08 A | 2024-10-13 A | CP09-EN-TR2-S-1800, CP09-PR-HD-A-1000 | 100% | 2024-11-25 | 2024-12-02 | TR04 | MS#02 | ENG |
| CP09-EN-TR4-S-1540 |  | Marble Paving - Side Walks Works Shop Drawing Submittal | 6.56d | 2024-10-08 A | 2024-10-09 A | CP09-EN-TR2-S-1810, CP09-PR-HD-A-1010 | 100% | 2024-10-31 | 2024-11-07 | TR04 | MS#02 | ENG |
| CP09-EN-TR4-S-1550 |  | WPC - Side Walks Works Shop Drawing Submittal | 6.56d | 2024-10-08 A | 2024-10-09 A | CP09-PR-HD-A-1020 | 100% | 2024-11-20 | 2024-11-27 | TR04 | MS#02 | ENG |
| CP09-EN-TR4-S-1560 |  | Gravel - Side Walks Works Shop Drawing Submittal | 6.56d | 2024-10-08 A | 2024-10-09 A | CP09-EN-TR2-S-1830, CP09-PR-HD-A-1030 | 100% | 2024-11-25 | 2024-12-02 | TR04 | MS#02 | ENG |
| CP09-EN-TR4-S-1570 |  | Crushed Stone - Side Walks Works Shop Drawing Submittal | 6.56d | 2024-10-08 A | 2024-10-09 A | CP09-EN-TR2-S-1840, CP09-PR-HD-A-1040 | 100% | 2024-11-25 | 2024-12-02 | TR04 | MS#02 | ENG |
| CP09-EN-TR4-S-1580 |  | Loose Gravel - Side Walks Works Shop Drawing Submittal | 6.56d | 2024-10-08 A | 2024-10-09 A | CP09-EN-TR2-S-1850, CP09-PR-HD-A-1050 | 100% | 2024-11-25 | 2024-12-02 | TR04 | MS#02 | ENG |
| CP09-EN-TR4-S-1590 |  | Clean sand layer - Side Walks Works Shop Drawing Submittal | 7d | 2024-10-08 A | 2024-10-09 A | CP09-EN-TR2-S-1860, CP09-PR-HD-A-1060, CP09-PR-HD-A-1070 | 100% | 2024-11-25 | 2024-12-02 | TR04 | MS#02 | ENG |
| CP09-EN-TR4-S-1630 |  | Seats Works Shop Shop Drawing Submittal | 6.56d | 2024-10-14 A | 2024-10-21 A | CP09-EN-TR2-S-1900, CP09-PR-HD-A-1110 | 100% | 2024-12-16 | 2024-12-24 | TR04 | MS#02 | ENG |
| CP09-EN-TR4-S-1640 |  | Pool Shower Works Shop Drawing Submittal | 6.56d | 2025-08-18 A | 2025-08-22 A | CP09-EN-TR2-S-1910, CP09-PR-HD-A-1120, CP09-PR-HD-A-1130, CP09-PR-HD-A-1140, CP09-PR-HD-A-1150 | 100% | 2025-08-31 | 2025-09-09 | TR04 | MS#02 | ENG |
| CP09-EN-TR4-S-1650 |  | Handrails Works Shop Drawing Submittal | 6.56d | 2025-08-18 A | 2025-08-22 A | CP09-EN-TR2-S-1920, CP09-PR-HD-A-1160, CP09-PR-HD-A-1170 | 100% | 2025-08-31 | 2025-09-09 | TR04 | MS#02 | ENG |
|  | 5 | **Electrical Works** |  | 2025-05-18 | 2025-05-22 |  |  |  |  |  |  |  |
| CP09-EN-TR4-S-1670 |  | Power Cables Shop Drawing Submittal | 6.56d | 2025-05-18 A | 2025-05-22 A | CP09-EN-TR2-S-1940, CP09-PR-EL-A-1060 | 100% | 2025-05-21 | 2025-05-29 | TR04 | MS#02 | ENG |
| CP09-EN-TR4-S-1680 |  | Connecting Pillars Shop Drawing Submittal | 6.56d | 2025-05-18 A | 2025-05-22 A | CP09-EN-TR2-S-1950, CP09-PR-EL-A-1070 | 100% | 2025-06-24 | 2025-07-03 | TR04 | MS#02 | ENG |

| ID | WBS | Activity | Duration | Start | Finish | Predecessors | Complete | Planned start | Planned finish | CP09_Terrace-7 | CP09_Milestone-7 | CP09_Discipline-7 | DES |
| --- | --- | --- | --- | --- | --- | --- | --- | --- | --- | --- | --- | --- | --- |
|  | 6 | **Sinage** |  | 2025-07-06 | 2025-07-10 |  |  |  |  |  |  |  |  |
| CP09-EN-TR4-S-1690 |  | Sinage Shop Drawing Submittal | 6.56d | 2025-07-06 A | 2025-07-10 A | CP09-EN-TR2-S-1960, CP09-PR-SN-A-1000, CP09-PR-SN-A-1010, CP09-PR-SN-A-1020, CP09-PR-SN-A-1030, CP09-PR-SN-A-1040 | 100% | 2024-10-01 | 2024-10-09 | TR04 | MS#02 | ENG |  |
|  | 7 | **Play Field Equipment** |  | 2025-08-18 | 2025-08-22 |  |  |  |  |  |  |  |  |
| CP09-EN-TR4-S-1700 |  | Play Field Equipment Shop Drawing Submittal | 6.56d | 2025-08-18 A | 2025-08-22 A | CP09-EN-TR2-S-1970, CP09-PR-PE-A-1000, CP09-PR-PE-A-1010, CP09-PR-PE-A-1020, CP09-PR-PE-A-1030, CP09-PR-PE-A-1040, CP09-PR-PE-A-1050, CP09-PR-PE-A-1060, CP09-PR-PE-A-1070, CP09-PR-PE-A-1080, CP09-PR-PE-A-1090, CP09-PR-PE-A-1100 | 100% | 2024-10-08 | 2024-10-16 | TR04 | MS#02 | ENG | SO |
|  | 8 | **Irrigation Networks** |  | 2024-05-28 | 2024-10-23 |  |  |  |  |  |  |  |  |
| CP09-EN-TR4-S-1710 |  | Irrigation Networks Layout Shop Drawing Submittal | 6.56d | 2024-05-28 A | 2024-10-23 A | CP09-EN-TR2-S-1980, CP09-PR-IR-A-1000, CP09-PR-IR-A-1010, CP09-PR-IR-A-1020, CP09-PR-IR-A-1030, CP09-PR-IR-A-1040, CP09-PR-IR-A-1050, CP09-PR-IR-A-1060, CP09-PR-IR-A-1070, CP09-PR-IR-A-1080 | 100% | 2024-03-03 | 2024-03-10 | TR04 | MS#02 | ENG |  |
|  | 9 | **Planting** |  | 2024-02-29 | 2024-10-14 |  |  |  |  |  |  |  |  |
| CP09-EN-TR4-S-1720 |  | Plantings Shop Drawing Submittal | 6.56d | 2024-02-29 A | 2024-10-14 A | CP09-EN-TR2-S-1990, CP09-PR-PN-A-1000, CP09-PR-PN-A-1010, CP09-PR-PN-A-1020, CP09-PR-PN-A-1030, CP09-PR-PN-A-1040, CP09-PR-PN-A-1050, CP09-PR-PN-A-1060, CP09-PR-PN-A-1070, CP09-PR-PN-A-1080 | 100% | 2024-04-20 | 2024-04-28 | TR04 | MS#02 | ENG |  |
|  | 10 | **Lighting** |  | 2024-10-07 | 2024-10-20 |  |  |  |  |  |  |  |  |
| CP09-EN-TR4-S-1730 |  | Exterior Lighting for Softlandscape Shop Drawing Submittal | 6.56d | 2024-10-07 A | 2024-10-20 A | CP09-EN-TR2-S-2000, CP09-PR-EL-A-1080, CP09-PR-EL-A-1090, CP09-PR-EL-A-1100, CP09-PR-EL-A-1110, CP09-PR-EL-A-1120, CP09-PR-EL-A-1130 | 100% | 2024-11-16 | 2024-11-24 | TR04 | MS#02 | ENG |  |
|  | 1 | **Shopdrwaings Approval** |  | 2024-08-21 | 2026-01-16 |  |  |  |  |  |  |  |  |
|  | 1 | **Swimming Pool & MR** |  | 2024-08-21 | 2026-01-16 |  |  |  |  |  |  |  |  |
| CP09-EN-TR4-A-1450 |  | Swimmimg Pool & MR Mechnical Works-Shop Drawing Approval | 14d | 2024-08-21 A | 2024-08-27 A | CP09-EN-TR4-S-1450 FF+7d, CP09-EN-TR4-S-1450 SS+7d | 100% | 2024-11-05 | 2024-11-20 | TR04 | MS#02 | ENG |  |
| CP09-EN-TR4-A-1380 |  | Swimmimg Pool & MR Concrete dimension-Shop Drawing Approval | 14d | 2025-07-06 A | 2025-07-10 A | CP09-EN-TR4-S-1380 FF+7d, CP09-EN-TR4-S-1380 SS+7d | 100% | 2025-07-12 | 2025-07-28 | TR04 | MS#02 | ENG |  |
| CP09-EN-TR4-A-1390 |  | Swimmimg Pool & MR Steel reinforcement-Shop Drawing Approval | 14d | 2025-07-06 A | 2025-07-10 A | CP09-EN-TR4-S-1390 FF+7d, CP09-EN-TR4-S-1390 SS+7d | 100% | 2025-07-12 | 2025-07-28 | TR04 | MS#02 | ENG |  |
| CP09-EN-TR4-A-1400 |  | Swimmimg Pool & MR Water Proofing Works-Shop Drawing Approval | 14d | 2025-07-06 A | 2025-07-10 A | CP09-EN-TR4-S-1400 FF+7d, CP09-EN-TR4-S-1400 SS+7d | 100% | 2025-07-12 | 2025-07-28 | TR04 | MS#02 | ENG |  |
| CP09-EN-TR4-A-1420 |  | Swimmimg Pool & MR Granite Works-Shop Drawing Approval | 14d | 2025-08-18 A | 2025-08-22 A | CP09-EN-TR4-S-1420 FF+7d, CP09-EN-TR4-S-1420 SS+7d | 100% | 2025-10-05 | 2025-10-21 | TR04 | MS#02 | ENG |  |
| CP09-EN-TR4-A-1430 |  | Swimmimg Pool & MR Ladders Works-Shop Drawing Approval | 14d | 2025-08-18 A | 2025-08-22 A | CP09-EN-TR4-S-1430 FF+7d, CP09-EN-TR4-S-1430 SS+7d | 100% | 2025-10-05 | 2025-10-21 | TR04 | MS#02 | ENG |  |
| CP09-EN-TR4-A-1440 |  | Swimmimg Pool & MR Handrial Works-Shop Drawing Approval | 14d | 2025-08-18 A | 2025-08-22 A | CP09-EN-TR4-S-1440 FF+7d, CP09-EN-TR4-S-1440 SS+7d | 100% | 2025-10-05 | 2025-10-21 | TR04 | MS#02 | ENG |  |
| CP09-EN-TR4-A-1410 |  | Swimmimg Pool & MR Mosaics Works-Shop Drawing Approval | 14d | 2026-01-12 A | 2026-01-16 A | CP09-EN-TR4-S-1410 FF+7d, CP09-EN-TR4-S-1410 SS+7d | 100% | 2025-09-18 | 2025-10-04 | TR04 | MS#02 | ENG |  |
| CP09-EN-TR4-A-1460 |  | Swimmimg Pool & MR Electrical Works-Shop Drawing Approval | 14d | 2026-01-12 A | 2026-01-16 A | CP09-EN-TR4-S-1460 FF+7d, CP09-EN-TR4-S-1460 SS+7d | 100% | 2025-08-24 | 2025-09-09 | TR04 | MS#02 | ENG |  |
| CP09-EN-TR4-A-1740 |  | Swimmimg Pool & MR Fininshes shop drawing Approval | 14d | 2026-01-12 A | 2026-01-16 A | CP09-EN-TR4-S-1740 FF+7d, CP09-EN-TR4-S-1740 SS+7d | 100% | 2025-09-27 | 2025-10-13 | TR04 | MS#02 | ENG |  |
|  | 2 | **Earth Work** |  | 2025-07-06 | 2025-07-10 |  |  |  |  |  |  |  |  |
| CP09-EN-TR4-A-1470 |  | Sub Garde Shopdrwaings-Shop Drawing Approval | 14d | 2025-07-06 A | 2025-07-10 A | CP09-EN-TR4-S-1470 FF+4d, CP09-EN-TR4-S-1470 SS+4d | 100% | 2025-07-12 | 2025-07-28 | TR04 | MS#02 | ENG |  |

| ID | WBS | Activity | Duration | Start | Finish | Predecessors | Complete | Planned start | Planned finish | CP09_Terrace-7 | CP09_Milestone-7 | CP09_Discipline-7 |
| --- | --- | --- | --- | --- | --- | --- | --- | --- | --- | --- | --- | --- |
|  | 3 | **Cheek & Retaning Wall** |  | 2024-10-21 | 2024-11-19 |  |  |  |  |  |  |  |
| CP09-EN-TR4-A-1500 |  | Cheek & Retaning Wall Water Proofing Works-Shop Drawing Approval | 14d | 2024-10-21 A | 2024-10-27 A | CP09-EN-TR4-S-1500 FF+7d, CP09-EN-TR4-S-1500 SS+7d | 100% | 2024-12-28 | 2025-01-14 | TR04 | MS#02 | ENG |
| CP09-EN-TR4-A-1510 |  | Cheek & Retaning Wall Masonary Works-Shop Drawing Approval | 14d | 2024-10-21 A | 2024-10-27 A | CP09-EN-TR4-S-1510 FF+7d, CP09-EN-TR4-S-1510 SS+7d | 100% | 2025-01-04 | 2025-01-21 | TR04 | MS#02 | ENG |
| CP09-EN-TR4-A-1520 |  | Cheek & Retaning Wall Marble Works-Shop Drawing Approval | 14d | 2024-10-21 A | 2024-10-27 A | CP09-EN-TR4-S-1520 FF+7d, CP09-EN-TR4-S-1520 SS+7d | 100% | 2025-01-13 | 2025-01-30 | TR04 | MS#02 | ENG |
| CP09-EN-TR4-A-1480 |  | Cheek & Retaning Wall Concrete dimension-ShopDrawing Approval | 14d | 2024-10-27 A | 2024-11-19 A | CP09-EN-TR4-S-1480 FF+7d, CP09-EN-TR4-S-1480 SS+7d | 100% | 2024-12-12 | 2024-12-28 | TR04 | MS#02 | ENG |
| CP09-EN-TR4-A-1490 |  | Cheek & Retaning Wall Steel reinforcement-Shop Drawing Approval | 14d | 2024-10-27 A | 2024-11-19 A | CP09-EN-TR4-S-1490 FF+7d, CP09-EN-TR4-S-1490 SS+7d | 100% | 2024-12-19 | 2025-01-05 | TR04 | MS#02 | ENG |
|  | 4 | **Hardscape Works** |  | 2024-08-26 | 2025-08-22 |  |  |  |  |  |  |  |
| CP09-EN-TR4-A-1600 |  | Flush Curb Works-Shop Drawing Approval | 14d | 2024-08-26 A | 2024-08-26 A | CP09-EN-TR4-S-1600 FF+7d, CP09-EN-TR4-S-1600 SS+7d | 100% | 2024-11-04 | 2024-11-19 | TR04 | MS#02 | ENG |
| CP09-EN-TR4-A-1610 |  | Interlocking Paving Works-Shop Drawing Approval | 14d | 2024-08-26 A | 2024-08-26 A | CP09-EN-TR4-S-1610 FF+7d, CP09-EN-TR4-S-1610 SS+7d | 100% | 2024-11-28 | 2024-12-14 | TR04 | MS#02 | ENG |
| CP09-EN-TR4-A-1540 |  | Marble Paving - Side Walks Works-Shop Drawing Approval | 14d | 2024-10-09 A | 2024-10-14 A | CP09-EN-TR4-S-1540 FF+7d, CP09-EN-TR4-S-1540 SS+7d | 100% | 2024-11-09 | 2024-11-24 | TR04 | MS#02 | ENG |
| CP09-EN-TR4-A-1550 |  | WPC - Side Walks Works -Shop Drawing Approval | 14d | 2024-10-09 A | 2024-10-14 A | CP09-EN-TR4-S-1550 FF+7d, CP09-EN-TR4-S-1550 SS+7d | 100% | 2024-11-28 | 2024-12-14 | TR04 | MS#02 | ENG |
| CP09-EN-TR4-A-1560 |  | Gravel - Side Walks Works-Shop Drawing Approval | 14d | 2024-10-09 A | 2024-10-14 A | CP09-EN-TR4-S-1560 FF+7d, CP09-EN-TR4-S-1560 SS+7d | 100% | 2024-12-03 | 2024-12-18 | TR04 | MS#02 | ENG |
| CP09-EN-TR4-A-1570 |  | Crushed Stone - Side Walks Works-Shop Drawing Approval | 14d | 2024-10-09 A | 2024-10-14 A | CP09-EN-TR4-S-1570 FF+7d, CP09-EN-TR4-S-1570 SS+7d | 100% | 2024-12-03 | 2024-12-18 | TR04 | MS#02 | ENG |
| CP09-EN-TR4-A-1580 |  | Loose Gravel - Side Walks Works-Shop Drawing Approval | 14d | 2024-10-09 A | 2024-10-14 A | CP09-EN-TR4-S-1580 FF+7d, CP09-EN-TR4-S-1580 SS+7d | 100% | 2024-12-03 | 2024-12-18 | TR04 | MS#02 | ENG |
| CP09-EN-TR4-A-1590 |  | Clean sand layer - Side Walks Works-Shop Drawing Approval | 14d | 2024-10-09 A | 2024-10-14 A | CP09-EN-TR4-S-1590 FF+7d, CP09-EN-TR4-S-1590 SS+7d | 100% | 2024-12-03 | 2024-12-18 | TR04 | MS#02 | ENG |
| CP09-EN-TR4-A-1530 |  | Concrete Exposed Aggregate - Side Walks-Shop Drawing Approval | 14d | 2024-10-13 A | 2024-10-17 A | CP09-EN-TR4-S-1530 FF+7d, CP09-EN-TR4-S-1530 SS+7d | 100% | 2024-12-03 | 2024-12-18 | TR04 | MS#02 | ENG |
| CP09-EN-TR4-A-1620 |  | Steps Works-Shop Drawing Approval | 14d | 2024-10-14 A | 2024-10-29 A | CP09-EN-TR4-S-1620 FF+7d, CP09-EN-TR4-S-1620 SS+7d | 100% | 2024-12-24 | 2025-01-11 | TR04 | MS#02 | ENG |
| CP09-EN-TR4-A-1630 |  | Seats Works-Shop Drawing Approval | 14d | 2024-10-21 A | 2024-10-27 A | CP09-EN-TR4-S-1630 FF+7d, CP09-EN-TR4-S-1630 SS+7d | 100% | 2024-12-24 | 2025-01-11 | TR04 | MS#02 | ENG |
| CP09-EN-TR4-A-1640 |  | Pool Shower Works-Shop Drawing Approval | 14d | 2025-08-18 A | 2025-08-22 A | CP09-EN-TR4-S-1640 FF+7d, CP09-EN-TR4-S-1640 SS+7d | 100% | 2025-09-09 | 2025-09-25 | TR04 | MS#02 | ENG |
| CP09-EN-TR4-A-1650 |  | Handrails Works-Shop Drawing Approval | 14d | 2025-08-18 A | 2025-08-22 A | CP09-EN-TR4-S-1650 FF+7d, CP09-EN-TR4-S-1650 FS+7d | 100% | 2025-09-17 | 2025-10-04 | TR04 | MS#02 | ENG |
| CP09-EN-TR4-A-1660 |  | Landscape Furntiure-Shop Drawing Approval | 14d | 2025-08-18 A | 2025-08-22 A | CP09-EN-TR4-S-1660 FF+7d, CP09-EN-TR4-S-1660 SS+7d | 100% | 2025-08-24 | 2025-09-09 | TR04 | MS#02 | ENG |
|  | 5 | **Electrical Works** |  | 2025-05-18 | 2025-05-22 |  |  |  |  |  |  |  |
| CP09-EN-TR4-A-1670 |  | Power Cables-Shop Drawing Approval | 14d | 2025-05-18 A | 2025-05-22 A | CP09-EN-TR4-S-1670 FF+7d, CP09-EN-TR4-S-1670 SS+7d | 100% | 2025-05-29 | 2025-06-24 | TR04 | MS#02 | ENG |
| CP09-EN-TR4-A-1680 |  | Connecting Pillars-Shop Drawing Approval | 14d | 2025-05-18 A | 2025-05-22 A | CP09-EN-TR4-S-1680 FF+7d, CP09-EN-TR4-S-1680 SS+7d | 100% | 2025-07-03 | 2025-07-20 | TR04 | MS#02 | ENG |

| ID | WBS | Activity | Duration | Start | Finish | Predecessors | Complete | Planned start | Planned finish | CP09_Terrace-7 | CP09_Milestone-7 | CP09_Discipline-7 | DES |
| --- | --- | --- | --- | --- | --- | --- | --- | --- | --- | --- | --- | --- | --- |
|  | 6 | **Sinage** |  | 2025-07-06 | 2025-07-10 |  |  |  |  |  |  |  |  |
| CP09-EN-TR4-A-1690 |  | Sinage-Shop Drawing Approval | 14d | 2025-07-06 A | 2025-07-10 A | CP09-EN-TR4-S-1690 FF+7d, CP09-EN-TR4-S-1690 SS+7d | 100% | 2025-07-12 | 2025-07-28 | TR04 | MS#02 | ENG |  |
|  | 7 | **Play Field Equipment** |  | 2025-08-18 | 2025-08-22 |  |  |  |  |  |  |  |  |
| CP09-EN-TR4-A-1700 |  | Play Field Equipment-Shop Drawing Approval | 14d | 2025-08-18 A | 2025-08-22 A | CP09-EN-TR4-S-1700 FF+7d, CP09-EN-TR4-S-1700 FS+7d | 100% | 2025-09-06 | 2025-09-22 | TR04 | MS#02 | ENG | SO |
|  | 8 | **Irrigation Networks** |  | 2024-10-23 | 2024-10-29 |  |  |  |  |  |  |  |  |
| CP09-EN-TR4-A-1710 |  | Irrigation Networks Layout -Shop Drawing Approval | 14d | 2024-10-23 A | 2024-10-29 A | CP09-EN-TR4-S-1710 FF+7d, CP09-EN-TR4-S-1710 SS+7d | 100% | 2025-01-26 | 2025-02-10 | TR04 | MS#02 | ENG |  |
|  | 9 | **Planting** |  | 2024-10-14 | 2024-10-16 |  |  |  |  |  |  |  |  |
| CP09-EN-TR4-A-1720 |  | Plantings -Shop Drawing Approval | 14d | 2024-10-14 A | 2024-10-16 A | CP09-EN-TR4-S-1720 FF+7d, CP09-EN-TR4-S-1720 SS+7d | 100% | 2024-12-02 | 2024-12-17 | TR04 | MS#02 | ENG |  |
|  | 10 | **Lighting** |  | 2024-10-20 | 2024-10-22 |  |  |  |  |  |  |  |  |
| CP09-EN-TR4-A-1730 |  | Exterior Lighting for Softlandscape-Shop Drawing Approval | 14d | 2024-10-20 A | 2024-10-22 A | CP09-EN-TR4-S-1730 FF+7d, CP09-EN-TR4-S-1730 SS+7d | 100% | 2024-11-24 | 2024-12-10 | TR04 | MS#02 | ENG |  |
|  | 2 | **Terrace # 05** |  | 2024-04-21 | 2026-01-16 |  |  |  |  |  |  |  |  |
|  | 2 | **Shopdrwaings Submittal** |  | 2024-04-21 | 2026-01-16 |  |  |  |  |  |  |  |  |
|  | 1 | **Swimming Pool & MR** |  | 2024-08-03 | 2026-01-16 |  |  |  |  |  |  |  |  |
| CP09-EN-TR5-S-1750 |  | Swimmimg Pool & MR Concrete dimension shop drawing Submittal | 7d | 2024-08-03 A | 2024-08-03 A | CP09-CLD-1010 | 100% | 2024-09-16 | 2024-09-23 | TR05 | MS#03 | ENG |  |
| CP09-EN-TR5-S-1770 |  | Swimmimg Pool & MR Water Proofing Worksshop drawing Submittal | 7d | 2024-08-03 A | 2024-08-03 A | CP09-EN-TR3-S-1020, CP09-PR-CV-A-1010 | 100% | 2024-10-27 | 2024-11-03 | TR05 | MS#03 | ENG |  |
| CP09-EN-TR5-S-1820 |  | Swimmimg Pool & MR Mechnical Works shop drawing Submittal | 7d | 2024-09-04 A | 2024-09-04 A | CP09-EN-TR3-S-1080, CP09-PR-ME-A-1000, CP09-PR-ME-A-1010, CP09-PR-ME-A-1020, CP09-PR-ME-A-1030, CP09-PR-ME-A-1040, CP09-PR-ME-A-1050, CP09-PR-ME-A-1060, CP09-PR-ME-A-1070, CP09-PR-ME-A-1080 | 100% | 2024-10-28 | 2024-11-04 | TR05 | MS#03 | ENG |  |
| CP09-EN-TR5-S-1830 |  | Swimmimg Pool & MR Electrical Works shop drawing Submittal | 7d | 2024-09-04 A | 2026-01-16 A | CP09-EN-TR3-S-1090, CP09-PR-EL-A-1000, CP09-PR-EL-A-1010, CP09-PR-EL-A-1020, CP09-PR-EL-A-1030, CP09-PR-EL-A-1040, CP09-PR-EL-A-1050, CP09-PR-EL-A-1140 | 100% | 2024-12-07 | 2024-12-14 | TR05 | MS#03 | ENG |  |
| CP09-EN-TR5-S-1760 |  | Swimmimg Pool & MR Steel reinforcement shop drawing Submittal | 7d | 2025-07-06 A | 2025-07-10 A | CP09-EN-TR5-S-1750 | 100% | 2025-07-12 | 2025-07-19 | TR05 | MS#03 | ENG |  |
| CP09-EN-TR5-S-1790 |  | Swimmimg Pool & MR Granite Works shop drawing Submittal | 7d | 2025-08-18 A | 2025-08-22 A | CP09-EN-TR3-S-1050, CP09-PR-CV-A-1040 | 100% | 2025-09-27 | 2025-10-04 | TR05 | MS#03 | ENG |  |
| CP09-EN-TR5-S-1800 |  | Swimmimg Pool & MR Ladders Works shop drawing Submittal | 7d | 2025-08-18 A | 2025-08-22 A | CP09-EN-TR3-S-1060, CP09-PR-CV-A-1050 | 100% | 2025-10-05 | 2025-10-13 | TR05 | MS#03 | ENG |  |
| CP09-EN-TR5-S-1810 |  | Swimmimg Pool & MR Handrial Works shop drawing Submittal | 7d | 2025-08-18 A | 2025-08-22 A | CP09-EN-TR3-S-1070, CP09-PR-CV-A-1060 | 100% | 2025-10-05 | 2025-10-13 | TR05 | MS#03 | ENG |  |
| CP09-EN-TR5-S-1780 |  | Swimmimg Pool & MR Mosaics Works shop drawing Submittal | 7d | 2026-01-12 A | 2026-01-16 A | CP09-EN-TR3-S-1040, CP09-PR-CV-A-1030 | 100% | 2025-09-18 | 2025-09-25 | TR05 | MS#03 | ENG |  |
| CP09-EN-TR5-S-2110 |  | Swimmimg Pool & MR Fininshes shop drawing Submittal | 7d | 2026-01-12 A | 2026-01-16 A | CP09-EN-TR3-S-1370, CP09-PR-CV-A-1070, CP09-PR-CV-A-1080, CP09-PR-CV-A-1110 | 100% | 2025-09-27 | 2025-10-04 | TR05 | MS#03 | ENG |  |
|  | 2 | **Earth Work** |  | 2025-07-06 | 2025-07-10 |  |  |  |  |  |  |  |  |
| CP09-EN-TR5-S-1840 |  | Sub Garde shop drawing Submittal | 3d | 2025-07-06 A | 2025-07-10 A | CP09-EN-TR3-S-1100, CP09-CLD-1010 | 100% | 2025-07-14 | 2025-07-16 | TR05 | MS#03 | ENG |  |

| ID | WBS | Activity | Duration | Start | Finish | Predecessors | Complete | Planned start | Planned finish | CP09_Terrace-7 | CP09_Milestone-7 | CP09_Discipline-7 |
| --- | --- | --- | --- | --- | --- | --- | --- | --- | --- | --- | --- | --- |
|  | 3 | **Cheek & Retaning Wall** |  | 2024-10-27 | 2025-08-22 |  |  |  |  |  |  |  |
| CP09-EN-TR5-S-1880 |  | Cheek & Retaning Wall Masonary Works shop drawing Submittal | 6.56d | 2024-10-27 A | 2025-05-22 A | CP09-EN-TR3-S-1140, CP09-PR-CV-A-1020 | 100% | 2025-01-04 | 2025-01-12 | TR05 | MS#03 | ENG |
| CP09-EN-TR5-S-1890 |  | Cheek & Retaning Wall Marble Works shop drawing Submittal | 6.56d | 2024-10-27 A | 2025-05-22 A | CP09-EN-TR3-S-1150, CP09-PR-CV-A-1120 | 100% | 2025-01-12 | 2025-01-20 | TR05 | MS#03 | ENG |
| CP09-EN-TR5-S-1850 |  | Cheek & Retaning Wall Concrete dimension shop drawing Submittal | 6.56d | 2025-08-18 A | 2025-08-22 A | CP09-EN-TR3-S-1110, CP09-PR-CV-A-1000 | 100% | 2025-08-24 | 2025-08-31 | TR05 | MS#03 | ENG |
| CP09-EN-TR5-S-1860 |  | Cheek & Retaning Wall Steel reinforcement shop drawing Submittal | 6.56d | 2025-08-18 A | 2025-08-22 A | CP09-EN-TR3-S-1120, CP09-PR-CV-A-1130 | 100% | 2025-08-24 | 2025-08-31 | TR05 | MS#03 | ENG |
| CP09-EN-TR5-S-1870 |  | Cheek & Retaning Wall Water Proofing Works shop drawing Submittal | 6.56d | 2025-08-18 A | 2025-08-22 A | CP09-EN-TR3-S-1130, CP09-PR-CV-A-1010 | 100% | 2024-12-26 | 2025-01-04 | TR05 | MS#03 | ENG |
|  | 4 | **Hardscape Works** |  | 2024-08-21 | 2025-08-22 |  |  |  |  |  |  |  |
| CP09-EN-TR5-S-1970 |  | Flush Curb Works Shop Drawing Submittal | 6.56d | 2024-08-21 A | 2024-08-26 A | CP09-EN-TR3-S-1230, CP09-PR-HD-A-1080 | 100% | 2024-11-11 | 2024-11-19 | TR05 | MS#03 | ENG |
| CP09-EN-TR5-S-1980 |  | Interlocking Paving Works Shop Drawing Submittal | 6.56d | 2024-08-21 A | 2024-08-26 A | CP09-EN-TR3-S-1240, CP09-PR-HD-A-1090, CP09-PR-HD-A-1180 | 100% | 2024-11-27 | 2024-12-05 | TR05 | MS#03 | ENG |
| CP09-EN-TR5-S-1910 |  | Marble Paving - Side Walks Works Shop Drawing Submittal | 6.56d | 2024-10-16 A | 2025-05-22 A | CP09-EN-TR3-S-1170, CP09-PR-HD-A-1010 | 100% | 2024-11-07 | 2024-11-16 | TR05 | MS#03 | ENG |
| CP09-EN-TR5-S-1920 |  | WPC - Side Walks Works Shop Drawing Submittal | 6.56d | 2024-10-16 A | 2025-05-22 A | CP09-EN-TR3-S-1180, CP09-PR-HD-A-1020 | 100% | 2024-11-27 | 2024-12-05 | TR05 | MS#03 | ENG |
| CP09-EN-TR5-S-1930 |  | Gravel - Side Walks Works Shop Drawing Submittal | 6.56d | 2024-10-16 A | 2025-05-22 A | CP09-EN-TR3-S-1190, CP09-PR-HD-A-1030 | 100% | 2024-12-02 | 2024-12-10 | TR05 | MS#03 | ENG |
| CP09-EN-TR5-S-1940 |  | Crushed Stone - Side Walks Works Shop Drawing Submittal | 6.56d | 2024-10-16 A | 2025-05-22 A | CP09-EN-TR3-S-1200, CP09-PR-HD-A-1040 | 100% | 2024-12-02 | 2024-12-10 | TR05 | MS#03 | ENG |
| CP09-EN-TR5-S-1950 |  | Loose Gravel - Side Walks Works Shop Drawing Submittal | 6.56d | 2024-10-16 A | 2025-05-22 A | CP09-EN-TR3-S-1210, CP09-PR-HD-A-1050 | 100% | 2024-12-02 | 2024-12-10 | TR05 | MS#03 | ENG |
| CP09-EN-TR5-S-1960 |  | Clean sand layer - Side Walks Works Shop Drawing Submittal | 7d | 2024-10-16 A | 2025-05-22 A | CP09-EN-TR3-S-1220, CP09-PR-HD-A-1060, CP09-PR-HD-A-1070 | 100% | 2024-12-03 | 2024-12-10 | TR05 | MS#03 | ENG |
| CP09-EN-TR5-S-1990 |  | Steps Works shop Shop Drawing Submittal | 6.56d | 2024-10-21 A | 2024-10-28 A | CP09-EN-TR3-S-1250, CP09-PR-HD-A-1100 | 100% | 2024-12-16 | 2024-12-24 | TR05 | MS#03 | ENG |
| CP09-EN-TR5-S-1900 |  | Concrete Exposed Aggregate - Side Walks Shop Drawing Submittal | 6.56d | 2025-05-18 A | 2025-05-22 A | CP09-EN-TR3-S-1160, CP09-PR-HD-A-1000 | 100% | 2025-06-21 | 2025-06-29 | TR05 | MS#03 | ENG |
| CP09-EN-TR5-S-2000 |  | Seats Works Shop Shop Drawing Submittal | 6.56d | 2025-08-18 A | 2025-08-22 A | CP09-EN-TR3-S-1260, CP09-PR-HD-A-1110 | 100% | 2025-08-24 | 2025-08-31 | TR05 | MS#03 | ENG |
| CP09-EN-TR5-S-2010 |  | Pool Shower Works Shop Drawing Submittal | 6.56d | 2025-08-18 A | 2025-08-22 A | CP09-EN-TR3-S-1270, CP09-PR-HD-A-1120, CP09-PR-HD-A-1130, CP09-PR-HD-A-1140, CP09-PR-HD-A-1150 | 100% | 2025-09-09 | 2025-09-16 | TR05 | MS#03 | ENG |
| CP09-EN-TR5-S-2020 |  | Handrails Works Shop Drawing Submittal | 6.56d | 2025-08-18 A | 2025-08-22 A | CP09-EN-TR3-S-1280, CP09-PR-HD-A-1160, CP09-PR-HD-A-1170 | 100% | 2025-09-09 | 2025-09-16 | TR05 | MS#03 | ENG |
| CP09-EN-TR5-S-2030 |  | Landscape Furntiure Shop Drawing Submittal | 6.56d | 2025-08-18 A | 2025-08-22 A | CP09-EN-TR3-S-1290, CP09-PR-FN-A-1000, CP09-PR-FN-A-1010, CP09-PR-FN-A-1020, CP09-PR-FN-A-1030, CP09-PR-FN-A-1040, CP09-PR-FN-A-1050, CP09-PR-FN-A-1060, CP09-PR-FN-A-1070, CP09-PR-FN-A-1080 | 100% | 2024-10-20 | 2024-10-27 | TR05 | MS#03 | ENG |
|  | 5 | **Electrical Works** |  | 2025-05-18 | 2025-05-22 |  |  |  |  |  |  |  |
| CP09-EN-TR5-S-2040 |  | Power Cables Shop Drawing Submittal | 6.56d | 2025-05-18 A | 2025-05-22 A | CP09-EN-TR3-S-1300, CP09-PR-EL-A-1060 | 100% | 2025-05-25 | 2025-06-02 | TR05 | MS#03 | ENG |
| CP09-EN-TR5-S-2050 |  | Connecting Pillars Shop Drawing Submittal | 6.56d | 2025-05-18 A | 2025-05-22 A | CP09-EN-TR3-S-1310, CP09-PR-EL-A-1070 | 100% | 2025-06-29 | 2025-07-07 | TR05 | MS#03 | ENG |

| ID | WBS | Activity | Duration | Start | Finish | Predecessors | Complete | Planned start | Planned finish | CP09_Terrace-7 | CP09_Milestone-7 | CP09_Discipline-7 | DES |
| --- | --- | --- | --- | --- | --- | --- | --- | --- | --- | --- | --- | --- | --- |
|  | 6 | **Sinage** |  | 2025-07-06 | 2025-07-10 |  |  |  |  |  |  |  |  |
| CP09-EN-TR5-S-2060 |  | Sinage Shop Drawing Submittal | 6.56d | 2025-07-06 A | 2025-07-10 A | CP09-EN-TR3-S-1320, CP09-PR-SN-A-1000, CP09-PR-SN-A-1010, CP09-PR-SN-A-1020, CP09-PR-SN-A-1030, CP09-PR-SN-A-1040 | 100% | 2024-10-09 | 2024-10-17 | TR05 | MS#03 | ENG |  |
|  | 7 | **Play Field Equipment** |  | 2025-08-18 | 2025-08-22 |  |  |  |  |  |  |  |  |
| CP09-EN-TR5-S-2070 |  | Play Field Equipment Shop Drawing Submittal | 6.56d | 2025-08-18 A | 2025-08-22 A | CP09-EN-TR3-S-1330, CP09-PR-PE-A-1000, CP09-PR-PE-A-1010, CP09-PR-PE-A-1020, CP09-PR-PE-A-1030, CP09-PR-PE-A-1040, CP09-PR-PE-A-1050, CP09-PR-PE-A-1060, CP09-PR-PE-A-1070, CP09-PR-PE-A-1080, CP09-PR-PE-A-1090, CP09-PR-PE-A-1100 | 100% | 2024-10-16 | 2024-10-23 | TR05 | MS#03 | ENG | SO |
|  | 8 | **Irrigation Networks** |  | 2024-04-21 | 2025-05-22 |  |  |  |  |  |  |  |  |
| CP09-EN-TR5-S-2080 |  | Irrigation Networks Layout Shop Drawing Submittal | 6.56d | 2024-04-21 A | 2025-05-22 A | CP09-EN-TR3-S-1340, CP09-PR-IR-A-1000, CP09-PR-IR-A-1010, CP09-PR-IR-A-1020, CP09-PR-IR-A-1030, CP09-PR-IR-A-1040, CP09-PR-IR-A-1050, CP09-PR-IR-A-1060, CP09-PR-IR-A-1070, CP09-PR-IR-A-1080 | 100% | 2024-10-29 | 2024-11-06 | TR05 | MS#03 | ENG |  |
|  | 9 | **Planting** |  | 2024-04-21 | 2024-11-30 |  |  |  |  |  |  |  |  |
| CP09-EN-TR5-S-2090 |  | Plantings Shop Drawing Submittal | 6.56d | 2024-04-21 A | 2024-11-30 A | CP09-EN-TR3-S-1350, CP09-EN-TR5-S-2080, CP09-PR-PN-A-1000, CP09-PR-PN-A-1010, CP09-PR-PN-A-1020, CP09-PR-PN-A-1030, CP09-PR-PN-A-1040, CP09-PR-PN-A-1050, CP09-PR-PN-A-1060, CP09-PR-PN-A-1070, CP09-PR-PN-A-1080 | 100% | 2024-04-28 | 2024-05-07 | TR05 | MS#03 | ENG |  |
|  | 10 | **Lighting** |  | 2024-10-10 | 2024-10-19 |  |  |  |  |  |  |  |  |
| CP09-EN-TR5-S-2100 |  | Exterior Lighting for Softlandscape Shop Drawing Submittal | 6.56d | 2024-10-10 A | 2024-10-19 A | CP09-EN-TR3-S-1360, CP09-EN-TR5-S-2090, CP09-PR-EL-A-1080, CP09-PR-EL-A-1090, CP09-PR-EL-A-1100, CP09-PR-EL-A-1110, CP09-PR-EL-A-1120, CP09-PR-EL-A-1130 | 100% | 2024-12-17 | 2024-12-24 | TR05 | MS#03 | ENG |  |
|  | 1 | **Shopdrwaings Approval** |  | 2024-08-03 | 2026-01-16 |  |  |  |  |  |  |  |  |
|  | 1 | **Swimming Pool & MR** |  | 2024-08-03 | 2026-01-16 |  |  |  |  |  |  |  |  |
| CP09-EN-TR5-A-1750 |  | Swimmimg Pool & MR Concrete dimension-Shop Drawing Approval | 14d | 2024-08-03 A | 2024-08-14 A | CP09-EN-TR5-S-1750 FF+7d, CP09-EN-TR5-S-1750 SS+7d | 100% | 2024-09-24 | 2024-10-10 | TR05 | MS#03 | ENG |  |
| CP09-EN-TR5-A-1820 |  | Swimmimg Pool & MR Mechnical Works-Shop Drawing Approval | 14d | 2024-09-04 A | 2024-09-05 A | CP09-EN-TR5-S-1820 FF+7d, CP09-EN-TR5-S-1820 SS+7d | 100% | 2024-11-05 | 2024-11-20 | TR05 | MS#03 | ENG |  |
| CP09-EN-TR5-A-1760 |  | Swimmimg Pool & MR Steel reinforcement-Shop Drawing Approval | 14d | 2025-07-06 A | 2025-07-10 A | CP09-EN-TR5-S-1760 FF+7d, CP09-EN-TR5-S-1760 SS+7d | 100% | 2025-07-20 | 2025-08-05 | TR05 | MS#03 | ENG |  |
| CP09-EN-TR5-A-1790 |  | Swimmimg Pool & MR Granite Works-Shop Drawing Approval | 14d | 2025-08-18 A | 2025-08-22 A | CP09-EN-TR5-S-1790 FF+7d, CP09-EN-TR5-S-1790 SS+7d | 100% | 2025-10-05 | 2025-10-21 | TR05 | MS#03 | ENG |  |
| CP09-EN-TR5-A-1800 |  | Swimmimg Pool & MR Ladders Works-Shop Drawing Approval | 14d | 2025-08-18 A | 2025-08-22 A | CP09-EN-TR5-S-1800 FF+7d, CP09-EN-TR5-S-1800 SS+7d | 100% | 2025-10-14 | 2025-10-29 | TR05 | MS#03 | ENG |  |
| CP09-EN-TR5-A-1810 |  | Swimmimg Pool & MR Handrial Works-Shop Drawing Approval | 14d | 2025-08-18 A | 2025-08-22 A | CP09-EN-TR5-S-1810 FF+7d, CP09-EN-TR5-S-1810 SS+7d | 100% | 2025-10-14 | 2025-10-29 | TR05 | MS#03 | ENG |  |
| CP09-EN-TR5-A-1770 |  | Swimmimg Pool & MR Water Proofing Works-Shop Drawing Approval | 14d | 2026-01-12 A | 2026-01-16 A | CP09-EN-TR5-S-1770 FF+7d, CP09-EN-TR5-S-1770 SS+7d | 100% | 2025-08-24 | 2025-09-09 | TR05 | MS#03 | ENG |  |
| CP09-EN-TR5-A-1780 |  | Swimmimg Pool & MR Mosaics Works-Shop Drawing Approval | 14d | 2026-01-12 A | 2026-01-16 A | CP09-EN-TR5-S-1780 FF+7d, CP09-EN-TR5-S-1780 SS+7d | 100% | 2025-09-27 | 2025-10-13 | TR05 | MS#03 | ENG |  |
| CP09-EN-TR5-A-1830 |  | Swimmimg Pool & MR Electrical Works-Shop Drawing Approval | 14d | 2026-01-12 A | 2026-01-16 A | CP09-EN-TR5-S-1830 FF+7d, CP09-EN-TR5-S-1830 SS+7d | 100% | 2025-08-24 | 2025-09-09 | TR05 | MS#03 | ENG |  |
| CP09-EN-TR5-A-2110 |  | Swimmimg Pool & MR Fininshes shop drawing Approval | 14d | 2026-01-12 A | 2026-01-16 A | CP09-EN-TR5-S-2110 FF+7d, CP09-EN-TR5-S-2110 SS+7d | 100% | 2025-10-05 | 2025-10-21 | TR05 | MS#03 | ENG |  |
|  | 2 | **Earth Work** |  | 2025-07-06 | 2025-07-10 |  |  |  |  |  |  |  |  |
| CP09-EN-TR5-A-1840 |  | Sub Garde Shopdrwaings-Shop Drawing Approval | 14d | 2025-07-06 A | 2025-07-10 A | CP09-EN-TR5-S-1840 FF+7d, CP09-EN-TR5-S-1840 SS+7d | 100% | 2025-07-22 | 2025-08-07 | TR05 | MS#03 | ENG |  |

| ID | WBS | Activity | Duration | Start | Finish | Predecessors | Complete | Planned start | Planned finish | CP09_Terrace-7 | CP09_Milestone-7 | CP09_Discipline-7 |
| --- | --- | --- | --- | --- | --- | --- | --- | --- | --- | --- | --- | --- |
|  | 3 | **Cheek & Retaning Wall** |  | 2025-08-18 | 2025-08-22 |  |  |  |  |  |  |  |
| CP09-EN-TR5-A-1850 |  | Cheek & Retaning Wall Concrete dimension-ShopDrawing Approval | 14d | 2025-08-18 A | 2025-08-22 A | CP09-EN-TR5-S-1850 FF+7d, CP09-EN-TR5-S-1850 SS+7d | 100% | 2025-09-01 | 2025-09-17 | TR05 | MS#03 | ENG |
| CP09-EN-TR5-A-1860 |  | Cheek & Retaning Wall Steel reinforcement-Shop Drawing Approval | 14d | 2025-08-18 A | 2025-08-22 A | CP09-EN-TR5-S-1860 FF+7d, CP09-EN-TR5-S-1860 SS+7d | 100% | 2025-09-01 | 2025-09-17 | TR05 | MS#03 | ENG |
| CP09-EN-TR5-A-1870 |  | Cheek & Retaning Wall Water Proofing Works-Shop Drawing Approval | 14d | 2025-08-18 A | 2025-08-22 A | CP09-EN-TR5-S-1870 FF+7d, CP09-EN-TR5-S-1870 SS+7d | 100% | 2025-08-24 | 2025-09-09 | TR05 | MS#03 | ENG |
| CP09-EN-TR5-A-1880 |  | Cheek & Retaning Wall Masonary Works-Shop Drawing Approval | 14d | 2025-08-18 A | 2025-08-22 A | CP09-EN-TR5-S-1880 FF+7d, CP09-EN-TR5-S-1880 SS+7d | 100% | 2025-08-24 | 2025-09-09 | TR05 | MS#03 | ENG |
| CP09-EN-TR5-A-1890 |  | Cheek & Retaning Wall Marble Works-Shop Drawing Approval | 14d | 2025-08-18 A | 2025-08-22 A | CP09-EN-TR5-S-1890 FF+7d, CP09-EN-TR5-S-1890 SS+7d | 100% | 2025-08-24 | 2025-09-09 | TR05 | MS#03 | ENG |
|  | 4 | **Hardscape Works** |  | 2024-08-21 | 2025-08-22 |  |  |  |  |  |  |  |
| CP09-EN-TR5-A-1970 |  | Flush Curb Works-Shop Drawing Approval | 14d | 2024-08-21 A | 2024-08-26 A | CP09-EN-TR5-S-1970 FF+7d, CP09-EN-TR5-S-1970 SS+7d | 100% | 2024-11-19 | 2024-12-05 | TR05 | MS#03 | ENG |
| CP09-EN-TR5-A-1980 |  | Interlocking Paving Works-Shop Drawing Approval | 14d | 2024-08-21 A | 2024-08-26 A | CP09-EN-TR5-S-1980 FF+7d, CP09-EN-TR5-S-1980 SS+7d | 100% | 2024-12-05 | 2024-12-22 | TR05 | MS#03 | ENG |
| CP09-EN-TR5-A-1990 |  | Steps Works-Shop Drawing Approval | 14d | 2024-10-28 A | 2024-11-11 A | CP09-EN-TR5-S-1990 FF+7d, CP09-EN-TR5-S-1990 SS+7d | 100% | 2024-12-24 | 2025-01-11 | TR05 | MS#03 | ENG |
| CP09-EN-TR5-A-1900 |  | Concrete Exposed Aggregate - Side Walks-Shop Drawing Approval | 14d | 2025-05-18 A | 2025-05-22 A | CP09-EN-TR5-S-1900 FF+7d, CP09-EN-TR5-S-1900 SS+7d | 100% | 2025-06-30 | 2025-07-15 | TR05 | MS#03 | ENG |
| CP09-EN-TR5-A-1910 |  | Marble Paving - Side Walks Works-Shop Drawing Approval | 14d | 2025-05-18 A | 2025-05-22 A | CP09-EN-TR5-S-1910 FF+7d, CP09-EN-TR5-S-1910 SS+7d | 100% | 2025-05-18 | 2025-06-02 | TR05 | MS#03 | ENG |
| CP09-EN-TR5-A-1920 |  | WPC - Side Walks Works -Shop Drawing Approval | 14d | 2025-05-18 A | 2025-05-22 A | CP09-EN-TR5-S-1920 FF+7d, CP09-EN-TR5-S-1920 SS+7d | 100% | 2025-06-21 | 2025-07-07 | TR05 | MS#03 | ENG |
| CP09-EN-TR5-A-1930 |  | Gravel - Side Walks Works-Shop Drawing Approval | 14d | 2025-05-18 A | 2025-05-22 A | CP09-EN-TR5-S-1930 FF+7d, CP09-EN-TR5-S-1930 SS+7d | 100% | 2025-06-21 | 2025-07-07 | TR05 | MS#03 | ENG |
| CP09-EN-TR5-A-1940 |  | Crushed Stone - Side Walks Works-Shop Drawing Approval | 14d | 2025-05-18 A | 2025-05-22 A | CP09-EN-TR5-S-1940 FF+7d, CP09-EN-TR5-S-1940 SS+7d | 100% | 2025-06-21 | 2025-07-07 | TR05 | MS#03 | ENG |
| CP09-EN-TR5-A-1950 |  | Loose Gravel - Side Walks Works-Shop Drawing Approval | 14d | 2025-05-18 A | 2025-05-22 A | CP09-EN-TR5-S-1950 FF+7d, CP09-EN-TR5-S-1950 SS+7d | 100% | 2025-06-21 | 2025-07-07 | TR05 | MS#03 | ENG |
| CP09-EN-TR5-A-1960 |  | Clean sand layer - Side Walks Works-Shop Drawing Approval | 14d | 2025-05-18 A | 2025-05-22 A | CP09-EN-TR5-S-1960 FF+7d, CP09-EN-TR5-S-1960 SS+7d | 100% | 2025-06-21 | 2025-07-07 | TR05 | MS#03 | ENG |
| CP09-EN-TR5-A-2000 |  | Seats Works-Shop Drawing Approval | 14d | 2025-08-18 A | 2025-08-22 A | CP09-EN-TR5-S-2000 FF+7d, CP09-EN-TR5-S-2000 SS+7d | 100% | 2025-09-01 | 2025-09-17 | TR05 | MS#03 | ENG |
| CP09-EN-TR5-A-2010 |  | Pool Shower Works-Shop Drawing Approval | 14d | 2025-08-18 A | 2025-08-22 A | CP09-EN-TR5-S-2010 FF+7d, CP09-EN-TR5-S-2010 SS+7d | 100% | 2025-09-17 | 2025-10-04 | TR05 | MS#03 | ENG |
| CP09-EN-TR5-A-2020 |  | Handrails Works-Shop Drawing Approval | 14d | 2025-08-18 A | 2025-08-22 A | CP09-EN-TR5-S-2020 FF+7d, CP09-EN-TR5-S-2020 SS+7d | 100% | 2025-09-17 | 2025-10-04 | TR05 | MS#03 | ENG |
| CP09-EN-TR5-A-2030 |  | Landscape Furntiure-Shop Drawing Approval | 14d | 2025-08-18 A | 2025-08-22 A | CP09-EN-TR5-S-2030 FF+7d, CP09-EN-TR5-S-2030 SS+7d | 100% | 2025-08-24 | 2025-09-09 | TR05 | MS#03 | ENG |
|  | 5 | **Electrical Works** |  | 2025-05-18 | 2025-05-22 |  |  |  |  |  |  |  |
| CP09-EN-TR5-A-2040 |  | Power Cables-Shop Drawing Approval | 14d | 2025-05-18 A | 2025-05-22 A | CP09-EN-TR5-S-2040 FF+7d, CP09-EN-TR5-S-2040 SS+7d | 100% | 2025-06-02 | 2025-06-29 | TR05 | MS#03 | ENG |
| CP09-EN-TR5-A-2050 |  | Connecting Pillars-Shop Drawing Approval | 14d | 2025-05-18 A | 2025-05-22 A | CP09-EN-TR5-S-2050 FF+7d, CP09-EN-TR5-S-2050 SS+7d | 100% | 2025-07-07 | 2025-07-24 | TR05 | MS#03 | ENG |

| ID | WBS | Activity | Duration | Start | Finish | Predecessors | Complete | Planned start | Planned finish | CP09_Terrace-7 | CP09_Milestone-7 | CP09_Discipline-7 | DES |
| --- | --- | --- | --- | --- | --- | --- | --- | --- | --- | --- | --- | --- | --- |
|  | 6 | **Sinage** |  | 2025-07-06 | 2025-07-10 |  |  |  |  |  |  |  |  |
| CP09-EN-TR5-A-2060 |  | Sinage-Shop Drawing Approval | 14d | 2025-07-06 A | 2025-07-10 A | CP09-EN-TR5-S-2060 FF+7d, CP09-EN-TR5-S-2060 SS+7d | 100% | 2025-07-12 | 2025-07-28 | TR05 | MS#03 | ENG |  |
|  | 7 | **Play Field Equipment** |  | 2025-08-18 | 2025-08-22 |  |  |  |  |  |  |  |  |
| CP09-EN-TR5-A-2070 |  | Play Field Equipment-Shop Drawing Approval | 14d | 2025-08-18 A | 2025-08-22 A | CP09-EN-TR5-S-2070 FF+7d, CP09-EN-TR5-S-2070 SS+7d | 100% | 2025-08-24 | 2025-09-09 | TR05 | MS#03 | ENG | SO |
|  | 8 | **Irrigation Networks** |  | 2025-07-06 | 2025-07-10 |  |  |  |  |  |  |  |  |
| CP09-EN-TR5-A-2080 |  | Irrigation Networks Layout -Shop Drawing Approval | 14d | 2025-07-06 A | 2025-07-10 A | CP09-EN-TR5-S-2080 FF+7d, CP09-EN-TR5-S-2080 SS+7d | 100% | 2025-07-12 | 2025-07-28 | TR05 | MS#03 | ENG |  |
|  | 9 | **Planting** |  | 2024-11-30 | 2024-12-09 |  |  |  |  |  |  |  |  |
| CP09-EN-TR5-A-2090 |  | Plantings -Shop Drawing Approval | 14d | 2024-11-30 A | 2024-12-09 A | CP09-EN-TR5-S-2090 FF+7d, CP09-EN-TR5-S-2090 SS+7d | 100% | 2025-02-25 | 2025-03-17 | TR05 | MS#03 | ENG |  |
|  | 10 | **Lighting** |  | 2024-10-19 | 2024-10-22 |  |  |  |  |  |  |  |  |
| CP09-EN-TR5-A-2100 |  | Exterior Lighting for Softlandscape-Shop Drawing Approval | 14d | 2024-10-19 A | 2024-10-22 A | CP09-EN-TR5-S-2100 FF+7d, CP09-EN-TR5-S-2100 SS+7d | 100% | 2025-03-05 | 2025-03-27 | TR05 | MS#03 | ENG |  |
|  | 3 | **Terrace # 06** |  | 2024-05-12 | 2026-01-16 |  |  |  |  |  |  |  |  |
|  | 2 | **Shopdrwaings Submittal** |  | 2024-05-12 | 2026-01-16 |  |  |  |  |  |  |  |  |
|  | 1 | **Swimming Pool & MR** |  | 2024-10-20 | 2026-01-16 |  |  |  |  |  |  |  |  |
| CP09-EN-TR6-S-2130 |  | Swimmimg Pool & MR Steel reinforcement shop drawing Submittal | 7d | 2024-10-20 A | 2025-05-22 A | CP09-EN-TR8-S-2870, CP09-EN-TR6-S-2120 | 100% | 2024-11-12 | 2024-11-19 | TR06 | MS#03 | ENG |  |
| CP09-EN-TR6-S-2120 |  | Swimmimg Pool & MR Concrete dimension shop drawing Submittal | 7d | 2025-05-18 A | 2025-05-22 A | CP09-EN-TR8-S-2860, CP09-CLD-1010 | 100% | 2025-05-26 | 2025-06-02 | TR06 | MS#03 | ENG |  |
| CP09-EN-TR6-S-2190 |  | Swimmimg Pool & MR Mechnical Works shop drawing Submittal | 7d | 2025-05-18 A | 2025-05-22 A | CP09-EN-TR4-S-1450, CP09-PR-ME-A-1000, CP09-PR-ME-A-1010, CP09-PR-ME-A-1020, CP09-PR-ME-A-1030, CP09-PR-ME-A-1040, CP09-PR-ME-A-1050, CP09-PR-ME-A-1060, CP09-PR-ME-A-1070, CP09-PR-ME-A-1080 | 100% | 2025-06-30 | 2025-07-07 | TR06 | MS#03 | ENG |  |
| CP09-EN-TR6-S-2160 |  | Swimmimg Pool & MR Granite Works shop drawing Submittal | 7d | 2025-08-18 A | 2025-08-22 A | CP09-EN-TR4-S-1420, CP09-PR-CV-A-1040 | 100% | 2025-10-05 | 2025-10-13 | TR06 | MS#03 | ENG |  |
| CP09-EN-TR6-S-2170 |  | Swimmimg Pool & MR Ladders Works shop drawing Submittal | 7d | 2025-08-18 A | 2025-08-22 A | CP09-PR-CV-A-1050 | 100% | 2025-09-27 | 2025-10-04 | TR06 | MS#03 | ENG |  |
| CP09-EN-TR6-S-2180 |  | Swimmimg Pool & MR Handrial Works shop drawing Submittal | 7d | 2025-08-18 A | 2025-08-22 A | CP09-EN-TR4-S-1440, CP09-PR-CV-A-1060 | 100% | 2025-10-05 | 2025-10-13 | TR06 | MS#03 | ENG |  |
| CP09-EN-TR6-S-2140 |  | Swimmimg Pool & MR Water Proofing Worksshop drawing Submittal | 7d | 2026-01-12 A | 2026-01-16 A | CP09-EN-TR4-S-1400, CP09-PR-CV-A-1010 | 100% | 2025-08-24 | 2025-08-31 | TR06 | MS#03 | ENG |  |
| CP09-EN-TR6-S-2150 |  | Swimmimg Pool & MR Mosaics Works shop drawing Submittal | 7d | 2026-01-12 A | 2026-01-16 A | CP09-EN-TR4-S-1410, CP09-PR-CV-A-1030 | 100% | 2025-09-18 | 2025-09-25 | TR06 | MS#03 | ENG |  |
| CP09-EN-TR6-S-2200 |  | Swimmimg Pool & MR Electrical Works shop drawing Submittal | 7d | 2026-01-12 A | 2026-01-16 A | CP09-EN-TR4-S-1460, CP09-PR-EL-A-1000, CP09-PR-EL-A-1010, CP09-PR-EL-A-1020, CP09-PR-EL-A-1030, CP09-PR-EL-A-1040, CP09-PR-EL-A-1050, CP09-PR-EL-A-1140 | 100% | 2024-12-15 | 2024-12-22 | TR06 | MS#03 | ENG |  |
| CP09-EN-TR6-S-2480 |  | Swimmimg Pool & MR Fininshes shop drawing Submittal | 7d | 2026-01-12 A | 2026-01-16 A | CP09-EN-TR4-S-1740, CP09-PR-CV-A-1070, CP09-PR-CV-A-1080, CP09-PR-CV-A-1110 | 100% | 2025-09-27 | 2025-10-04 | TR06 | MS#03 | ENG |  |
|  | 2 | **Earth Work** |  | 2025-05-18 | 2025-05-22 |  |  |  |  |  |  |  |  |
| CP09-EN-TR6-S-2210 |  | Sub Garde shop drawing Submittal | 3d | 2025-05-18 A | 2025-05-22 A | CP09-EN-TR4-S-1470, CP09-CLD-1010 | 100% | 2025-05-22 | 2025-05-25 | TR06 | MS#03 | ENG |  |

| ID | WBS | Activity | Duration | Start | Finish | Predecessors | Complete | Planned start | Planned finish | CP09_Terrace-7 | CP09_Milestone-7 | CP09_Discipline-7 |
| --- | --- | --- | --- | --- | --- | --- | --- | --- | --- | --- | --- | --- |
|  | 3 | **Cheek & Retaning Wall** |  | 2024-11-06 | 2025-07-10 |  |  |  |  |  |  |  |
| CP09-EN-TR6-S-2250 |  | Cheek & Retaning Wall Masonary Works shop drawing Submittal | 6.56d | 2024-11-06 A | 2025-05-22 A | CP09-EN-TR4-S-1510, CP09-PR-CV-A-1020 | 100% | 2025-01-04 | 2025-01-12 | TR06 | MS#03 | ENG |
| CP09-EN-TR6-S-2260 |  | Cheek & Retaning Wall Marble Works shop drawing Submittal | 6.56d | 2024-11-06 A | 2025-05-22 A | CP09-EN-TR4-S-1520, CP09-PR-CV-A-1120 | 100% | 2025-01-12 | 2025-01-20 | TR06 | MS#03 | ENG |
| CP09-EN-TR6-S-2220 |  | Cheek & Retaning Wall Concrete dimension shop drawing Submittal | 6.56d | 2025-07-06 A | 2025-07-10 A | CP09-EN-TR4-S-1480, CP09-PR-CV-A-1000 | 100% | 2025-07-12 | 2025-07-19 | TR06 | MS#03 | ENG |
| CP09-EN-TR6-S-2230 |  | Cheek & Retaning Wall Steel reinforcement shop drawing Submittal | 6.56d | 2025-07-06 A | 2025-07-10 A | CP09-EN-TR4-S-1490, CP09-PR-CV-A-1130 | 100% | 2025-07-12 | 2025-07-19 | TR06 | MS#03 | ENG |
| CP09-EN-TR6-S-2240 |  | Cheek & Retaning Wall Water Proofing Works shop drawing Submittal | 6.56d | 2025-07-06 A | 2025-07-10 A | CP09-EN-TR4-S-1500, CP09-PR-CV-A-1010 | 100% | 2024-12-26 | 2025-01-04 | TR06 | MS#03 | ENG |
|  | 4 | **Hardscape Works** |  | 2024-08-11 | 2025-08-22 |  |  |  |  |  |  |  |
| CP09-EN-TR6-S-2400 |  | Landscape Furntiure Shop Drawing Submittal | 6.56d | 2024-08-11 A | 2025-08-22 A | CP09-EN-TR4-S-1660, CP09-PR-FN-A-1000, CP09-PR-FN-A-1010, CP09-PR-FN-A-1020, CP09-PR-FN-A-1030, CP09-PR-FN-A-1040, CP09-PR-FN-A-1050, CP09-PR-FN-A-1060, CP09-PR-FN-A-1070, CP09-PR-FN-A-1080 | 100% | 2024-10-20 | 2024-10-27 | TR06 | MS#03 | ENG |
| CP09-EN-TR6-S-2350 |  | Interlocking Paving Works Shop Drawing Submittal | 6.56d | 2024-08-27 A | 2024-08-28 A | CP09-EN-TR4-S-1610, CP09-PR-HD-A-1090, CP09-PR-HD-A-1180 | 100% | 2024-11-27 | 2024-12-05 | TR06 | MS#03 | ENG |
| CP09-EN-TR6-S-2360 |  | Steps Works shop Shop Drawing Submittal | 6.56d | 2024-11-16 A | 2025-08-22 A | CP09-EN-TR4-S-1620, CP09-PR-HD-A-1100 | 100% | 2024-12-24 | 2024-12-31 | TR06 | MS#03 | ENG |
| CP09-EN-TR6-S-2270 |  | Concrete Exposed Aggregate - Side Walks Shop Drawing Submittal | 6.56d | 2025-05-18 A | 2025-05-22 A | CP09-EN-TR4-S-1530, CP09-PR-HD-A-1000 | 100% | 2025-06-21 | 2025-06-29 | TR06 | MS#03 | ENG |
| CP09-EN-TR6-S-2280 |  | Marble Paving - Side Walks Works Shop Drawing Submittal | 6.56d | 2025-05-18 A | 2025-05-22 A | CP09-EN-TR4-S-1540, CP09-PR-HD-A-1010 | 100% | 2025-05-18 | 2025-05-25 | TR06 | MS#03 | ENG |
| CP09-EN-TR6-S-2290 |  | WPC - Side Walks Works Shop Drawing Submittal | 6.56d | 2025-05-18 A | 2025-05-22 A | CP09-EN-TR4-S-1550, CP09-PR-HD-A-1020 | 100% | 2025-06-21 | 2025-06-29 | TR06 | MS#03 | ENG |
| CP09-EN-TR6-S-2300 |  | Gravel - Side Walks Works Shop Drawing Submittal | 6.56d | 2025-05-18 A | 2025-05-22 A | CP09-EN-TR4-S-1560, CP09-PR-HD-A-1030 | 100% | 2025-06-21 | 2025-06-29 | TR06 | MS#03 | ENG |
| CP09-EN-TR6-S-2310 |  | Crushed Stone - Side Walks Works Shop Drawing Submittal | 6.56d | 2025-05-18 A | 2025-05-22 A | CP09-EN-TR4-S-1570, CP09-PR-HD-A-1040 | 100% | 2025-06-21 | 2025-06-29 | TR06 | MS#03 | ENG |
| CP09-EN-TR6-S-2320 |  | Loose Gravel - Side Walks Works Shop Drawing Submittal | 6.56d | 2025-05-18 A | 2025-05-22 A | CP09-EN-TR4-S-1580, CP09-PR-HD-A-1050 | 100% | 2025-06-21 | 2025-06-29 | TR06 | MS#03 | ENG |
| CP09-EN-TR6-S-2330 |  | Clean sand layer - Side Walks Works Shop Drawing Submittal | 7d | 2025-05-18 A | 2025-05-22 A | CP09-EN-TR4-S-1590, CP09-PR-HD-A-1060, CP09-PR-HD-A-1070 | 100% | 2025-06-21 | 2025-06-29 | TR06 | MS#03 | ENG |
| CP09-EN-TR6-S-2340 |  | Flush Curb Works Shop Drawing Submittal | 6.56d | 2025-05-18 A | 2025-05-22 A | CP09-EN-TR4-S-1600, CP09-PR-HD-A-1080 | 100% | 2025-05-18 | 2025-05-25 | TR06 | MS#03 | ENG |
| CP09-EN-TR6-S-2370 |  | Seats Works Shop Shop Drawing Submittal | 6.56d | 2025-08-18 A | 2025-08-22 A | CP09-EN-TR4-S-1630, CP09-PR-HD-A-1110 | 100% | 2025-08-24 | 2025-08-31 | TR06 | MS#03 | ENG |
| CP09-EN-TR6-S-2380 |  | Pool Shower Works Shop Drawing Submittal | 6.56d | 2025-08-18 A | 2025-08-22 A | CP09-EN-TR4-S-1640, CP09-PR-HD-A-1120, CP09-PR-HD-A-1130, CP09-PR-HD-A-1140, CP09-PR-HD-A-1150 | 100% | 2025-09-09 | 2025-09-16 | TR06 | MS#03 | ENG |
| CP09-EN-TR6-S-2390 |  | Handrails Works Shop Drawing Submittal | 6.56d | 2025-08-18 A | 2025-08-22 A | CP09-EN-TR4-S-1650, CP09-PR-HD-A-1160, CP09-PR-HD-A-1170 | 100% | 2025-09-09 | 2025-09-16 | TR06 | MS#03 | ENG |
|  | 5 | **Electrical Works** |  | 2025-05-18 | 2025-05-22 |  |  |  |  |  |  |  |
| CP09-EN-TR6-S-2410 |  | Power Cables Shop Drawing Submittal | 6.56d | 2025-05-18 A | 2025-05-22 A | CP09-EN-TR4-S-1670, CP09-PR-EL-A-1060 | 100% | 2025-05-29 | 2025-06-15 | TR06 | MS#03 | ENG |
| CP09-EN-TR6-S-2420 |  | Connecting Pillars Shop Drawing Submittal | 6.56d | 2025-05-18 A | 2025-05-22 A | CP09-EN-TR4-S-1680, CP09-PR-EL-A-1070 | 100% | 2025-07-03 | 2025-07-10 | TR06 | MS#03 | ENG |

| ID | WBS | Activity | Duration | Start | Finish | Predecessors | Complete | Planned start | Planned finish | CP09_Terrace-7 | CP09_Milestone-7 | CP09_Discipline-7 | DES |
| --- | --- | --- | --- | --- | --- | --- | --- | --- | --- | --- | --- | --- | --- |
|  | 6 | **Sinage** |  | 2025-07-06 | 2025-07-10 |  |  |  |  |  |  |  |  |
| CP09-EN-TR6-S-2430 |  | Sinage Shop Drawing Submittal | 6.56d | 2025-07-06 A | 2025-07-10 A | CP09-EN-TR4-S-1690, CP09-PR-SN-A-1000, CP09-PR-SN-A-1010, CP09-PR-SN-A-1020, CP09-PR-SN-A-1030, CP09-PR-SN-A-1040 | 100% | 2024-10-09 | 2024-10-17 | TR06 | MS#03 | ENG |  |
|  | 7 | **Play Field Equipment** |  | 2025-08-18 | 2025-08-22 |  |  |  |  |  |  |  |  |
| CP09-EN-TR6-S-2440 |  | Play Field Equipment Shop Drawing Submittal | 6.56d | 2025-08-18 A | 2025-08-22 A | CP09-EN-TR4-S-1700, CP09-PR-PE-A-1000, CP09-PR-PE-A-1010, CP09-PR-PE-A-1020, CP09-PR-PE-A-1030, CP09-PR-PE-A-1040, CP09-PR-PE-A-1050, CP09-PR-PE-A-1060, CP09-PR-PE-A-1070, CP09-PR-PE-A-1080, CP09-PR-PE-A-1090, CP09-PR-PE-A-1100 | 100% | 2024-10-16 | 2024-10-23 | TR06 | MS#03 | ENG | SO |
|  | 8 | **Irrigation Networks** |  | 2024-05-12 | 2025-05-22 |  |  |  |  |  |  |  |  |
| CP09-EN-TR6-S-2450 |  | Irrigation Networks Layout Shop Drawing Submittal | 6.56d | 2024-05-12 A | 2025-05-22 A | CP09-EN-TR4-S-1710, CP09-PR-IR-A-1000, CP09-PR-IR-A-1010, CP09-PR-IR-A-1020, CP09-PR-IR-A-1030, CP09-PR-IR-A-1040, CP09-PR-IR-A-1050, CP09-PR-IR-A-1060, CP09-PR-IR-A-1070, CP09-PR-IR-A-1080 | 100% | 2024-11-03 | 2024-11-11 | TR06 | MS#03 | ENG |  |
|  | 9 | **Planting** |  | 2024-05-12 | 2024-12-08 |  |  |  |  |  |  |  |  |
| CP09-EN-TR6-S-2460 |  | Plantings Shop Drawing Submittal | 6.56d | 2024-05-12 A | 2024-12-08 A | CP09-EN-TR4-S-1720, CP09-EN-TR6-S-2450, CP09-PR-PN-A-1000, CP09-PR-PN-A-1010, CP09-PR-PN-A-1020, CP09-PR-PN-A-1030, CP09-PR-PN-A-1040, CP09-PR-PN-A-1050, CP09-PR-PN-A-1060, CP09-PR-PN-A-1070, CP09-PR-PN-A-1080 | 100% | 2024-04-28 | 2024-05-07 | TR06 | MS#03 | ENG |  |
|  | 10 | **Lighting** |  | 2024-10-10 | 2024-10-19 |  |  |  |  |  |  |  |  |
| CP09-EN-TR6-S-2470 |  | Exterior Lighting for Softlandscape Shop Drawing Submittal | 6.56d | 2024-10-10 A | 2024-10-19 A | CP09-EN-TR4-S-1730, CP09-EN-TR6-S-2460, CP09-PR-EL-A-1080, CP09-PR-EL-A-1090, CP09-PR-EL-A-1100, CP09-PR-EL-A-1110, CP09-PR-EL-A-1120, CP09-PR-EL-A-1130 | 100% | 2024-12-14 | 2024-12-22 | TR06 | MS#03 | ENG |  |
|  | 1 | **Shopdrwaings Approval** |  | 2024-08-28 | 2026-01-16 |  |  |  |  |  |  |  |  |
|  | 1 | **Swimming Pool & MR** |  | 2025-05-18 | 2026-01-16 |  |  |  |  |  |  |  |  |
| CP09-EN-TR6-A-2120 |  | Swimmimg Pool & MR Concrete dimension-Shop Drawing Approval | 14d | 2025-05-18 A | 2025-05-22 A | CP09-EN-TR6-S-2120 FF+7d, CP09-EN-TR6-S-2120 SS+7d | 100% | 2025-06-03 | 2025-06-29 | TR06 | MS#03 | ENG |  |
| CP09-EN-TR6-A-2130 |  | Swimmimg Pool & MR Steel reinforcement-Shop Drawing Approval | 14d | 2025-05-18 A | 2025-05-22 A | CP09-EN-TR6-S-2130 FF+7d, CP09-EN-TR6-S-2130 SS+7d | 100% | 2025-06-03 | 2025-06-29 | TR06 | MS#03 | ENG |  |
| CP09-EN-TR6-A-2160 |  | Swimmimg Pool & MR Granite Works-Shop Drawing Approval | 14d | 2025-08-18 A | 2025-08-22 A | CP09-EN-TR6-S-2160 FF+7d, CP09-EN-TR6-S-2160 SS+7d | 100% | 2025-10-14 | 2025-10-29 | TR06 | MS#03 | ENG |  |
| CP09-EN-TR6-A-2170 |  | Swimmimg Pool & MR Ladders Works-Shop Drawing Approval | 14d | 2025-08-18 A | 2025-08-22 A | CP09-EN-TR6-S-2170 FF+7d, CP09-EN-TR6-S-2170 SS+7d | 100% | 2025-10-05 | 2025-10-21 | TR06 | MS#03 | ENG |  |
| CP09-EN-TR6-A-2180 |  | Swimmimg Pool & MR Handrial Works-Shop Drawing Approval | 14d | 2025-08-18 A | 2025-08-22 A | CP09-EN-TR6-S-2180 FF+7d, CP09-EN-TR6-S-2180 SS+7d | 100% | 2025-10-14 | 2025-10-29 | TR06 | MS#03 | ENG |  |
| CP09-EN-TR6-A-2190 |  | Swimmimg Pool & MR Mechnical Works-Shop Drawing Approval | 14d | 2025-08-18 A | 2025-08-22 A | CP09-EN-TR6-S-2190 FF+7d, CP09-EN-TR6-S-2190 SS+7d | 100% | 2025-08-24 | 2025-09-09 | TR06 | MS#03 | ENG |  |
| CP09-EN-TR6-A-2140 |  | Swimmimg Pool & MR Water Proofing Works-Shop Drawing Approval | 14d | 2026-01-12 A | 2026-01-16 A | CP09-EN-TR6-S-2140 FF+7d, CP09-EN-TR6-S-2140 SS+7d | 100% | 2025-09-01 | 2025-09-17 | TR06 | MS#03 | ENG |  |
| CP09-EN-TR6-A-2150 |  | Swimmimg Pool & MR Mosaics Works-Shop Drawing Approval | 14d | 2026-01-12 A | 2026-01-16 A | CP09-EN-TR6-S-2150 FF+7d, CP09-EN-TR6-S-2150 SS+7d | 100% | 2025-09-27 | 2025-10-13 | TR06 | MS#03 | ENG |  |
| CP09-EN-TR6-A-2200 |  | Swimmimg Pool & MR Electrical Works-Shop Drawing Approval | 14d | 2026-01-12 A | 2026-01-16 A | CP09-EN-TR6-S-2200 FF+7d, CP09-EN-TR6-S-2200 SS+7d | 100% | 2025-08-24 | 2025-09-09 | TR06 | MS#03 | ENG |  |
| CP09-EN-TR6-A-2480 |  | Swimmimg Pool & MR Fininshes shop drawing Approval | 14d | 2026-01-12 A | 2026-01-16 A | CP09-EN-TR6-S-2480 FF+7d, CP09-EN-TR6-S-2480 SS+7d | 100% | 2025-10-05 | 2025-10-21 | TR06 | MS#03 | ENG |  |
|  | 2 | **Earth Work** |  | 2025-07-06 | 2025-07-10 |  |  |  |  |  |  |  |  |
| CP09-EN-TR6-A-2210 |  | Sub Garde Shopdrwaings-Shop Drawing Approval | 14d | 2025-07-06 A | 2025-07-10 A | CP09-EN-TR6-S-2210 FF+7d, CP09-EN-TR6-S-2210 SS+7d | 100% | 2025-07-12 | 2025-07-28 | TR06 | MS#03 | ENG |  |

| ID | WBS | Activity | Duration | Start | Finish | Predecessors | Complete | Planned start | Planned finish | CP09_Terrace-7 | CP09_Milestone-7 | CP09_Discipline-7 |
| --- | --- | --- | --- | --- | --- | --- | --- | --- | --- | --- | --- | --- |
|  | 3 | **Cheek & Retaning Wall** |  | 2025-07-06 | 2025-07-10 |  |  |  |  |  |  |  |
| CP09-EN-TR6-A-2220 |  | Cheek & Retaning Wall Concrete dimension-ShopDrawing Approval | 14d | 2025-07-06 A | 2025-07-10 A | CP09-EN-TR6-S-2220 FF+7d, CP09-EN-TR6-S-2220 SS+7d | 100% | 2025-07-20 | 2025-08-05 | TR06 | MS#03 | ENG |
| CP09-EN-TR6-A-2230 |  | Cheek & Retaning Wall Steel reinforcement-Shop Drawing Approval | 14d | 2025-07-06 A | 2025-07-10 A | CP09-EN-TR6-S-2230 FF+7d, CP09-EN-TR6-S-2230 SS+7d | 100% | 2025-07-20 | 2025-08-05 | TR06 | MS#03 | ENG |
| CP09-EN-TR6-A-2240 |  | Cheek & Retaning Wall Water Proofing Works-Shop Drawing Approval | 14d | 2025-07-06 A | 2025-07-10 A | CP09-EN-TR6-S-2240 FF+7d, CP09-EN-TR6-S-2240 SS+7d | 100% | 2025-07-12 | 2025-07-28 | TR06 | MS#03 | ENG |
| CP09-EN-TR6-A-2250 |  | Cheek & Retaning Wall Masonary Works-Shop Drawing Approval | 14d | 2025-07-06 A | 2025-07-10 A | CP09-EN-TR6-S-2250 FF+7d, CP09-EN-TR6-S-2250 SS+7d | 100% | 2025-07-12 | 2025-07-28 | TR06 | MS#03 | ENG |
| CP09-EN-TR6-A-2260 |  | Cheek & Retaning Wall Marble Works-Shop Drawing Approval | 14d | 2025-07-06 A | 2025-07-10 A | CP09-EN-TR6-S-2260 FF+7d, CP09-EN-TR6-S-2260 SS+7d | 100% | 2025-07-12 | 2025-07-28 | TR06 | MS#03 | ENG |
|  | 4 | **Hardscape Works** |  | 2024-08-28 | 2025-08-22 |  |  |  |  |  |  |  |
| CP09-EN-TR6-A-2350 |  | Interlocking Paving Works-Shop Drawing Approval | 14d | 2024-08-28 A | 2024-08-28 A | CP09-EN-TR6-S-2350 FF+7d, CP09-EN-TR6-S-2350 SS+7d | 100% | 2024-12-05 | 2024-12-22 | TR06 | MS#03 | ENG |
| CP09-EN-TR6-A-2270 |  | Concrete Exposed Aggregate - Side Walks-Shop Drawing Approval | 14d | 2025-05-18 A | 2025-05-22 A | CP09-EN-TR6-S-2270 FF+7d, CP09-EN-TR6-S-2270 SS+7d | 100% | 2025-06-30 | 2025-07-15 | TR06 | MS#03 | ENG |
| CP09-EN-TR6-A-2280 |  | Marble Paving - Side Walks Works-Shop Drawing Approval | 14d | 2025-05-18 A | 2025-05-22 A | CP09-EN-TR6-S-2280 FF+7d, CP09-EN-TR6-S-2280 SS+7d | 100% | 2025-05-26 | 2025-06-19 | TR06 | MS#03 | ENG |
| CP09-EN-TR6-A-2290 |  | WPC - Side Walks Works -Shop Drawing Approval | 14d | 2025-05-18 A | 2025-05-22 A | CP09-EN-TR6-S-2290 FF+7d, CP09-EN-TR6-S-2290 SS+7d | 100% | 2025-06-30 | 2025-07-15 | TR06 | MS#03 | ENG |
| CP09-EN-TR6-A-2300 |  | Gravel - Side Walks Works-Shop Drawing Approval | 14d | 2025-05-18 A | 2025-05-22 A | CP09-EN-TR6-S-2300 FF+7d, CP09-EN-TR6-S-2300 SS+7d | 100% | 2025-06-30 | 2025-07-15 | TR06 | MS#03 | ENG |
| CP09-EN-TR6-A-2310 |  | Crushed Stone - Side Walks Works-Shop Drawing Approval | 14d | 2025-05-18 A | 2025-05-22 A | CP09-EN-TR6-S-2310 FF+7d, CP09-EN-TR6-S-2310 SS+7d | 100% | 2025-06-30 | 2025-07-15 | TR06 | MS#03 | ENG |
| CP09-EN-TR6-A-2320 |  | Loose Gravel - Side Walks Works-Shop Drawing Approval | 14d | 2025-05-18 A | 2025-05-22 A | CP09-EN-TR6-S-2320 FF+7d, CP09-EN-TR6-S-2320 SS+7d | 100% | 2025-06-30 | 2025-07-15 | TR06 | MS#03 | ENG |
| CP09-EN-TR6-A-2330 |  | Clean sand layer - Side Walks Works-Shop Drawing Approval | 14d | 2025-05-18 A | 2025-05-22 A | CP09-EN-TR6-S-2330 FF+7d, CP09-EN-TR6-S-2330 SS+7d | 100% | 2025-06-30 | 2025-07-15 | TR06 | MS#03 | ENG |
| CP09-EN-TR6-A-2340 |  | Flush Curb Works-Shop Drawing Approval | 14d | 2025-05-18 A | 2025-05-22 A | CP09-EN-TR6-S-2340 FF+7d, CP09-EN-TR6-S-2340 SS+7d | 100% | 2025-05-26 | 2025-06-19 | TR06 | MS#03 | ENG |
| CP09-EN-TR6-A-2360 |  | Steps Works-Shop Drawing Approval | 14d | 2025-08-18 A | 2025-08-22 A | CP09-EN-TR6-S-2360 FF+7d, CP09-EN-TR6-S-2360 SS+7d | 100% | 2025-08-24 | 2025-09-09 | TR06 | MS#03 | ENG |
| CP09-EN-TR6-A-2370 |  | Seats Works-Shop Drawing Approval | 14d | 2025-08-18 A | 2025-08-22 A | CP09-EN-TR6-S-2370 FF+7d, CP09-EN-TR6-S-2370 SS+7d | 100% | 2025-09-01 | 2025-09-17 | TR06 | MS#03 | ENG |
| CP09-EN-TR6-A-2380 |  | Pool Shower Works-Shop Drawing Approval | 14d | 2025-08-18 A | 2025-08-22 A | CP09-EN-TR6-S-2380 FF+7d, CP09-EN-TR6-S-2380 SS+7d | 100% | 2025-09-17 | 2025-10-04 | TR06 | MS#03 | ENG |
| CP09-EN-TR6-A-2390 |  | Handrails Works-Shop Drawing Approval | 14d | 2025-08-18 A | 2025-08-22 A | CP09-EN-TR6-S-2390 FF+7d, CP09-EN-TR6-S-2390 SS+7d | 100% | 2025-09-17 | 2025-10-04 | TR06 | MS#03 | ENG |
| CP09-EN-TR6-A-2400 |  | Landscape Furntiure-Shop Drawing Approval | 14d | 2025-08-18 A | 2025-08-22 A | CP09-EN-TR6-S-2400 FF+7d, CP09-EN-TR6-S-2400 SS+7d | 100% | 2025-08-24 | 2025-09-09 | TR06 | MS#03 | ENG |
|  | 5 | **Electrical Works** |  | 2025-05-18 | 2025-05-22 |  |  |  |  |  |  |  |
| CP09-EN-TR6-A-2410 |  | Power Cables-Shop Drawing Approval | 14d | 2025-05-18 A | 2025-05-22 A | CP09-EN-TR6-S-2410 FF+7d, CP09-EN-TR6-S-2410 SS+7d | 100% | 2025-06-16 | 2025-07-03 | TR06 | MS#03 | ENG |
| CP09-EN-TR6-A-2420 |  | Connecting Pillars-Shop Drawing Approval | 14d | 2025-05-18 A | 2025-05-22 A | CP09-EN-TR6-S-2420 FF+7d, CP09-EN-TR6-S-2420 SS+7d | 100% | 2025-07-12 | 2025-07-29 | TR06 | MS#03 | ENG |

| ID | WBS | Activity | Duration | Start | Finish | Predecessors | Complete | Planned start | Planned finish | CP09_Terrace-7 | CP09_Milestone-7 | CP09_Discipline-7 | DES |
| --- | --- | --- | --- | --- | --- | --- | --- | --- | --- | --- | --- | --- | --- |
|  | 6 | **Sinage** |  | 2025-07-06 | 2025-07-10 |  |  |  |  |  |  |  |  |
| CP09-EN-TR6-A-2430 |  | Sinage-Shop Drawing Approval | 14d | 2025-07-06 A | 2025-07-10 A | CP09-EN-TR6-S-2430 FF+7d, CP09-EN-TR6-S-2430 SS+7d | 100% | 2025-07-12 | 2025-07-28 | TR06 | MS#03 | ENG |  |
|  | 7 | **Play Field Equipment** |  | 2025-08-18 | 2025-08-22 |  |  |  |  |  |  |  |  |
| CP09-EN-TR6-A-2440 |  | Play Field Equipment-Shop Drawing Approval | 14d | 2025-08-18 A | 2025-08-22 A | CP09-EN-TR6-S-2440 FF+7d, CP09-EN-TR6-S-2440 SS+7d | 100% | 2025-08-24 | 2025-09-09 | TR06 | MS#03 | ENG | SO |
|  | 8 | **Irrigation Networks** |  | 2025-07-06 | 2025-07-10 |  |  |  |  |  |  |  |  |
| CP09-EN-TR6-A-2450 |  | Irrigation Networks Layout -Shop Drawing Approval | 14d | 2025-07-06 A | 2025-07-10 A | CP09-EN-TR6-S-2450 FF+7d, CP09-EN-TR6-S-2450 SS+7d | 100% | 2025-07-12 | 2025-07-28 | TR06 | MS#03 | ENG |  |
|  | 9 | **Planting** |  | 2024-12-08 | 2024-12-18 |  |  |  |  |  |  |  |  |
| CP09-EN-TR6-A-2460 |  | Plantings -Shop Drawing Approval | 14d | 2024-12-08 A | 2024-12-18 A | CP09-EN-TR6-S-2460 FF+7d, CP09-EN-TR6-S-2460 SS+7d | 100% | 2025-02-25 | 2025-03-17 | TR06 | MS#03 | ENG |  |
|  | 10 | **Lighting** |  | 2024-10-19 | 2024-10-23 |  |  |  |  |  |  |  |  |
| CP09-EN-TR6-A-2470 |  | Exterior Lighting for Softlandscape-Shop Drawing Approval | 14d | 2024-10-19 A | 2024-10-23 A | CP09-EN-TR6-S-2470 FF+7d, CP09-EN-TR6-S-2470 SS+7d | 100% | 2025-03-02 | 2025-03-23 | TR06 | MS#03 | ENG |  |
|  | 10 | **Terrace # 07** |  | 2024-05-12 | 2026-01-16 |  |  |  |  |  |  |  |  |
|  | 2 | **Shopdrwaings Submittal** |  | 2024-05-12 | 2026-01-16 |  |  |  |  |  |  |  |  |
|  | 1 | **Swimming Pool & MR** |  | 2024-08-03 | 2026-01-16 |  |  |  |  |  |  |  |  |
| CP09-EN-TR7-S-2490 |  | Swimmimg Pool & MR Concrete dimension shop drawing Submittal | 7d | 2024-08-03 A | 2025-07-10 A | CP09-EN-TR5-S-1750, CP09-EN-TR7-S-2510, CP09-CLD-1010 FS+30d | 100% | 2024-10-02 | 2024-10-10 | TR07 | MS#04 | ENG |  |
| CP09-EN-TR7-S-2510 |  | Swimmimg Pool & MR Water Proofing Worksshop drawing Submittal | 7d | 2024-08-03 A | 2025-07-10 A | CP09-EN-TR5-S-1770, CP09-PR-CV-A-1010 | 100% | 2024-11-04 | 2024-11-11 | TR07 | MS#04 | ENG |  |
| CP09-EN-TR7-S-2560 |  | Swimmimg Pool & MR Mechnical Works shop drawing Submittal | 7d | 2024-09-04 A | 2024-09-04 A | CP09-EN-TR5-S-1820, CP09-EN-TR7-S-2520, CP09-PR-ME-A-1000, CP09-PR-ME-A-1010, CP09-PR-ME-A-1020, CP09-PR-ME-A-1030, CP09-PR-ME-A-1040, CP09-PR-ME-A-1050, CP09-PR-ME-A-1060, CP09-PR-ME-A-1070, CP09-PR-ME-A-1080 | 100% | 2024-11-05 | 2024-11-12 | TR07 | MS#04 | ENG |  |
| CP09-EN-TR7-S-2570 |  | Swimmimg Pool & MR Electrical Works shop drawing Submittal | 7d | 2024-09-28 A | 2025-08-22 A | CP09-EN-TR5-S-1830, CP09-EN-TR7-S-2560, CP09-PR-EL-A-1000, CP09-PR-EL-A-1010, CP09-PR-EL-A-1020, CP09-PR-EL-A-1030, CP09-PR-EL-A-1040, CP09-PR-EL-A-1050, CP09-PR-EL-A-1140 | 100% | 2024-12-15 | 2024-12-22 | TR07 | MS#04 | ENG |  |
| CP09-EN-TR7-S-2500 |  | Swimmimg Pool & MR Steel reinforcement shop drawing Submittal | 7d | 2024-10-20 A | 2025-07-10 A | CP09-EN-TR7-S-2490 FF, CP09-EN-TR7-S-2490 | 100% | 2024-11-20 | 2024-11-27 | TR07 | MS#04 | ENG |  |
| CP09-EN-TR7-S-2530 |  | Swimmimg Pool & MR Granite Works shop drawing Submittal | 7d | 2025-08-18 A | 2025-08-22 A | CP09-EN-TR5-S-1790, CP09-EN-TR7-S-2570, CP09-PR-CV-A-1040 | 100% | 2025-10-05 | 2025-10-13 | TR07 | MS#04 | ENG |  |
| CP09-EN-TR7-S-2540 |  | Swimmimg Pool & MR Ladders Works shop drawing Submittal | 7d | 2025-08-18 A | 2025-08-22 A | CP09-EN-TR5-S-1800, CP09-EN-TR7-S-2530, CP09-PR-CV-A-1050 | 100% | 2025-10-14 | 2025-10-21 | TR07 | MS#04 | ENG |  |
| CP09-EN-TR7-S-2550 |  | Swimmimg Pool & MR Handrial Works shop drawing Submittal | 7d | 2025-08-18 A | 2025-08-22 A | CP09-EN-TR5-S-1810, CP09-EN-TR7-S-2540, CP09-PR-CV-A-1060 | 100% | 2025-10-22 | 2025-10-29 | TR07 | MS#04 | ENG |  |
| CP09-EN-TR7-S-2520 |  | Swimmimg Pool & MR Mosaics Works shop drawing Submittal | 7d | 2026-01-12 A | 2026-01-16 A | CP09-EN-TR5-S-1780, CP09-EN-TR7-S-2500, CP09-PR-CV-A-1030 | 100% | 2025-09-27 | 2025-10-04 | TR07 | MS#04 | ENG |  |
| CP09-EN-TR7-S-2850 |  | Swimmimg Pool & MR Fininshes shop drawing Submittal | 7d | 2026-01-12 A | 2026-01-16 A | CP09-EN-TR5-S-2110, CP09-EN-TR7-S-2550, CP09-PR-CV-A-1070, CP09-PR-CV-A-1080, CP09-PR-CV-A-1110 | 100% | 2025-10-30 | 2025-11-06 | TR07 | MS#04 | ENG |  |
|  | 2 | **Earth Work** |  | 2025-07-06 | 2025-07-10 |  |  |  |  |  |  |  |  |
| CP09-EN-TR7-S-2580 |  | Sub Garde shop drawing Submittal | 3d | 2025-07-06 A | 2025-07-10 A | CP09-EN-TR5-S-1840, CP09-CLD-1010 | 100% | 2025-07-17 | 2025-07-20 | TR07 | MS#04 | ENG |  |

| ID | WBS | Activity | Duration | Start | Finish | Predecessors | Complete | Planned start | Planned finish | CP09_Terrace-7 | CP09_Milestone-7 | CP09_Discipline-7 |
| --- | --- | --- | --- | --- | --- | --- | --- | --- | --- | --- | --- | --- |
|  | 3 | **Cheek & Retaning Wall** |  | 2024-11-13 | 2025-07-10 |  |  |  |  |  |  |  |
| CP09-EN-TR7-S-2610 |  | Cheek & Retaning Wall Water Proofing Works shop drawing Submittal | 6.56d | 2024-11-13 A | 2025-07-10 A | CP09-EN-TR5-S-1870, CP09-EN-TR7-S-2600, CP09-PR-CV-A-1010 | 100% | 2025-01-04 | 2025-01-12 | TR07 | MS#04 | ENG |
| CP09-EN-TR7-S-2620 |  | Cheek & Retaning Wall Masonary Works shop drawing Submittal | 6.56d | 2024-11-13 A | 2025-07-10 A | CP09-EN-TR5-S-1880, CP09-EN-TR7-S-2610, CP09-PR-CV-A-1020 | 100% | 2025-01-12 | 2025-01-20 | TR07 | MS#04 | ENG |
| CP09-EN-TR7-S-2630 |  | Cheek & Retaning Wall Marble Works shop drawing Submittal | 6.56d | 2024-11-13 A | 2025-07-10 A | CP09-EN-TR5-S-1890, CP09-EN-TR7-S-2620, CP09-PR-CV-A-1120 | 100% | 2025-01-20 | 2025-01-28 | TR07 | MS#04 | ENG |
| CP09-EN-TR7-S-2590 |  | Cheek & Retaning Wall Concrete dimension shop drawing Submittal | 6.56d | 2025-07-06 A | 2025-07-10 A | CP09-EN-TR5-S-1850, CP09-PR-CV-A-1000 | 100% | 2025-07-19 | 2025-07-28 | TR07 | MS#04 | ENG |
| CP09-EN-TR7-S-2600 |  | Cheek & Retaning Wall Steel reinforcement shop drawing Submittal | 6.56d | 2025-07-06 A | 2025-07-10 A | CP09-EN-TR5-S-1860, CP09-EN-TR7-S-2590, CP09-PR-CV-A-1130 | 100% | 2025-07-28 | 2025-08-04 | TR07 | MS#04 | ENG |
|  | 4 | **Hardscape Works** |  | 2024-08-11 | 2025-08-22 |  |  |  |  |  |  |  |
| CP09-EN-TR7-S-2770 |  | Landscape Furntiure Shop Drawing Submittal | 6.56d | 2024-08-11 A | 2025-08-22 A | CP09-EN-TR5-S-2030, CP09-PR-FN-A-1000, CP09-PR-FN-A-1010, CP09-PR-FN-A-1020, CP09-PR-FN-A-1030, CP09-PR-FN-A-1040, CP09-PR-FN-A-1050, CP09-PR-FN-A-1060, CP09-PR-FN-A-1070, CP09-PR-FN-A-1080 | 100% | 2024-10-27 | 2024-11-04 | TR07 | MS#04 | ENG |
| CP09-EN-TR7-S-2720 |  | Interlocking Paving Works Shop Drawing Submittal | 6.56d | 2024-09-02 A | 2024-09-05 A | CP09-EN-TR5-S-1980, CP09-PR-HD-A-1090, CP09-PR-HD-A-1180 | 100% | 2024-12-05 | 2024-12-12 | TR07 | MS#04 | ENG |
| CP09-EN-TR7-S-2730 |  | Steps Works shop Shop Drawing Submittal | 6.56d | 2024-12-02 A | 2025-08-22 A | CP09-EN-TR5-S-1990, CP09-PR-HD-A-1100 | 100% | 2024-12-24 | 2024-12-31 | TR07 | MS#04 | ENG |
| CP09-EN-TR7-S-2640 |  | Concrete Exposed Aggregate - Side Walks Shop Drawing Submittal | 6.56d | 2025-08-18 A | 2025-08-22 A | CP09-EN-TR5-S-1900, CP09-PR-HD-A-1000 | 100% | 2025-08-24 | 2025-08-31 | TR07 | MS#04 | ENG |
| CP09-EN-TR7-S-2650 |  | Marble Paving - Side Walks Works Shop Drawing Submittal | 6.56d | 2025-08-18 A | 2025-08-22 A | CP09-EN-TR5-S-1910, CP09-PR-HD-A-1010 | 100% | 2025-08-24 | 2025-08-31 | TR07 | MS#04 | ENG |
| CP09-EN-TR7-S-2660 |  | WPC - Side Walks Works Shop Drawing Submittal | 6.56d | 2025-08-18 A | 2025-08-22 A | CP09-EN-TR5-S-1920, CP09-PR-HD-A-1020 | 100% | 2025-08-24 | 2025-08-31 | TR07 | MS#04 | ENG |
| CP09-EN-TR7-S-2670 |  | Gravel - Side Walks Works Shop Drawing Submittal | 6.56d | 2025-08-18 A | 2025-08-22 A | CP09-EN-TR5-S-1930, CP09-PR-HD-A-1030 | 100% | 2025-08-24 | 2025-08-31 | TR07 | MS#04 | ENG |
| CP09-EN-TR7-S-2680 |  | Crushed Stone - Side Walks Works Shop Drawing Submittal | 6.56d | 2025-08-18 A | 2025-08-22 A | CP09-EN-TR5-S-1940, CP09-PR-HD-A-1040 | 100% | 2025-08-24 | 2025-08-31 | TR07 | MS#04 | ENG |
| CP09-EN-TR7-S-2690 |  | Loose Gravel - Side Walks Works Shop Drawing Submittal | 6.56d | 2025-08-18 A | 2025-08-22 A | CP09-EN-TR5-S-1950, CP09-PR-HD-A-1050 | 100% | 2025-08-24 | 2025-08-31 | TR07 | MS#04 | ENG |
| CP09-EN-TR7-S-2700 |  | Clean sand layer - Side Walks Works Shop Drawing Submittal | 7d | 2025-08-18 A | 2025-08-22 A | CP09-EN-TR5-S-1960, CP09-PR-HD-A-1060, CP09-PR-HD-A-1070 | 100% | 2025-08-24 | 2025-08-31 | TR07 | MS#04 | ENG |
| CP09-EN-TR7-S-2710 |  | Flush Curb Works Shop Drawing Submittal | 6.56d | 2025-08-18 A | 2025-08-22 A | CP09-EN-TR5-S-1970, CP09-PR-HD-A-1080 | 100% | 2025-08-24 | 2025-08-31 | TR07 | MS#04 | ENG |
| CP09-EN-TR7-S-2740 |  | Seats Works Shop Shop Drawing Submittal | 6.56d | 2025-08-18 A | 2025-08-22 A | CP09-EN-TR5-S-2000, CP09-PR-HD-A-1110 | 100% | 2025-08-31 | 2025-09-09 | TR07 | MS#04 | ENG |
| CP09-EN-TR7-S-2750 |  | Pool Shower Works Shop Drawing Submittal | 6.56d | 2025-08-18 A | 2025-08-22 A | CP09-EN-TR5-S-2010, CP09-PR-HD-A-1120, CP09-PR-HD-A-1130, CP09-PR-HD-A-1140, CP09-PR-HD-A-1150 | 100% | 2025-09-16 | 2025-09-24 | TR07 | MS#04 | ENG |
| CP09-EN-TR7-S-2760 |  | Handrails Works Shop Drawing Submittal | 6.56d | 2025-08-18 A | 2025-08-22 A | CP09-EN-TR5-S-2020, CP09-PR-HD-A-1160, CP09-PR-HD-A-1170 | 100% | 2025-09-16 | 2025-09-24 | TR07 | MS#04 | ENG |
|  | 5 | **Electrical Works** |  | 2025-07-06 | 2025-08-22 |  |  |  |  |  |  |  |
| CP09-EN-TR7-S-2780 |  | Power Cables Shop Drawing Submittal | 6.56d | 2025-07-06 A | 2025-07-10 A | CP09-EN-TR5-S-2040, CP09-PR-EL-A-1060 | 100% | 2025-07-12 | 2025-07-19 | TR07 | MS#04 | ENG |
| CP09-EN-TR7-S-2790 |  | Connecting Pillars Shop Drawing Submittal | 6.56d | 2025-08-18 A | 2025-08-22 A | CP09-EN-TR5-S-2050, CP09-PR-EL-A-1070 | 100% | 2025-08-24 | 2025-08-31 | TR07 | MS#04 | ENG |

| ID | WBS | Activity | Duration | Start | Finish | Predecessors | Complete | Planned start | Planned finish | CP09_Terrace-7 | CP09_Milestone-7 | CP09_Discipline-7 | DES |
| --- | --- | --- | --- | --- | --- | --- | --- | --- | --- | --- | --- | --- | --- |
|  | 6 | **Sinage** |  | 2024-07-29 | 2025-07-10 |  |  |  |  |  |  |  |  |
| CP09-EN-TR7-S-2800 |  | Sinage Shop Drawing Submittal | 6.56d | 2024-07-29 A | 2025-07-10 A | CP09-EN-TR5-S-2060, CP09-PR-SN-A-1000, CP09-PR-SN-A-1010, CP09-PR-SN-A-1020, CP09-PR-SN-A-1030, CP09-PR-SN-A-1040 | 100% | 2024-10-17 | 2024-10-24 | TR07 | MS#04 | ENG |  |
|  | 7 | **Play Field Equipment** |  | 2024-07-07 | 2025-08-22 |  |  |  |  |  |  |  |  |
| CP09-EN-TR7-S-2810 |  | Play Field Equipment Shop Drawing Submittal | 6.56d | 2024-07-07 A | 2025-08-22 A | CP09-EN-TR5-S-2070, CP09-PR-PE-A-1000, CP09-PR-PE-A-1010, CP09-PR-PE-A-1020, CP09-PR-PE-A-1030, CP09-PR-PE-A-1040, CP09-PR-PE-A-1050, CP09-PR-PE-A-1060, CP09-PR-PE-A-1070, CP09-PR-PE-A-1080, CP09-PR-PE-A-1090, CP09-PR-PE-A-1100 | 100% | 2024-10-23 | 2024-10-31 | TR07 | MS#04 | ENG | SO |
|  | 8 | **Irrigation Networks** |  | 2024-05-12 | 2025-07-10 |  |  |  |  |  |  |  |  |
| CP09-EN-TR7-S-2820 |  | Irrigation Networks Layout Shop Drawing Submittal | 6.56d | 2024-05-12 A | 2025-07-10 A | CP09-EN-TR5-S-2080, CP09-PR-IR-A-1000, CP09-PR-IR-A-1010, CP09-PR-IR-A-1020, CP09-PR-IR-A-1030, CP09-PR-IR-A-1040, CP09-PR-IR-A-1050, CP09-PR-IR-A-1060, CP09-PR-IR-A-1070, CP09-PR-IR-A-1080 | 100% | 2024-11-06 | 2024-11-13 | TR07 | MS#04 | ENG |  |
|  | 9 | **Planting** |  | 2024-05-12 | 2024-12-08 |  |  |  |  |  |  |  |  |
| CP09-EN-TR7-S-2830 |  | Plantings Shop Drawing Submittal | 6.56d | 2024-05-12 A | 2024-12-08 A | CP09-EN-TR5-S-2090, CP09-EN-TR7-S-2820, CP09-PR-PN-A-1000, CP09-PR-PN-A-1010, CP09-PR-PN-A-1020, CP09-PR-PN-A-1030, CP09-PR-PN-A-1040, CP09-PR-PN-A-1050, CP09-PR-PN-A-1060, CP09-PR-PN-A-1070, CP09-PR-PN-A-1080 | 100% | 2024-05-07 | 2024-05-15 | TR07 | MS#04 | ENG |  |
|  | 10 | **Lighting** |  | 2024-10-18 | 2024-10-26 |  |  |  |  |  |  |  |  |
| CP09-EN-TR7-S-2840 |  | Exterior Lighting for Softlandscape Shop Drawing Submittal | 6.56d | 2024-10-18 A | 2024-10-26 A | CP09-EN-TR5-S-2100, CP09-EN-TR7-S-2830, CP09-PR-EL-A-1080, CP09-PR-EL-A-1090, CP09-PR-EL-A-1100, CP09-PR-EL-A-1110, CP09-PR-EL-A-1120, CP09-PR-EL-A-1130 | 100% | 2025-03-12 | 2025-03-22 | TR07 | MS#04 | ENG |  |
|  | 1 | **Shopdrwaings Approval** |  | 2024-05-12 | 2026-01-16 |  |  |  |  |  |  |  |  |
|  | 1 | **Swimming Pool & MR** |  | 2024-09-05 | 2026-01-16 |  |  |  |  |  |  |  |  |
| CP09-EN-TR7-A-2560 |  | Swimmimg Pool & MR Mechnical Works-Shop Drawing Approval | 14d | 2024-09-05 A | 2024-09-05 A | CP09-EN-TR7-S-2560 FF+7d, CP09-EN-TR7-S-2560 SS+7d | 100% | 2024-11-13 | 2024-11-28 | TR07 | MS#04 | ENG |  |
| CP09-EN-TR7-A-2490 |  | Swimmimg Pool & MR Concrete dimension-Shop Drawing Approval | 14d | 2025-07-06 A | 2025-07-10 A | CP09-EN-TR7-S-2490 FF+7d, CP09-EN-TR7-S-2490 SS+7d | 100% | 2025-07-12 | 2025-07-28 | TR07 | MS#04 | ENG |  |
| CP09-EN-TR7-A-2500 |  | Swimmimg Pool & MR Steel reinforcement-Shop Drawing Approval | 14d | 2025-07-06 A | 2025-07-10 A | CP09-EN-TR7-S-2500 FF+7d, CP09-EN-TR7-S-2500 SS+7d | 100% | 2025-07-12 | 2025-07-28 | TR07 | MS#04 | ENG |  |
| CP09-EN-TR7-A-2510 |  | Swimmimg Pool & MR Water Proofing Works-Shop Drawing Approval | 14d | 2025-07-06 A | 2025-07-10 A | CP09-EN-TR7-S-2510 FF+7d, CP09-EN-TR7-S-2510 SS+7d | 100% | 2025-07-12 | 2025-07-28 | TR07 | MS#04 | ENG |  |
| CP09-EN-TR7-A-2530 |  | Swimmimg Pool & MR Granite Works-Shop Drawing Approval | 14d | 2025-08-18 A | 2025-08-22 A | CP09-EN-TR7-S-2530 FF+7d, CP09-EN-TR7-S-2530 SS+7d | 100% | 2025-10-14 | 2025-10-29 | TR07 | MS#04 | ENG |  |
| CP09-EN-TR7-A-2540 |  | Swimmimg Pool & MR Ladders Works-Shop Drawing Approval | 14d | 2025-08-18 A | 2025-08-22 A | CP09-EN-TR7-S-2540 FF+7d, CP09-EN-TR7-S-2540 SS+7d | 100% | 2025-10-22 | 2025-11-06 | TR07 | MS#04 | ENG |  |
| CP09-EN-TR7-A-2550 |  | Swimmimg Pool & MR Handrial Works-Shop Drawing Approval | 14d | 2025-08-18 A | 2025-08-22 A | CP09-EN-TR7-S-2550 FF+7d, CP09-EN-TR7-S-2550 SS+7d | 100% | 2025-10-30 | 2025-11-15 | TR07 | MS#04 | ENG |  |
| CP09-EN-TR7-A-2570 |  | Swimmimg Pool & MR Electrical Works-Shop Drawing Approval | 14d | 2025-08-18 A | 2025-08-22 A | CP09-EN-TR7-S-2570 FF+7d, CP09-EN-TR7-S-2570 SS+7d | 100% | 2025-08-24 | 2025-09-09 | TR07 | MS#04 | ENG |  |
| CP09-EN-TR7-A-2520 |  | Swimmimg Pool & MR Mosaics Works-Shop Drawing Approval | 14d | 2026-01-12 A | 2026-01-16 A | CP09-EN-TR7-S-2520 FF+7d, CP09-EN-TR7-S-2520 SS+7d | 100% | 2025-10-05 | 2025-10-21 | TR07 | MS#04 | ENG |  |
| CP09-EN-TR7-A-2850 |  | Swimmimg Pool & MR Fininshes shop drawing Approval | 14d | 2026-01-12 A | 2026-01-16 A | CP09-EN-TR7-S-2850 FF+7d, CP09-EN-TR7-S-2850 SS+7d | 100% | 2025-11-08 | 2025-11-23 | TR07 | MS#04 | ENG |  |
|  | 2 | **Earth Work** |  | 2025-07-06 | 2025-07-10 |  |  |  |  |  |  |  |  |
| CP09-EN-TR7-A-2580 |  | Sub Garde Shopdrwaings-Shop Drawing Approval | 14d | 2025-07-06 A | 2025-07-10 A | CP09-EN-TR7-S-2580 FF+7d, CP09-EN-TR7-S-2580 SS+7d | 100% | 2025-07-27 | 2025-08-11 | TR07 | MS#04 | ENG |  |

| ID | WBS | Activity | Duration | Start | Finish | Predecessors | Complete | Planned start | Planned finish | CP09_Terrace-7 | CP09_Milestone-7 | CP09_Discipline-7 |
| --- | --- | --- | --- | --- | --- | --- | --- | --- | --- | --- | --- | --- |
|  | 3 | **Cheek & Retaning Wall** |  | 2025-07-06 | 2025-07-10 |  |  |  |  |  |  |  |
| CP09-EN-TR7-A-2590 |  | Cheek & Retaning Wall Concrete dimension-ShopDrawing Approval | 14d | 2025-07-06 A | 2025-07-10 A | CP09-EN-TR7-S-2590 FF+7d, CP09-EN-TR7-S-2590 SS+7d | 100% | 2025-07-28 | 2025-08-13 | TR07 | MS#04 | ENG |
| CP09-EN-TR7-A-2600 |  | Cheek & Retaning Wall Steel reinforcement-Shop Drawing Approval | 14d | 2025-07-06 A | 2025-07-10 A | CP09-EN-TR7-S-2600 FF+7d, CP09-EN-TR7-S-2600 SS+7d | 100% | 2025-08-05 | 2025-08-21 | TR07 | MS#04 | ENG |
| CP09-EN-TR7-A-2610 |  | Cheek & Retaning Wall Water Proofing Works-Shop Drawing Approval | 14d | 2025-07-06 A | 2025-07-10 A | CP09-EN-TR7-S-2610 FF+7d, CP09-EN-TR7-S-2610 SS+7d | 100% | 2025-07-12 | 2025-07-28 | TR07 | MS#04 | ENG |
| CP09-EN-TR7-A-2620 |  | Cheek & Retaning Wall Masonary Works-Shop Drawing Approval | 14d | 2025-07-06 A | 2025-07-10 A | CP09-EN-TR7-S-2620 FF+7d, CP09-EN-TR7-S-2620 SS+7d | 100% | 2025-07-12 | 2025-07-28 | TR07 | MS#04 | ENG |
| CP09-EN-TR7-A-2630 |  | Cheek & Retaning Wall Marble Works-Shop Drawing Approval | 14d | 2025-07-06 A | 2025-07-10 A | CP09-EN-TR7-S-2630 FF+7d, CP09-EN-TR7-S-2630 SS+7d | 100% | 2025-07-12 | 2025-07-28 | TR07 | MS#04 | ENG |
|  | 4 | **Hardscape Works** |  | 2024-09-05 | 2025-08-22 |  |  |  |  |  |  |  |
| CP09-EN-TR7-A-2720 |  | Interlocking Paving Works-Shop Drawing Approval | 14d | 2024-09-05 A | 2024-09-05 A | CP09-EN-TR7-S-2720 FF+7d, CP09-EN-TR7-S-2720 SS+7d | 100% | 2024-12-14 | 2024-12-30 | TR07 | MS#04 | ENG |
| CP09-EN-TR7-A-2640 |  | Concrete Exposed Aggregate - Side Walks-Shop Drawing Approval | 14d | 2025-08-18 A | 2025-08-22 A | CP09-EN-TR7-S-2640 FF+7d, CP09-EN-TR7-S-2640 SS+7d | 100% | 2025-09-01 | 2025-09-17 | TR07 | MS#04 | ENG |
| CP09-EN-TR7-A-2650 |  | Marble Paving - Side Walks Works-Shop Drawing Approval | 14d | 2025-08-18 A | 2025-08-22 A | CP09-EN-TR7-S-2650 FF+7d, CP09-EN-TR7-S-2650 SS+7d | 100% | 2025-09-01 | 2025-09-17 | TR07 | MS#04 | ENG |
| CP09-EN-TR7-A-2660 |  | WPC - Side Walks Works -Shop Drawing Approval | 14d | 2025-08-18 A | 2025-08-22 A | CP09-EN-TR7-S-2660 FF+7d, CP09-EN-TR7-S-2660 SS+7d | 100% | 2025-09-01 | 2025-09-17 | TR07 | MS#04 | ENG |
| CP09-EN-TR7-A-2670 |  | Gravel - Side Walks Works-Shop Drawing Approval | 14d | 2025-08-18 A | 2025-08-22 A | CP09-EN-TR7-S-2670 FF+7d, CP09-EN-TR7-S-2670 SS+7d | 100% | 2025-09-01 | 2025-09-17 | TR07 | MS#04 | ENG |
| CP09-EN-TR7-A-2680 |  | Crushed Stone - Side Walks Works-Shop Drawing Approval | 14d | 2025-08-18 A | 2025-08-22 A | CP09-EN-TR7-S-2680 FF+7d, CP09-EN-TR7-S-2680 SS+7d | 100% | 2025-09-01 | 2025-09-17 | TR07 | MS#04 | ENG |
| CP09-EN-TR7-A-2690 |  | Loose Gravel - Side Walks Works-Shop Drawing Approval | 14d | 2025-08-18 A | 2025-08-22 A | CP09-EN-TR7-S-2690 FF+7d, CP09-EN-TR7-S-2690 SS+7d | 100% | 2025-09-01 | 2025-09-17 | TR07 | MS#04 | ENG |
| CP09-EN-TR7-A-2700 |  | Clean sand layer - Side Walks Works-Shop Drawing Approval | 14d | 2025-08-18 A | 2025-08-22 A | CP09-EN-TR7-S-2700 FF+7d, CP09-EN-TR7-S-2700 SS+7d | 100% | 2025-09-01 | 2025-09-17 | TR07 | MS#04 | ENG |
| CP09-EN-TR7-A-2710 |  | Flush Curb Works-Shop Drawing Approval | 14d | 2025-08-18 A | 2025-08-22 A | CP09-EN-TR7-S-2710 FF+7d, CP09-EN-TR7-S-2710 SS+7d | 100% | 2025-09-01 | 2025-09-17 | TR07 | MS#04 | ENG |
| CP09-EN-TR7-A-2730 |  | Steps Works-Shop Drawing Approval | 14d | 2025-08-18 A | 2025-08-22 A | CP09-EN-TR7-S-2730 FF+7d, CP09-EN-TR7-S-2730 SS+7d | 100% | 2025-08-24 | 2025-09-09 | TR07 | MS#04 | ENG |
| CP09-EN-TR7-A-2740 |  | Seats Works-Shop Drawing Approval | 14d | 2025-08-18 A | 2025-08-22 A | CP09-EN-TR7-S-2740 FF+7d, CP09-EN-TR7-S-2740 SS+7d | 100% | 2025-09-09 | 2025-09-25 | TR07 | MS#04 | ENG |
| CP09-EN-TR7-A-2750 |  | Pool Shower Works-Shop Drawing Approval | 14d | 2025-08-18 A | 2025-08-22 A | CP09-EN-TR7-S-2750 FF+7d, CP09-EN-TR7-S-2750 SS+7d | 100% | 2025-09-24 | 2025-10-12 | TR07 | MS#04 | ENG |
| CP09-EN-TR7-A-2760 |  | Handrails Works-Shop Drawing Approval | 14d | 2025-08-18 A | 2025-08-22 A | CP09-EN-TR7-S-2760 FF+7d, CP09-EN-TR7-S-2760 SS+7d | 100% | 2025-09-24 | 2025-10-12 | TR07 | MS#04 | ENG |
| CP09-EN-TR7-A-2770 |  | Landscape Furntiure-Shop Drawing Approval | 14d | 2025-08-18 A | 2025-08-22 A | CP09-EN-TR7-S-2770 FF+7d, CP09-EN-TR7-S-2770 SS+7d | 100% | 2025-08-24 | 2025-09-09 | TR07 | MS#04 | ENG |
|  | 5 | **Electrical Works** |  | 2025-07-06 | 2025-08-22 |  |  |  |  |  |  |  |
| CP09-EN-TR7-A-2780 |  | Power Cables-Shop Drawing Approval | 14d | 2025-07-06 A | 2025-07-10 A | CP09-EN-TR7-S-2780 FF+7d, CP09-EN-TR7-S-2780 SS+7d | 100% | 2025-07-20 | 2025-08-05 | TR07 | MS#04 | ENG |
| CP09-EN-TR7-A-2790 |  | Connecting Pillars-Shop Drawing Approval | 14d | 2025-08-18 A | 2025-08-22 A | CP09-EN-TR7-S-2790 FF+7d, CP09-EN-TR7-S-2790 SS+7d | 100% | 2025-09-01 | 2025-09-17 | TR07 | MS#04 | ENG |

| ID | WBS | Activity | Duration | Start | Finish | Predecessors | Complete | Planned start | Planned finish | CP09_Terrace-7 | CP09_Milestone-7 | CP09_Discipline-7 | DES |
| --- | --- | --- | --- | --- | --- | --- | --- | --- | --- | --- | --- | --- | --- |
|  | 6 | **Sinage** |  | 2025-07-06 | 2025-07-10 |  |  |  |  |  |  |  |  |
| CP09-EN-TR7-A-2800 |  | Sinage-Shop Drawing Approval | 14d | 2025-07-06 A | 2025-07-10 A | CP09-EN-TR7-S-2800 FF+7d, CP09-EN-TR7-S-2800 SS+7d | 100% | 2025-07-12 | 2025-07-28 | TR07 | MS#04 | ENG |  |
|  | 7 | **Play Field Equipment** |  | 2025-08-18 | 2025-08-22 |  |  |  |  |  |  |  |  |
| CP09-EN-TR7-A-2810 |  | Play Field Equipment-Shop Drawing Approval | 14d | 2025-08-18 A | 2025-08-22 A | CP09-EN-TR7-S-2810 FF+7d, CP09-EN-TR7-S-2810 SS+7d | 100% | 2025-08-24 | 2025-09-09 | TR07 | MS#04 | ENG | SO |
|  | 8 | **Irrigation Networks** |  | 2025-07-06 | 2025-07-10 |  |  |  |  |  |  |  |  |
| CP09-EN-TR7-A-2820 |  | Irrigation Networks Layout -Shop Drawing Approval | 14d | 2025-07-06 A | 2025-07-10 A | CP09-EN-TR7-S-2820 FF+7d, CP09-EN-TR7-S-2820 SS+7d | 100% | 2025-07-12 | 2025-07-28 | TR07 | MS#04 | ENG |  |
|  | 9 | **Planting** |  | 2024-05-12 | 2024-12-18 |  |  |  |  |  |  |  |  |
| CP09-EN-TR7-A-2830 |  | Plantings -Shop Drawing Approval | 14d | 2024-05-12 A | 2024-12-18 A | CP09-EN-TR7-S-2830 FF+7d, CP09-EN-TR7-S-2830 SS+7d | 100% | 2024-05-15 | 2024-06-01 | TR07 | MS#04 | ENG |  |
|  | 10 | **Lighting** |  | 2024-10-26 | 2024-10-30 |  |  |  |  |  |  |  |  |
| CP09-EN-TR7-A-2840 |  | Exterior Lighting for Softlandscape-Shop Drawing Approval | 14d | 2024-10-26 A | 2024-10-30 A | CP09-EN-TR7-S-2840 FF+7d, CP09-EN-TR7-S-2840 SS+7d | 100% | 2025-03-23 | 2025-04-15 | TR07 | MS#04 | ENG |  |
|  | 12 | **Terrace # 08** |  | 2024-05-12 | 2026-01-16 |  |  |  |  |  |  |  |  |
|  | 2 | **Shopdrwaings Submittal** |  | 2024-05-12 | 2026-01-16 |  |  |  |  |  |  |  |  |
|  | 1 | **Swimming Pool & MR** |  | 2024-08-01 | 2026-01-16 |  |  |  |  |  |  |  |  |
| CP09-EN-TR8-S-2860 |  | Swimmimg Pool & MR Concrete dimension shop drawing Submittal | 7d | 2024-08-01 A | 2025-07-10 A | CP09-CLD-1010 | 100% | 2024-09-16 | 2024-09-23 | TR08 | MS#04 | ENG |  |
| CP09-EN-TR8-S-2930 |  | Swimmimg Pool & MR Mechnical Works shop drawing Submittal | 7d | 2024-09-04 A | 2025-08-22 A | CP09-EN-TR6-S-2190, CP09-EN-TR8-S-2910, CP09-PR-ME-A-1000, CP09-PR-ME-A-1010, CP09-PR-ME-A-1020, CP09-PR-ME-A-1030, CP09-PR-ME-A-1040, CP09-PR-ME-A-1050, CP09-PR-ME-A-1060, CP09-PR-ME-A-1070, CP09-PR-ME-A-1080 | 100% | 2024-11-13 | 2024-11-20 | TR08 | MS#04 | ENG |  |
| CP09-EN-TR8-S-2940 |  | Swimmimg Pool & MR Electrical Works shop drawing Submittal | 7d | 2024-09-28 A | 2025-08-22 A | CP09-EN-TR6-S-2200, CP09-EN-TR8-S-2930, CP09-PR-EL-A-1000, CP09-PR-EL-A-1010, CP09-PR-EL-A-1020, CP09-PR-EL-A-1030, CP09-PR-EL-A-1040, CP09-PR-EL-A-1050, CP09-PR-EL-A-1140 | 100% | 2024-12-26 | 2025-01-04 | TR08 | MS#04 | ENG |  |
| CP09-EN-TR8-S-2870 |  | Swimmimg Pool & MR Steel reinforcement shop drawing Submittal | 7d | 2024-10-10 A | 2025-07-10 A | CP09-EN-TR8-S-2860 FF, CP09-EN-TR8-S-2860 | 100% | 2024-11-04 | 2024-11-11 | TR08 | MS#04 | ENG |  |
| CP09-EN-TR8-S-2900 |  | Swimmimg Pool & MR Granite Works shop drawing Submittal | 7d | 2025-08-18 A | 2025-08-22 A | CP09-EN-TR6-S-2160, CP09-EN-TR8-S-2940, CP09-PR-CV-A-1040 | 100% | 2025-10-14 | 2025-10-21 | TR08 | MS#04 | ENG |  |
| CP09-EN-TR8-S-2910 |  | Swimmimg Pool & MR Ladders Works shop drawing Submittal | 7d | 2025-08-18 A | 2025-08-22 A | CP09-EN-TR6-S-2170, CP09-EN-TR8-S-2890, CP09-PR-CV-A-1050 | 100% | 2025-10-05 | 2025-10-13 | TR08 | MS#04 | ENG |  |
| CP09-EN-TR8-S-2920 |  | Swimmimg Pool & MR Handrial Works shop drawing Submittal | 7d | 2025-08-18 A | 2025-08-22 A | CP09-EN-TR6-S-2180, CP09-EN-TR8-S-2900, CP09-PR-CV-A-1060 | 100% | 2025-10-22 | 2025-10-29 | TR08 | MS#04 | ENG |  |
| CP09-EN-TR8-S-2880 |  | Swimmimg Pool & MR Water Proofing Worksshop drawing Submittal | 7d | 2026-01-12 A | 2026-01-16 A | CP09-EN-TR6-S-2140, CP09-EN-TR8-S-2870, CP09-PR-CV-A-1010 | 100% | 2025-09-01 | 2025-09-09 | TR08 | MS#04 | ENG |  |
| CP09-EN-TR8-S-2890 |  | Swimmimg Pool & MR Mosaics Works shop drawing Submittal | 7d | 2026-01-12 A | 2026-01-16 A | CP09-EN-TR6-S-2150, CP09-EN-TR8-S-2880, CP09-PR-CV-A-1030 | 100% | 2025-09-27 | 2025-10-04 | TR08 | MS#04 | ENG |  |
| CP09-EN-TR8-S-3220 |  | Swimmimg Pool & MR Fininshes shop drawing Submittal | 7d | 2026-01-12 A | 2026-01-16 A | CP09-EN-TR6-S-2480, CP09-EN-TR8-S-2920, CP09-PR-CV-A-1070, CP09-PR-CV-A-1080, CP09-PR-CV-A-1110 | 100% | 2025-10-30 | 2025-11-06 | TR08 | MS#04 | ENG |  |
|  | 2 | **Earth Work** |  | 2025-07-06 | 2025-07-10 |  |  |  |  |  |  |  |  |
| CP09-EN-TR8-S-2950 |  | Sub Garde shop drawing Submittal | 3d | 2025-07-06 A | 2025-07-10 A | CP09-EN-TR6-S-2210, CP09-CLD-1010 | 100% | 2025-07-12 | 2025-07-14 | TR08 | MS#04 | ENG |  |

| ID | WBS | Activity | Duration | Start | Finish | Predecessors | Complete | Planned start | Planned finish | CP09_Terrace-7 | CP09_Milestone-7 | CP09_Discipline-7 |
| --- | --- | --- | --- | --- | --- | --- | --- | --- | --- | --- | --- | --- |
|  | 3 | **Cheek & Retaning Wall** |  | 2024-11-19 | 2025-07-10 |  |  |  |  |  |  |  |
| CP09-EN-TR8-S-2980 |  | Cheek & Retaning Wall Water Proofing Works shop drawing Submittal | 6.56d | 2024-11-19 A | 2024-11-26 A | CP09-EN-TR6-S-2240, CP09-EN-TR8-S-2970, CP09-PR-CV-A-1010 | 100% | 2025-01-04 | 2025-01-12 | TR08 | MS#04 | ENG |
| CP09-EN-TR8-S-2990 |  | Cheek & Retaning Wall Masonary Works shop drawing Submittal | 6.56d | 2024-11-19 A | 2024-11-26 A | CP09-EN-TR6-S-2250, CP09-EN-TR8-S-2980, CP09-PR-CV-A-1020 | 100% | 2025-01-12 | 2025-01-20 | TR08 | MS#04 | ENG |
| CP09-EN-TR8-S-3000 |  | Cheek & Retaning Wall Marble Works shop drawing Submittal | 6.56d | 2024-11-19 A | 2024-11-26 A | CP09-EN-TR6-S-2260, CP09-EN-TR8-S-2990, CP09-PR-CV-A-1120 | 100% | 2025-01-20 | 2025-01-28 | TR08 | MS#04 | ENG |
| CP09-EN-TR8-S-2960 |  | Cheek & Retaning Wall Concrete dimension shop drawing Submittal | 6.56d | 2025-07-06 A | 2025-07-10 A | CP09-EN-TR6-S-2220, CP09-PR-CV-A-1000 | 100% | 2025-07-19 | 2025-07-28 | TR08 | MS#04 | ENG |
| CP09-EN-TR8-S-2970 |  | Cheek & Retaning Wall Steel reinforcement shop drawing Submittal | 6.56d | 2025-07-06 A | 2025-07-10 A | CP09-EN-TR6-S-2230, CP09-EN-TR8-S-2960, CP09-PR-CV-A-1130 | 100% | 2025-07-28 | 2025-08-04 | TR08 | MS#04 | ENG |
|  | 4 | **Hardscape Works** |  | 2024-08-11 | 2025-08-22 |  |  |  |  |  |  |  |
| CP09-EN-TR8-S-3140 |  | Landscape Furntiure Shop Drawing Submittal | 6.56d | 2024-08-11 A | 2025-08-22 A | CP09-EN-TR6-S-2400, CP09-PR-FN-A-1000, CP09-PR-FN-A-1010, CP09-PR-FN-A-1020, CP09-PR-FN-A-1030, CP09-PR-FN-A-1040, CP09-PR-FN-A-1050, CP09-PR-FN-A-1060, CP09-PR-FN-A-1070, CP09-PR-FN-A-1080 | 100% | 2024-10-27 | 2024-11-04 | TR08 | MS#04 | ENG |
| CP09-EN-TR8-S-3090 |  | Interlocking Paving Works Shop Drawing Submittal | 6.56d | 2024-09-04 A | 2024-09-12 A | CP09-EN-TR6-S-2350, CP09-PR-HD-A-1090, CP09-PR-HD-A-1180 | 100% | 2024-12-05 | 2024-12-12 | TR08 | MS#04 | ENG |
| CP09-EN-TR8-S-3100 |  | Steps Works shop Shop Drawing Submittal | 6.56d | 2024-12-03 A | 2025-08-22 A | CP09-EN-TR6-S-2360, CP09-PR-HD-A-1100 | 100% | 2024-12-31 | 2025-01-09 | TR08 | MS#04 | ENG |
| CP09-EN-TR8-S-3010 |  | Concrete Exposed Aggregate - Side Walks Shop Drawing Submittal | 6.56d | 2025-08-18 A | 2025-08-22 A | CP09-EN-TR6-S-2270, CP09-PR-HD-A-1000 | 100% | 2025-08-24 | 2025-08-31 | TR08 | MS#04 | ENG |
| CP09-EN-TR8-S-3020 |  | Marble Paving - Side Walks Works Shop Drawing Submittal | 6.56d | 2025-08-18 A | 2025-08-22 A | CP09-EN-TR6-S-2280, CP09-PR-HD-A-1010 | 100% | 2025-08-24 | 2025-08-31 | TR08 | MS#04 | ENG |
| CP09-EN-TR8-S-3030 |  | WPC - Side Walks Works Shop Drawing Submittal | 6.56d | 2025-08-18 A | 2025-08-22 A | CP09-EN-TR6-S-2290, CP09-PR-HD-A-1020 | 100% | 2025-08-24 | 2025-08-31 | TR08 | MS#04 | ENG |
| CP09-EN-TR8-S-3040 |  | Gravel - Side Walks Works Shop Drawing Submittal | 6.56d | 2025-08-18 A | 2025-08-22 A | CP09-EN-TR6-S-2300, CP09-PR-HD-A-1030 | 100% | 2025-08-24 | 2025-08-31 | TR08 | MS#04 | ENG |
| CP09-EN-TR8-S-3050 |  | Crushed Stone - Side Walks Works Shop Drawing Submittal | 6.56d | 2025-08-18 A | 2025-08-22 A | CP09-EN-TR6-S-2310, CP09-PR-HD-A-1040 | 100% | 2025-08-24 | 2025-08-31 | TR08 | MS#04 | ENG |
| CP09-EN-TR8-S-3060 |  | Loose Gravel - Side Walks Works Shop Drawing Submittal | 6.56d | 2025-08-18 A | 2025-08-22 A | CP09-EN-TR6-S-2320, CP09-PR-HD-A-1050 | 100% | 2025-08-24 | 2025-08-31 | TR08 | MS#04 | ENG |
| CP09-EN-TR8-S-3070 |  | Clean sand layer - Side Walks Works Shop Drawing Submittal | 7d | 2025-08-18 A | 2025-08-22 A | CP09-EN-TR6-S-2330, CP09-PR-HD-A-1060, CP09-PR-HD-A-1070 | 100% | 2025-08-24 | 2025-08-31 | TR08 | MS#04 | ENG |
| CP09-EN-TR8-S-3080 |  | Flush Curb Works Shop Drawing Submittal | 6.56d | 2025-08-18 A | 2025-08-22 A | CP09-EN-TR6-S-2340, CP09-PR-HD-A-1080 | 100% | 2025-08-24 | 2025-08-31 | TR08 | MS#04 | ENG |
| CP09-EN-TR8-S-3110 |  | Seats Works Shop Shop Drawing Submittal | 6.56d | 2025-08-18 A | 2025-08-22 A | CP09-EN-TR6-S-2370, CP09-PR-HD-A-1110 | 100% | 2025-08-31 | 2025-09-09 | TR08 | MS#04 | ENG |
| CP09-EN-TR8-S-3120 |  | Pool Shower Works Shop Drawing Submittal | 6.56d | 2025-08-18 A | 2025-08-22 A | CP09-EN-TR6-S-2380, CP09-PR-HD-A-1120, CP09-PR-HD-A-1130, CP09-PR-HD-A-1140, CP09-PR-HD-A-1150 | 100% | 2025-09-16 | 2025-09-24 | TR08 | MS#04 | ENG |
| CP09-EN-TR8-S-3130 |  | Handrails Works Shop Drawing Submittal | 6.56d | 2025-08-18 A | 2025-08-22 A | CP09-EN-TR6-S-2390, CP09-PR-HD-A-1160, CP09-PR-HD-A-1170 | 100% | 2025-09-16 | 2025-09-24 | TR08 | MS#04 | ENG |
|  | 5 | **Electrical Works** |  | 2025-07-06 | 2025-08-22 |  |  |  |  |  |  |  |
| CP09-EN-TR8-S-3150 |  | Power Cables Shop Drawing Submittal | 6.56d | 2025-07-06 A | 2025-07-10 A | CP09-EN-TR6-S-2410, CP09-PR-EL-A-1060 | 100% | 2025-07-12 | 2025-07-19 | TR08 | MS#04 | ENG |
| CP09-EN-TR8-S-3160 |  | Connecting Pillars Shop Drawing Submittal | 6.56d | 2025-08-18 A | 2025-08-22 A | CP09-EN-TR6-S-2420, CP09-PR-EL-A-1070 | 100% | 2025-08-24 | 2025-08-31 | TR08 | MS#04 | ENG |

| ID | WBS | Activity | Duration | Start | Finish | Predecessors | Complete | Planned start | Planned finish | CP09_Terrace-7 | CP09_Milestone-7 | CP09_Discipline-7 | DES |
| --- | --- | --- | --- | --- | --- | --- | --- | --- | --- | --- | --- | --- | --- |
|  | 6 | **Sinage** |  | 2024-07-29 | 2025-07-10 |  |  |  |  |  |  |  |  |
| CP09-EN-TR8-S-3170 |  | Sinage Shop Drawing Submittal | 6.56d | 2024-07-29 A | 2025-07-10 A | CP09-EN-TR6-S-2430, CP09-PR-SN-A-1000, CP09-PR-SN-A-1010, CP09-PR-SN-A-1020, CP09-PR-SN-A-1030, CP09-PR-SN-A-1040 | 100% | 2024-10-17 | 2024-10-24 | TR08 | MS#04 | ENG |  |
|  | 7 | **Play Field Equipment** |  | 2024-07-07 | 2025-08-22 |  |  |  |  |  |  |  |  |
| CP09-EN-TR8-S-3180 |  | Play Field Equipment Shop Drawing Submittal | 6.56d | 2024-07-07 A | 2025-08-22 A | CP09-EN-TR6-S-2440, CP09-PR-PE-A-1000, CP09-PR-PE-A-1010, CP09-PR-PE-A-1020, CP09-PR-PE-A-1030, CP09-PR-PE-A-1040, CP09-PR-PE-A-1050, CP09-PR-PE-A-1060, CP09-PR-PE-A-1070, CP09-PR-PE-A-1080, CP09-PR-PE-A-1090, CP09-PR-PE-A-1100 | 100% | 2024-10-23 | 2024-10-31 | TR08 | MS#04 | ENG | SO |
|  | 8 | **Irrigation Networks** |  | 2024-05-12 | 2024-12-11 |  |  |  |  |  |  |  |  |
| CP09-EN-TR8-S-3190 |  | Irrigation Networks Layout Shop Drawing Submittal | 6.56d | 2024-05-12 A | 2024-12-11 A | CP09-EN-TR6-S-2450, CP09-PR-IR-A-1000, CP09-PR-IR-A-1010, CP09-PR-IR-A-1020, CP09-PR-IR-A-1030, CP09-PR-IR-A-1040, CP09-PR-IR-A-1050, CP09-PR-IR-A-1060, CP09-PR-IR-A-1070, CP09-PR-IR-A-1080 | 100% | 2024-11-11 | 2024-11-18 | TR08 | MS#04 | ENG |  |
|  | 9 | **Planting** |  | 2024-05-12 | 2025-07-10 |  |  |  |  |  |  |  |  |
| CP09-EN-TR8-S-3200 |  | Plantings Shop Drawing Submittal | 6.56d | 2024-05-12 A | 2025-07-10 A | CP09-EN-TR6-S-2460, CP09-EN-TR8-S-3190, CP09-EN-TR8-S-3190 FF, CP09-PR-PN-A-1000, CP09-PR-PN-A-1010, CP09-PR-PN-A-1020, CP09-PR-PN-A-1030, CP09-PR-PN-A-1040, CP09-PR-PN-A-1050, CP09-PR-PN-A-1060, CP09-PR-PN-A-1070, CP09-PR-PN-A-1080 | 100% | 2024-05-07 | 2024-05-15 | TR08 | MS#04 | ENG |  |
|  | 10 | **Lighting** |  | 2024-10-19 | 2024-10-27 |  |  |  |  |  |  |  |  |
| CP09-EN-TR8-S-3210 |  | Exterior Lighting for Softlandscape Shop Drawing Submittal | 6.56d | 2024-10-19 A | 2024-10-27 A | CP09-EN-TR6-S-2470, CP09-EN-TR8-S-3200, CP09-EN-TR8-S-3200 FF, CP09-PR-EL-A-1080, CP09-PR-EL-A-1090, CP09-PR-EL-A-1100, CP09-PR-EL-A-1110, CP09-PR-EL-A-1120, CP09-PR-EL-A-1130 | 100% | 2025-03-08 | 2025-03-18 | TR08 | MS#04 | ENG |  |
|  | 1 | **Shopdrwaings Approval** |  | 2024-09-12 | 2026-01-16 |  |  |  |  |  |  |  |  |
|  | 1 | **Swimming Pool & MR** |  | 2025-07-06 | 2026-01-16 |  |  |  |  |  |  |  |  |
| CP09-EN-TR8-A-2860 |  | Swimmimg Pool & MR Concrete dimension-Shop Drawing Approval | 14d | 2025-07-06 A | 2025-07-10 A | CP09-EN-TR8-S-2860 FF+7d, CP09-EN-TR8-S-2860 SS+7d | 100% | 2025-07-12 | 2025-07-28 | TR08 | MS#04 | ENG |  |
| CP09-EN-TR8-A-2870 |  | Swimmimg Pool & MR Steel reinforcement-Shop Drawing Approval | 14d | 2025-07-06 A | 2025-07-10 A | CP09-EN-TR8-S-2870 FF+7d, CP09-EN-TR8-S-2870 SS+7d | 100% | 2025-07-12 | 2025-07-28 | TR08 | MS#04 | ENG |  |
| CP09-EN-TR8-A-2900 |  | Swimmimg Pool & MR Granite Works-Shop Drawing Approval | 14d | 2025-08-18 A | 2025-08-22 A | CP09-EN-TR8-S-2900 FF+7d, CP09-EN-TR8-S-2900 SS+7d | 100% | 2025-10-22 | 2025-11-06 | TR08 | MS#04 | ENG |  |
| CP09-EN-TR8-A-2910 |  | Swimmimg Pool & MR Ladders Works-Shop Drawing Approval | 14d | 2025-08-18 A | 2025-08-22 A | CP09-EN-TR8-S-2910 FF+7d, CP09-EN-TR8-S-2910 SS+7d | 100% | 2025-10-14 | 2025-10-29 | TR08 | MS#04 | ENG |  |
| CP09-EN-TR8-A-2920 |  | Swimmimg Pool & MR Handrial Works-Shop Drawing Approval | 14d | 2025-08-18 A | 2025-08-22 A | CP09-EN-TR8-S-2920 FF+7d, CP09-EN-TR8-S-2920 SS+7d | 100% | 2025-10-30 | 2025-11-15 | TR08 | MS#04 | ENG |  |
| CP09-EN-TR8-A-2930 |  | Swimmimg Pool & MR Mechnical Works-Shop Drawing Approval | 14d | 2025-08-18 A | 2025-08-22 A | CP09-EN-TR8-S-2930 FF+7d, CP09-EN-TR8-S-2930 SS+7d | 100% | 2025-08-24 | 2025-09-09 | TR08 | MS#04 | ENG |  |
| CP09-EN-TR8-A-2880 |  | Swimmimg Pool & MR Water Proofing Works-Shop Drawing Approval | 14d | 2026-01-12 A | 2026-01-16 A | CP09-EN-TR8-S-2880 FF+7d, CP09-EN-TR8-S-2880 SS+7d | 100% | 2025-09-10 | 2025-09-25 | TR08 | MS#04 | ENG |  |
| CP09-EN-TR8-A-2890 |  | Swimmimg Pool & MR Mosaics Works-Shop Drawing Approval | 14d | 2026-01-12 A | 2026-01-16 A | CP09-EN-TR8-S-2890 FF+7d, CP09-EN-TR8-S-2890 SS+7d | 100% | 2025-10-05 | 2025-10-21 | TR08 | MS#04 | ENG |  |
| CP09-EN-TR8-A-2940 |  | Swimmimg Pool & MR Electrical Works-Shop Drawing Approval | 14d | 2026-01-12 A | 2026-01-16 A | CP09-EN-TR8-S-2940 FF+7d, CP09-EN-TR8-S-2940 SS+7d | 100% | 2025-08-24 | 2025-09-09 | TR08 | MS#04 | ENG |  |
| CP09-EN-TR8-A-3220 |  | Swimmimg Pool & MR Fininshes shop drawing Approval | 14d | 2026-01-12 A | 2026-01-16 A | CP09-EN-TR8-S-3220 FF+7d, CP09-EN-TR8-S-3220 SS+7d | 100% | 2025-11-08 | 2025-11-23 | TR08 | MS#04 | ENG |  |
|  | 2 | **Earth Work** |  | 2025-07-06 | 2025-07-10 |  |  |  |  |  |  |  |  |
| CP09-EN-TR8-A-2950 |  | Sub Garde Shopdrwaings-Shop Drawing Approval | 14d | 2025-07-06 A | 2025-07-10 A | CP09-EN-TR8-S-2950 FF+7d, CP09-EN-TR8-S-2950 SS+7d | 100% | 2025-07-20 | 2025-08-05 | TR08 | MS#04 | ENG |  |

| ID | WBS | Activity | Duration | Start | Finish | Predecessors | Complete | Planned start | Planned finish | CP09_Terrace-7 | CP09_Milestone-7 | CP09_Discipline-7 |
| --- | --- | --- | --- | --- | --- | --- | --- | --- | --- | --- | --- | --- |
|  | 3 | **Cheek & Retaning Wall** |  | 2024-11-26 | 2025-07-10 |  |  |  |  |  |  |  |
| CP09-EN-TR8-A-2980 |  | Cheek & Retaning Wall Water Proofing Works-Shop Drawing Approval | 14d | 2024-11-26 A | 2024-12-03 A | CP09-EN-TR8-S-2980 FF+7d, CP09-EN-TR8-S-2980 SS+7d | 100% | 2025-01-13 | 2025-01-30 | TR08 | MS#04 | ENG |
| CP09-EN-TR8-A-2990 |  | Cheek & Retaning Wall Masonary Works-Shop Drawing Approval | 14d | 2024-11-26 A | 2024-12-03 A | CP09-EN-TR8-S-2990 FF+7d, CP09-EN-TR8-S-2990 SS+7d | 100% | 2025-01-20 | 2025-02-06 | TR08 | MS#04 | ENG |
| CP09-EN-TR8-A-3000 |  | Cheek & Retaning Wall Marble Works-Shop Drawing Approval | 14d | 2024-11-26 A | 2024-12-03 A | CP09-EN-TR8-S-3000 FF+7d, CP09-EN-TR8-S-3000 SS+7d | 100% | 2025-01-29 | 2025-02-15 | TR08 | MS#04 | ENG |
| CP09-EN-TR8-A-2960 |  | Cheek & Retaning Wall Concrete dimension-ShopDrawing Approval | 14d | 2025-07-06 A | 2025-07-10 A | CP09-EN-TR8-S-2960 FF+7d, CP09-EN-TR8-S-2960 SS+7d | 100% | 2025-07-28 | 2025-08-13 | TR08 | MS#04 | ENG |
| CP09-EN-TR8-A-2970 |  | Cheek & Retaning Wall Steel reinforcement-Shop Drawing Approval | 14d | 2025-07-06 A | 2025-07-10 A | CP09-EN-TR8-S-2970 FF+7d, CP09-EN-TR8-S-2970 SS+7d | 100% | 2025-08-05 | 2025-08-21 | TR08 | MS#04 | ENG |
|  | 4 | **Hardscape Works** |  | 2024-09-12 | 2025-08-22 |  |  |  |  |  |  |  |
| CP09-EN-TR8-A-3090 |  | Interlocking Paving Works-Shop Drawing Approval | 14d | 2024-09-12 A | 2024-09-12 A | CP09-EN-TR8-S-3090 FF+7d, CP09-EN-TR8-S-3090 SS+7d | 100% | 2024-12-14 | 2024-12-30 | TR08 | MS#04 | ENG |
| CP09-EN-TR8-A-3010 |  | Concrete Exposed Aggregate - Side Walks-Shop Drawing Approval | 14d | 2025-08-18 A | 2025-08-22 A | CP09-EN-TR8-S-3010 FF+7d, CP09-EN-TR8-S-3010 SS+7d | 100% | 2025-09-01 | 2025-09-17 | TR08 | MS#04 | ENG |
| CP09-EN-TR8-A-3020 |  | Marble Paving - Side Walks Works-Shop Drawing Approval | 14d | 2025-08-18 A | 2025-08-22 A | CP09-EN-TR8-S-3020 FF+7d, CP09-EN-TR8-S-3020 SS+7d | 100% | 2025-09-01 | 2025-09-17 | TR08 | MS#04 | ENG |
| CP09-EN-TR8-A-3030 |  | WPC - Side Walks Works -Shop Drawing Approval | 14d | 2025-08-18 A | 2025-08-22 A | CP09-EN-TR8-S-3030 FF+7d, CP09-EN-TR8-S-3030 SS+7d | 100% | 2025-09-01 | 2025-09-17 | TR08 | MS#04 | ENG |
| CP09-EN-TR8-A-3040 |  | Gravel - Side Walks Works-Shop Drawing Approval | 14d | 2025-08-18 A | 2025-08-22 A | CP09-EN-TR8-S-3040 FF+7d, CP09-EN-TR8-S-3040 SS+7d | 100% | 2025-09-01 | 2025-09-17 | TR08 | MS#04 | ENG |
| CP09-EN-TR8-A-3050 |  | Crushed Stone - Side Walks Works-Shop Drawing Approval | 14d | 2025-08-18 A | 2025-08-22 A | CP09-EN-TR8-S-3050 FF+7d, CP09-EN-TR8-S-3050 SS+7d | 100% | 2025-09-01 | 2025-09-17 | TR08 | MS#04 | ENG |
| CP09-EN-TR8-A-3060 |  | Loose Gravel - Side Walks Works-Shop Drawing Approval | 14d | 2025-08-18 A | 2025-08-22 A | CP09-EN-TR8-S-3060 FF+7d, CP09-EN-TR8-S-3060 SS+7d | 100% | 2025-09-01 | 2025-09-17 | TR08 | MS#04 | ENG |
| CP09-EN-TR8-A-3070 |  | Clean sand layer - Side Walks Works-Shop Drawing Approval | 14d | 2025-08-18 A | 2025-08-22 A | CP09-EN-TR8-S-3070 FF+7d, CP09-EN-TR8-S-3070 SS+7d | 100% | 2025-09-01 | 2025-09-17 | TR08 | MS#04 | ENG |
| CP09-EN-TR8-A-3080 |  | Flush Curb Works-Shop Drawing Approval | 14d | 2025-08-18 A | 2025-08-22 A | CP09-EN-TR8-S-3080 FF+7d, CP09-EN-TR8-S-3080 SS+7d | 100% | 2025-09-01 | 2025-09-17 | TR08 | MS#04 | ENG |
| CP09-EN-TR8-A-3100 |  | Steps Works-Shop Drawing Approval | 14d | 2025-08-18 A | 2025-08-22 A | CP09-EN-TR8-S-3100 FF+7d, CP09-EN-TR8-S-3100 SS+7d | 100% | 2025-08-24 | 2025-09-09 | TR08 | MS#04 | ENG |
| CP09-EN-TR8-A-3110 |  | Seats Works-Shop Drawing Approval | 14d | 2025-08-18 A | 2025-08-22 A | CP09-EN-TR8-S-3110 FF+7d, CP09-EN-TR8-S-3110 SS+7d | 100% | 2025-09-09 | 2025-09-25 | TR08 | MS#04 | ENG |
| CP09-EN-TR8-A-3120 |  | Pool Shower Works-Shop Drawing Approval | 14d | 2025-08-18 A | 2025-08-22 A | CP09-EN-TR8-S-3120 FF+7d, CP09-EN-TR8-S-3120 SS+7d | 100% | 2025-09-24 | 2025-10-12 | TR08 | MS#04 | ENG |
| CP09-EN-TR8-A-3130 |  | Handrails Works-Shop Drawing Approval | 14d | 2025-08-18 A | 2025-08-22 A | CP09-EN-TR8-S-3130 FF+7d, CP09-EN-TR8-S-3130 SS+7d | 100% | 2025-09-24 | 2025-10-12 | TR08 | MS#04 | ENG |
| CP09-EN-TR8-A-3140 |  | Landscape Furntiure-Shop Drawing Approval | 14d | 2025-08-18 A | 2025-08-22 A | CP09-EN-TR8-S-3140 FF+7d, CP09-EN-TR8-S-3140 SS+7d | 100% | 2025-08-24 | 2025-09-09 | TR08 | MS#04 | ENG |
|  | 5 | **Electrical Works** |  | 2025-07-06 | 2025-08-22 |  |  |  |  |  |  |  |
| CP09-EN-TR8-A-3150 |  | Power Cables-Shop Drawing Approval | 14d | 2025-07-06 A | 2025-07-10 A | CP09-EN-TR8-S-3150 FF+7d, CP09-EN-TR8-S-3150 SS+7d | 100% | 2025-07-20 | 2025-08-05 | TR08 | MS#04 | ENG |
| CP09-EN-TR8-A-3160 |  | Connecting Pillars-Shop Drawing Approval | 14d | 2025-08-18 A | 2025-08-22 A | CP09-EN-TR8-S-3160 FF+7d, CP09-EN-TR8-S-3160 SS+7d | 100% | 2025-09-01 | 2025-09-17 | TR08 | MS#04 | ENG |

| ID | WBS | Activity | Duration | Start | Finish | Predecessors | Complete | Planned start | Planned finish | Resources | Cost | Actual cost | CP09_Terrace-7 | CP09_Milestone-7 | CP09_Discipline-7 | DES | CP09-Trade | Walls |
| --- | --- | --- | --- | --- | --- | --- | --- | --- | --- | --- | --- | --- | --- | --- | --- | --- | --- | --- |
|  | 6 | **Sinage** |  | 2025-07-06 | 2025-07-10 |  |  |  |  |  |  |  |  |  |  |  |  |  |
| CP09-EN-TR8-A-3170 |  | Sinage-Shop Drawing Approval | 14d | 2025-07-06 A | 2025-07-10 A | CP09-EN-TR8-S-3170 FF+7d, CP09-EN-TR8-S-3170 SS+7d | 100% | 2025-07-12 | 2025-07-28 |  |  |  | TR08 | MS#04 | ENG |  |  |  |
|  | 7 | **Play Field Equipment** |  | 2025-08-18 | 2025-08-22 |  |  |  |  |  |  |  |  |  |  |  |  |  |
| CP09-EN-TR8-A-3180 |  | Play Field Equipment-Shop Drawing Approval | 14d | 2025-08-18 A | 2025-08-22 A | CP09-EN-TR8-S-3180 FF+7d, CP09-EN-TR8-S-3180 SS+7d | 100% | 2025-08-24 | 2025-09-09 |  |  |  | TR08 | MS#04 | ENG | SO |  |  |
|  | 8 | **Irrigation Networks** |  | 2025-07-06 | 2025-07-10 |  |  |  |  |  |  |  |  |  |  |  |  |  |
| CP09-EN-TR8-A-3190 |  | Irrigation Networks Layout -Shop Drawing Approval | 14d | 2025-07-06 A | 2025-07-10 A | CP09-EN-TR8-S-3190 FF+7d, CP09-EN-TR8-S-3190 SS+7d | 100% | 2025-07-12 | 2025-07-28 |  |  |  | TR08 | MS#04 | ENG |  |  |  |
|  | 9 | **Planting** |  | 2024-12-10 | 2024-12-19 |  |  |  |  |  |  |  |  |  |  |  |  |  |
| CP09-EN-TR8-A-3200 |  | Plantings -Shop Drawing Approval | 14d | 2024-12-10 A | 2024-12-19 A | CP09-EN-TR8-S-3200 FF+7d, CP09-EN-TR8-S-3200 SS+7d | 100% | 2025-03-02 | 2025-03-23 |  |  |  | TR08 | MS#04 | ENG |  |  |  |
|  | 10 | **Lighting** |  | 2024-10-27 | 2024-11-03 |  |  |  |  |  |  |  |  |  |  |  |  |  |
| CP09-EN-TR8-A-3210 |  | Exterior Lighting for Softlandscape-Shop Drawing Approval | 14d | 2024-10-27 A | 2024-11-03 A | CP09-EN-TR8-S-3210 FF+7d, CP09-EN-TR8-S-3210 SS+7d | 100% | 2025-03-19 | 2025-04-13 |  |  |  | TR08 | MS#04 | ENG |  |  |  |
|  | 4 | **Construction** |  | 2024-02-10 | 2026-10-13 |  |  |  |  |  |  |  |  |  |  |  |  |  |
|  | 15 | **Terrace # 01** |  | 2024-08-24 | 2026-07-18 |  |  |  |  |  |  |  |  |  |  |  |  |  |
|  | 6 | **Earth Work** |  | 2024-08-24 | 2025-03-16 |  |  |  |  |  |  |  |  |  |  |  |  |  |
|  | 1 | **Grading works** |  | 2024-08-24 | 2025-03-16 |  |  |  |  |  |  |  |  |  |  |  |  |  |
| CP09-TR1-EW-1030 |  | Excavation work to Reduce Level | 6d | 2024-08-24 A | 2025-03-16 A | CP09-MB-1010, CP09-EN-TR1-A-1470, CP09-CLD-1000, CP09-MS-1010 FS+4d | 100% | 2024-08-25 | 2024-08-31 | Cost; EXCAVATOR; LOADER; TRUCK; Labor [48 h]; Excavation |  |  | TR01 | MS#01 | CON | HD | E-W |  |
| CP09-TR1-EW-1040 |  | Filling works to make up levels with Compacting | 6d | 2024-08-24 A | 2025-03-16 A | CP09-TR1-EW-1030 SS+4.69d, CP09-EN-TR1-A-1470, CP09-MS-1010, CP09-CLD-1000 | 100% | 2024-08-31 | 2024-09-05 | Cost; Labor [48 h]; Filling |  |  | TR01 | MS#01 | CON | HD | E-W |  |
|  | 2 | **Planting** |  | 2024-08-24 | 2025-03-16 |  |  |  |  |  |  |  |  |  |  |  |  |  |
| CP09-TR1-EW-1050 |  | Excavation works for Planting Beds | 6d | 2024-08-24 A | 2025-03-16 A | CP09-TR1-EW-1030 SS, CP09-TR1-EW-1040 SS, CP09-EN-TR1-A-1470 | 100% | 2024-08-29 | 2024-09-05 | Cost [915350]; EXCAVATOR [4544 h]; LOADER [5456 h]; TRUCK [5456 h]; Labor [280 h]; Excavation [5681.88 M3] | 915,350.06 | 915,350 | TR01 | MS#01 | CON | HD | E-W |  |
|  | 9 | **Retaining & Cheek Walls** |  | 2025-09-01 | 2025-09-28 |  |  |  |  |  |  |  |  |  |  |  |  |  |
|  | 1 | **Soild Block Work Cheek Walls** |  | 2025-09-01 | 2025-09-28 |  |  |  |  |  |  |  |  |  |  |  |  |  |
| CP09-TR1-RW-1230 |  | Plaing Concrete with HPDE | 2d | 2025-09-01 A | 2025-09-28 A | CP09-TR1-RW-1280 SS+2.81d, CP09-TR1-RW-1280 FF+2.81d, CP09-EN-TR1-A-1480 | 100% | 2025-09-02 | 2025-09-06 | Cost [25885]; Mason [27 h]; Labor [48 h]; Plain Concrete [38.81 M3]; HDPE | 25,884.99 | 25,885 | TR01 | MS#01 | CON | HD | RE&CW | CHW |
| CP09-TR1-RW-1240 |  | Reinforced Concrete for Footing | 4d | 2025-09-01 A | 2025-09-28 A | CP09-TR1-RW-1230 SS+2d, CP09-TR1-RW-1230 FF+2d, CP09-EN-TR1-A-1490, CP09-EN-TR1-A-1480 | 100% | 2025-09-06 | 2025-09-10 | Cost [194137]; Mason [48 h]; Steel Fixer [45 h]; Shutter [48 h]; Labor [48 h]; Reinforced Concrete [12.94 M3] | 194,137.42 | 194,137 | TR01 | MS#01 | CON | HD | RE&CW | CHW |
| CP09-TR1-RW-1250 |  | Reinforced Concrete for Tie beam | 4.69d | 2025-09-01 A | 2025-09-28 A | CP09-TR1-RW-1240 SS+2d, CP09-TR1-RW-1240 FF+2d | 100% | 2025-09-08 | 2025-09-14 | Cost [32356.2]; Mason [48 h]; Steel Fixer [48 h]; Shutter [48 h]; Labor [48 h]; Reinforced Concrete | 32,356.24 | 32,356 | TR01 | MS#01 | CON | HD | RE&CW | CHW |
| CP09-TR1-RW-1260 |  | Reinforced Concrete for Column | 3d | 2025-09-01 A | 2025-09-28 A | CP09-TR1-RW-1250 SS+2.81d, CP09-TR1-RW-1250 FF+2.81d | 100% | 2025-09-14 | 2025-09-17 | Cost [32356.2]; Mason [48 h]; Steel Fixer [48 h]; Shutter [48 h]; Labor [48 h]; Reinforced Concrete | 32,356.24 | 32,356 | TR01 | MS#01 | CON | HD | RE&CW | CHW |
| CP09-TR1-RW-1270 |  | Soild Block Work | 3d | 2025-09-01 A | 2025-09-28 A | CP09-TR1-RW-1260 SS+2d, CP09-TR1-RW-1260 FF+2d, CP09-EN-TR1-A-1510, CP09-PR-CV-DY-1020 | 100% | 2025-09-16 | 2025-09-20 | Cost [64712.5]; Mason [38 h]; Labor [48 h]; Blocks [10.35] | 64,712.47 | 64,712 | TR01 | MS#01 | CON | HD | RE&CW | CHW |
| CP09-TR1-RW-1280 |  | Excavation | 3.75d | 2025-09-01 A | 2025-09-28 A | CP09-TR1-EW-1030, CP09-TR1-EW-1040 | 100% | 2025-08-28 | 2025-09-01 | Cost [19413.7]; EXCAVATOR [48 h]; LOADER [56 h]; TRUCK [56 h]; Labor [31 h]; Excavation [60.55 M3] | 19,413.74 | 19,414 | TR01 | MS#01 | CON | HD | RE&CW | CHW |
| CP09-TR1-RW-1290 |  | Reinforced Concrete for Beam | 4d | 2025-09-01 A | 2025-09-28 A | CP09-TR1-RW-1270 SS+2d, CP09-TR1-RW-1270 FF+2d | 100% | 2025-09-18 | 2025-09-23 | Cost [64712.5]; Mason [12 h]; Steel Fixer [207 h]; Shutter [17 h]; Labor [48 h]; Reinforced Concrete [4.14 M3] | 64,712.47 | 64,712 | TR01 | MS#01 | CON | HD | RE&CW | CHW |
| CP09-TR1-RW-1300 |  | Waterproofing & Protection | 3d | 2025-09-01 A | 2025-09-28 A | CP09-TR1-RW-1290 SS+2d, CP09-TR1-RW-1290 FF+2d, CP09-EN-TR1-A-1500 | 100% | 2025-09-22 | 2025-09-25 | Cost [25885]; Mason [10.08 h]; Labor [48 h]; Waterproofing [14.49 M2] | 25,884.99 | 25,885 | TR01 | MS#01 | CON | HD | RE&CW | CHW |
| CP09-TR1-RW-1310 |  | Backfilling | 3d | 2025-09-01 A | 2025-09-28 A | CP09-TR1-RW-1300 SS+2d, CP09-TR1-RW-1300 FF+2d | 100% | 2025-09-24 | 2025-09-28 | Cost [25885]; Labor [25 h]; Backfilling [41.14 M3] | 25,884.99 | 25,885 | TR01 | MS#01 | CON | HD | RE&CW | CHW |
| CP09-TR1-RW-1320 |  | Marble Cladding | 4d | 2025-09-01 A | 2025-09-28 A | CP09-TR1-RW-1310 SS+1d, CP09-TR1-RW-1310 FF+1d, CP09-EN-TR1-A-1520, CP09-PR-CV-DY-1120 | 100% | 2025-09-25 | 2025-09-30 | Cost [129425]; Mason [88 h]; Labor [48 h]; Marble [31.05] | 129,424.95 | 129,425 | TR01 | MS#01 | CON | HD | RE&CW | CHW |
| CP09-TR1-RW-1330 |  | Marble Copping | 4d | 2025-09-01 A | 2025-09-28 A | CP09-TR1-RW-1320 SS+2d, CP09-TR1-RW-1320 FF+2d, CP09-EN-TR1-A-1520, CP09-PR-CV-DY-1120 | 100% | 2025-09-28 | 2025-10-02 | Cost [32356.2]; Mason [181 h]; Labor [48 h]; Marble Coping [25.88] | 32,356.24 | 32,356 | TR01 | MS#01 | CON | HD | RE&CW | CHW |

| ID | WBS | Activity | Duration | Start | Finish | Predecessors | Complete | Remaining | Planned start | Planned finish | Total float | Free float | Resources | Cost | Actual cost | Walls | CP09_Terrace-7 | CP09-Trade | CP09_Milestone-7 | CP09_Discipline-7 | DES | Networks |
| --- | --- | --- | --- | --- | --- | --- | --- | --- | --- | --- | --- | --- | --- | --- | --- | --- | --- | --- | --- | --- | --- | --- |
|  | 2 | **Solid Block Retaining Walls** |  | 2025-09-01 | 2025-09-28 |  |  |  |  |  |  |  |  |  |  |  |  |  |  |  |  |  |
| CP09-TR1-RW-1340 |  | Plaing Concrete with HPDE | 2d | 2025-09-01 A | 2025-09-28 A | CP09-TR1-RW-1390 SS+2d, CP09-TR1-RW-1390 FF+2d, CP09-EN-TR1-A-1480 | 100% |  | 2025-09-01 | 2025-09-03 |  |  | Cost [7990.96]; Mason [27 h]; Labor [48 h]; Plain Concrete [38.81 M3]; HDPE | 7,990.96 | 7,991 | RW | TR01 | RE&CW | MS#01 | CON | HD |  |
| CP09-TR1-RW-1350 |  | Reinforced Concrete for Footing | 4d | 2025-09-01 A | 2025-09-28 A | CP09-TR1-RW-1340 SS+1d, CP09-TR1-RW-1340 FF+1d, CP09-EN-TR1-A-1480, CP09-EN-TR1-A-1490 | 100% |  | 2025-09-02 | 2025-09-08 |  |  | Cost [59932.2]; Mason [48 h]; Steel Fixer [45 h]; Shutter [48 h]; Labor [48 h]; Reinforced Concrete [12.94 M3] | 59,932.18 | 59,932 | RW | TR01 | RE&CW | MS#01 | CON | HD |  |
| CP09-TR1-RW-1360 |  | Reinforced Concrete for Tie beam | 5d | 2025-09-01 A | 2025-09-28 A | CP09-TR1-RW-1350 SS+2d, CP09-TR1-RW-1350 FF+2d | 100% |  | 2025-09-06 | 2025-09-11 |  |  | Cost [9988.7]; Mason [48 h]; Steel Fixer [48 h]; Shutter [48 h]; Labor [48 h]; Reinforced Concrete | 9,988.7 | 9,989 | RW | TR01 | RE&CW | MS#01 | CON | HD |  |
| CP09-TR1-RW-1370 |  | Reinforced Concrete for Column | 3d | 2025-09-01 A | 2025-09-28 A | CP09-TR1-RW-1360 SS+2d, CP09-TR1-RW-1360 FF+2d | 100% |  | 2025-09-10 | 2025-09-14 |  |  | Cost [9988.7]; Mason [48 h]; Steel Fixer [48 h]; Shutter [48 h]; Labor [48 h]; Reinforced Concrete | 9,988.7 | 9,989 | RW | TR01 | RE&CW | MS#01 | CON | HD |  |
| CP09-TR1-RW-1380 |  | Soild Block Work | 3d | 2025-09-01 A | 2025-09-28 A | CP09-TR1-RW-1370 SS+1d, CP09-TR1-RW-1370 FF+1d, CP09-EN-TR1-A-1510 | 100% |  | 2025-09-11 | 2025-09-15 |  |  | Cost [19977.4]; Mason [38 h]; Labor [48 h]; Blocks [10.35] | 19,977.39 | 19,977 | RW | TR01 | RE&CW | MS#01 | CON | HD |  |
| CP09-TR1-RW-1390 |  | Excavation | 3.75d | 2025-09-01 A | 2025-09-28 A | CP09-TR1-EW-1030, CP09-TR1-EW-1040 | 100% |  | 2025-08-28 | 2025-09-01 |  |  | Cost [5993.22]; EXCAVATOR [48 h]; LOADER [56 h]; TRUCK [56 h]; Labor [31 h]; Excavation [60.55 M3] | 5,993.22 | 5,993 | RW | TR01 | RE&CW | MS#01 | CON | HD |  |
| CP09-TR1-RW-1400 |  | Reinforced Concrete for Beam | 4d | 2025-09-01 A | 2025-09-28 A | CP09-TR1-RW-1380 SS+1d, CP09-TR1-RW-1380 FF+1d | 100% |  | 2025-09-13 | 2025-09-17 |  |  | Cost [19977.4]; Mason [12 h]; Steel Fixer [207 h]; Shutter [17 h]; Labor [48 h]; Reinforced Concrete [4.14 M3] | 19,977.39 | 19,977 | RW | TR01 | RE&CW | MS#01 | CON | HD |  |
| CP09-TR1-RW-1410 |  | Waterproofing & Protection | 3d | 2025-09-01 A | 2025-09-28 A | CP09-TR1-RW-1400 SS+2d, CP09-TR1-RW-1400 FF+2d | 100% |  | 2025-09-16 | 2025-09-20 |  |  | Cost [7990.96]; Mason [10.08 h]; Labor [48 h]; Waterproofing [14.49 M2] | 7,990.96 | 7,991 | RW | TR01 | RE&CW | MS#01 | CON | HD |  |
| CP09-TR1-RW-1420 |  | Backfilling | 3d | 2025-09-01 A | 2025-09-28 A | CP09-TR1-RW-1410 SS+1d, CP09-TR1-RW-1410 FF+1d | 100% |  | 2025-09-17 | 2025-09-21 |  |  | Cost [7990.96]; Labor [25 h]; Backfilling [41.14 M3] | 7,990.96 | 7,991 | RW | TR01 | RE&CW | MS#01 | CON | HD |  |
| CP09-TR1-RW-1430 |  | Marble Cladding | 4d | 2025-09-01 A | 2025-09-28 A | CP09-TR1-RW-1420 SS+1d, CP09-TR1-RW-1420 FF+1d, CP09-EN-TR1-A-1520, CP09-PR-CV-DY-1120 | 100% |  | 2025-09-18 | 2025-09-23 |  |  | Cost [39954.8]; Mason [88 h]; Labor [48 h]; Marble [31.05] | 39,954.79 | 39,955 | RW | TR01 | RE&CW | MS#01 | CON | HD |  |
| CP09-TR1-RW-1440 |  | Marble Copping | 4d | 2025-09-01 A | 2025-09-28 A | CP09-TR1-RW-1430 SS+2d, CP09-TR1-RW-1430 FF+2d, CP09-EN-TR1-A-1520, CP09-PR-CV-DY-1120 | 100% |  | 2025-09-21 | 2025-09-25 |  |  | Cost [9988.7]; Mason [181 h]; Labor [48 h]; Marble Coping [25.88] | 9,988.7 | 9,989 | RW | TR01 | RE&CW | MS#01 | CON | HD |  |
|  | 1 | **Irrigation Works** |  | 2025-01-07 | 2026-06-14 |  |  |  |  |  |  |  |  |  |  |  |  |  |  |  |  |  |
|  | 1 | **Sub-Main & Lateral** |  | 2025-01-07 | 2025-06-20 |  |  |  |  |  |  |  |  |  |  |  |  |  |  |  |  |  |
| CP09-TR1-IR-1110 |  | Excavation for Sub-main & Lateral Pieps | 4d | 2025-01-07 A | 2025-06-20 A | CP09-EN-TR1-A-1710, CP09-TR1-HD-2380 | 100% |  | 2025-01-27 | 2025-02-01 |  |  | Cost [484535]; EXCAVATOR [4784 h]; LOADER [5744 h]; TRUCK [5744 h]; Labor [48 h]; Excavation [7977.8 M3] | 484,535.36 | 484,535 |  | TR01 | IRR-W | MS#01 | CON | SO | IRR |
| CP09-TR1-IR-1120 |  | Sub-main & Lateral Pieps laying out and installation | 5d | 2025-02-03 A | 2025-06-20 A | CP09-TR1-IR-1110 SS+2d, CP09-TR1-IR-1110 FF+5d, CP09-PR-IR-DY-1000 | 100% |  | 2025-02-24 | 2025-03-03 |  |  | Cost [872164]; PipeFitter [280 h]; Labor [48 h]; UPVC Pipes [7977.8 M] | 872,163.65 | 872,164 |  | TR01 | IRR-W | MS#01 | CON | SO | IRR |
| CP09-TR1-IR-1130 |  | Sub-main & Lateral Pieps Testing | 3d | 2025-02-05 A | 2025-06-20 A | CP09-TR1-IR-1120 SS+2d, CP09-TR1-IR-1120 FF+2d | 100% |  | 2025-03-02 | 2025-03-06 |  |  | Cost [96907.1] | 96,907.07 | 96,907 |  | TR01 | IRR-W | MS#01 | CON | SO | IRR |
| CP09-TR1-IR-1140 |  | Backfilling forSub-main & Lateral Pieps | 4d | 2025-02-06 A | 2025-06-20 A | CP09-TR1-IR-1130 SS+2d, CP09-TR1-IR-1130 FF+2d | 100% |  | 2025-03-04 | 2025-03-11 |  |  | Cost [484535]; Labor [48 h]; Backfilling [7977.8 M3] | 484,535.36 | 484,535 |  | TR01 | IRR-W | MS#01 | CON | SO | IRR |
|  | 2 | **Fittings & Accessories** |  | 2025-06-01 | 2026-06-14 |  |  |  |  |  |  |  |  |  |  |  |  |  |  |  |  |  |
| CP09-TR1-IR-1180 |  | Installation of Electrical solenoid valve | 3d | 2025-06-01 A | 2026-04-28 A | CP09-TR1-IR-1170, CP09-PR-IR-DY-1050 | 100% |  | 2025-11-02 | 2025-11-05 |  |  | Cost [439801]; Solenoid valve [22.4]; Labor [48 h] | 439,801.38 | 409,014.93 |  | TR01 | IRR-W | MS#01 | CON | SO | IRR |
| CP09-TR1-IR-1150 |  | Installation of Dripline | 3d | 2025-09-30 A | 2026-06-09 | CP09-PR-IR-DY-1010, CP09-TR1-IR-1130, CP09-TR1-SF-1170 | 98% | 3d | 2025-10-22 | 2025-10-26 | -115d | 0d | Cost [789420]; Labor [280 h]; Dripline [29500 Nos_] | 789,420 | 671,007 |  | TR01 | IRR-W | MS#01 | CON | SO | IRR |
| CP09-TR1-IR-1160 |  | Installation of Sprinklers | 3d | 2025-09-30 A | 2026-06-11 | CP09-TR1-IR-1150 SS+2d, CP09-PR-IR-DY-1040, CP09-TR1-IR-1150 FF+2d | 50% | 3d | 2025-10-25 | 2025-10-28 | -115d | 0d | Cost [57038.3]; Labor [48 h]; Sprinkle [84.1 Nos_] | 57,038.3 | 5,703.8 |  | TR01 | IRR-W | MS#01 | CON | SO | IRR |
| CP09-TR1-IR-1170 |  | Installation Valves & Rings | 5d | 2025-10-13 A | 2026-06-14 | CP09-TR1-IR-1160 SS+2d, CP09-PR-IR-DY-1030, CP09-PR-IR-DY-1020, CP09-TR1-IR-1160 FF+2d | 50% | 5d | 2025-10-27 | 2025-11-02 | -115d | 134.06d | Cost [208328]; Valves [715.1]; Labor [48 h] | 208,328.22 | 104,164 |  | TR01 | IRR-W | MS#01 | CON | SO | IRR |
| CP09-TR1-IR-1200 |  | Installation of Controller decoder cables | 5d | 2025-10-13 A | 2025-10-17 A | CP09-TR1-IR-1190 SF, CP09-PR-IR-DY-1070 | 100% |  | 2025-10-27 | 2025-11-02 |  |  | Cost [198024]; Controller Cable [1850]; Labor [48 h] | 198,024 | 198,024 |  | TR01 | IRR-W | MS#01 | CON | SO | IRR |
| CP09-TR1-IR-1190 |  | Installation of Controller (decoder system plastic pedestal) | 2d | 2025-11-24 A | 2025-11-28 A | CP09-TR1-IR-1170, CP09-TR1-IR-1180 SS, CP09-PR-IR-DY-1060 | 100% |  | 2025-12-01 | 2025-12-02 |  |  | Cost [262719]; Controller [0.5]; Labor [48 h] | 262,718.6 | 262,719 |  | TR01 | IRR-W | MS#01 | CON | SO | IRR |
| CP09-TR1-IR-1210 |  | Installation of Decoder one station | 3d | 2026-04-24 A | 2026-04-28 A | CP09-TR1-IR-1200 SS, CP09-PR-IR-DY-1080 | 100% |  | 2026-04-26 | 2026-04-28 |  |  | Cost [212404]; Decoder station [28.4]; Labor [48 h] | 212,404 |  |  | TR01 | IRR-W | MS#01 | CON | SO | IRR |

| ID | WBS | Activity | Duration | Start | Finish | Predecessors | Complete | Remaining | Planned start | Planned finish | Total float | Free float | Resources | Cost | Actual cost | Networks | CP09_Terrace-7 | CP09-Trade | CP09_Milestone-7 | CP09_Discipline-7 | DES | Hardscape |
| --- | --- | --- | --- | --- | --- | --- | --- | --- | --- | --- | --- | --- | --- | --- | --- | --- | --- | --- | --- | --- | --- | --- |
|  | 4 | **Electrical Works** |  | 2025-06-01 | 2026-06-11 |  |  |  |  |  |  |  |  |  |  |  |  |  |  |  |  |  |
|  | 1 | **Power Cable & Pillars** |  | 2025-06-01 | 2026-06-11 |  |  |  |  |  |  |  |  |  |  |  |  |  |  |  |  |  |
| CP09-TR1-EL-1040 |  | Excavation | 5d | 2025-06-01 A | 2026-06-11 | CP09-TR1-EW-1030, CP09-TR1-EW-1040, CP09-TR1-IR-1140, CP09-EN-TR1-A-1670 | 100% | 5d | 2025-06-01 | 2025-06-16 | -113d | 136.06d | Cost [374565]; EXCAVATOR [3344 h]; LOADER [4016 h]; TRUCK [4016 h]; Labor [48 h]; Excavation [6974.38 M3] | 374,564.9 | 374,565 | ELEC | TR01 | EL-W | MS#01 | CON | HD |  |
| CP09-TR1-EL-1050 |  | Installation of Power Cables | 4d | 2025-09-30 A | 2025-10-04 A | CP09-TR1-EL-1040 SS+2d, CP09-TR1-EL-1040 FF+2d, CP09-EN-TR1-A-1670, CP09-EN-TR1-A-1680, CP09-PR-EL-DY-1060 | 100% |  | 2025-09-01 | 2025-09-06 |  |  | Cost [898956]; Electrical Cable [6974.38]; Electrican [280 h]; Labor [48 h] | 898,955.77 | 898,956 | ELEC | TR01 | EL-W | MS#01 | CON | HD |  |
| CP09-TR1-EL-1060 |  | Backfilling for Power Cables | 4d | 2025-09-30 A | 2025-10-04 A | CP09-TR1-EL-1050 SS+2d, CP09-TR1-EL-1050 FF+2d | 100% |  | 2025-09-03 | 2025-09-08 |  |  | Cost [224739]; Labor [48 h]; Backfilling [6974.38 M3] | 224,738.94 | 224,739 | ELEC | TR01 | EL-W | MS#01 | CON | HD |  |
| CP09-TR1-EL-1070 |  | Installation of Connecting Pillars | 3d | 2025-09-30 A | 2025-10-04 A | CP09-TR1-HD-2130 SS+3d, CP09-PR-EL-DY-1070 | 100% |  | 2025-08-25 | 2025-08-27 |  |  | Cost [428687]; Pillars [3]; Electrican [48 h]; Labor [48 h] | 428,687.17 | 428,687 | ELEC | TR01 | EL-W | MS#01 | CON | HD |  |
|  | 3 | **Hardscape** |  | 2025-02-12 | 2026-06-28 |  |  |  |  |  |  |  |  |  |  |  |  |  |  |  |  |  |
|  | 6 | **Concrete Curb** |  | 2025-02-12 | 2025-10-04 |  |  |  |  |  |  |  |  |  |  |  |  |  |  |  |  |  |
| CP09-TR1-HD-2080 |  | Excavation | 2d | 2025-02-12 A | 2025-08-08 A | CP09-TR1-EW-1030 SS+3d, CP09-TR1-EW-1040 SS+3d, CP09-TR1-EW-1050 SS+3d, CP09-TR1-EW-1040 FF+3d, CP09-TR1-EW-1030 FF+3d, CP09-TR1-EW-1050 FF+3d | 100% |  | 2025-02-12 | 2025-02-15 |  |  | Cost [158617]; EXCAVATOR [312 h]; LOADER [368 h]; TRUCK [368 h]; Labor [193 h]; Excavation [384.51 M3] | 158,616.78 | 158,617 |  | TR01 | HS | MS#01 | CON | HD | CURB |
| CP09-TR1-HD-2090 |  | Plains Concrete with HDPE waterproofing | 2d | 2025-02-13 A | 2025-08-08 A | CP09-TR1-HD-2080, CP09-EN-TR1-A-1600 | 100% |  | 2025-02-15 | 2025-02-17 |  |  | Cost [475850]; Labor [48 h]; Plain Concrete [1121.49 M3]; HDPE | 475,850.35 | 475,850 |  | TR01 | HS | MS#01 | CON | HD | CURB |
| CP09-TR1-HD-2360 |  | Under Paving Reinforced Concrete Curb | 4d | 2025-02-15 A | 2025-08-08 A | CP09-TR1-HD-2090 SS+1.88d, CP09-TR1-HD-2090 FF+1.88d | 100% |  | 2025-02-16 | 2025-02-20 |  |  | Cost [951701]; Mason [385 h]; Steel Fixer [269 h]; Shutter [513 h]; Labor [48 h]; Reinforced Concrete [128.17 M3] | 951,700.7 | 951,701 |  | TR01 | HS | MS#01 | CON | HD | CURB |
| CP09-TR1-HD-2380 |  | Instal Flush Curb | 3d | 2025-09-30 A | 2025-10-04 A | CP09-EN-TR1-A-1600, CP09-PR-HD-DY-1080, CP09-TR1-HD-2360 SS+3d, CP09-TR1-HD-2360 SF+3d, CP09-TR1-HD-2360 FS+3d, CP09-TR1-HD-2360 FF+3d | 100% |  | 2025-10-12 | 2025-10-14 |  |  | Cost [116047]; Mason [280 h]; Labor [48 h]; Flush Curb [360.25] | 116,047.33 | 116,047 |  | TR01 | HS | MS#01 | CON | HD | CURB |
|  | 1 | **Side wake & Plazes** |  | 2025-02-18 | 2026-04-10 |  |  |  |  |  |  |  |  |  |  |  |  |  |  |  |  |  |
|  | 8 | **Interlocking Paving** |  | 2025-09-30 | 2025-10-04 |  |  |  |  |  |  |  |  |  |  |  |  |  |  |  |  |  |
| CP09-TR1-HD-2100 |  | Crush Stone for Interlock Types IL-(01,02,06,07) | 4d | 2025-09-30 A | 2025-10-04 A | CP09-EN-TR1-A-1610, CP09-TR1-EW-1030, CP09-TR1-EW-1040, CP09-TR1-IR-1140, CP09-TR1-EL-1060, CP09-PR-HD-DY-1090 | 100% |  | 2025-04-22 | 2025-04-26 |  |  | Cost [410521]; Mason [280 h]; Labor [48 h]; Crushed Stone [2325.12] | 410,520.86 | 410,521 |  | TR01 | HS | MS#01 | CON | HD | INTK |
| CP09-TR1-HD-2110 |  | Sand Layer for Interlock Types IL-(01,02,06,07) | 4d | 2025-09-30 A | 2025-10-04 A | CP09-TR1-HD-2100 SS+2d, CP09-TR1-HD-2100 FF+2d, CP09-EN-TR1-A-1610 | 100% |  | 2025-04-24 | 2025-04-28 |  |  | Cost [279178]; Mason [48 h]; Labor [280 h]; Clean sand [2321.5] | 279,178.42 | 279,178 |  | TR01 | HS | MS#01 | CON | HD | INTK |
| CP09-TR1-HD-2120 |  | Motar Bed Interlock Types IL-(03,04,08,09,10) | 3d | 2025-09-30 A | 2025-10-04 A | CP09-TR1-HD-2110 SS, CP09-EN-TR1-A-1610 | 100% |  | 2025-07-20 | 2025-07-22 |  |  | Cost [68357.3]; Mason [48 h]; Labor [48 h] | 68,357.32 | 68,357 |  | TR01 | HS | MS#01 | CON | HD | INTK |
| CP09-TR1-HD-2130 |  | Interlocking Paving | 5d | 2025-09-30 A | 2025-10-04 A | CP09-TR1-HD-2110 SS+2d, CP09-TR1-HD-2120 SS+2d, CP09-TR1-HD-2110 FF+2d, CP09-TR1-HD-2120 FF+2d, CP09-EN-TR1-A-1610, CP09-PR-HD-DY-1180 | 100% |  | 2025-04-27 | 2025-05-01 |  |  | Cost [521304]; Mason [280 h]; Labor [48 h]; Interlock [2966] | 521,303.61 | 521,304 |  | TR01 | HS | MS#01 | CON | HD | INTK |
|  | 2 | **Concrete in Situ** |  | 2025-02-26 | 2025-09-12 |  |  |  |  |  |  |  |  |  |  |  |  |  |  |  |  |  |
|  | 1 | **Slab on Garde** |  | 2025-02-26 | 2025-09-12 |  |  |  |  |  |  |  |  |  |  |  |  |  |  |  |  |  |
| CP09-TR1-HD-1870 |  | Plain Concrete with HDPE | 2d | 2025-02-26 A | 2025-09-12 A | CP09-TR1-EW-1030, CP09-TR1-EW-1040, CP09-TR1-IR-1140, CP09-TR1-EL-1060, CP09-EN-TR1-A-1530 | 100% |  | 2025-04-22 | 2025-04-23 |  |  | Cost [577969]; Mason [280 h]; Labor [48 h]; Plain Concrete [3339.88 M3]; HDPE | 577,968.71 | 577,969 |  | TR01 | HS | MS#01 | CON | HD | CON |
| CP09-TR1-HD-1880 |  | Reinfored Concrete slab on grade | 3d | 2025-05-01 A | 2025-09-12 A | CP09-TR1-HD-1870 SS+1d, CP09-TR1-HD-1870 FF+1d | 100% |  | 2025-07-07 | 2025-07-09 |  |  | Cost [1444922]; Mason [48 h]; Steel Fixer [128 h]; Shutter [48 h]; Labor [48 h]; Reinforced Concrete [333.99 M3] | 1,444,921.77 | 1,444,922 |  | TR01 | HS | MS#01 | CON | HD | CON |
| CP09-TR1-HD-1890 |  | Waterproofing & Screed | 2d | 2025-07-06 A | 2025-09-12 A | CP09-TR1-HD-1880 SS+1d, CP09-TR1-HD-1880 FF+1d | 100% |  | 2025-07-31 | 2025-08-03 |  |  | Cost [288984]; Mason [280 h]; Labor [48 h]; Waterproofing [3339.88 M2] | 288,984.35 | 288,984 |  | TR01 | HS | MS#01 | CON | HD | CON |
|  | 2 | **Concrete In-situ w./Exposed Aggregate Finish** |  | 2025-07-06 | 2025-09-12 |  |  |  |  |  |  |  |  |  |  |  |  |  |  |  |  |  |
| CP09-TR1-HD-1900 |  | Concrete casting (including Joints & Wire Mish) | 3d | 2025-07-06 A | 2025-09-12 A | CP09-TR1-HD-1890 SS+1d, CP09-TR1-HD-2380, CP09-EN-TR1-A-1530, CP09-PR-HD-DY-1000, CP09-TR1-HD-1890 FF+1d | 100% |  | 2025-08-18 | 2025-08-21 |  |  | Cost [2600859]; Mason [280 h]; Labor [48 h]; Concrete /Exposed Aggregate [3339.88] | 2,600,859.19 | 2,600,859 |  | TR01 | HS | MS#01 | CON | HD | CON |
| CP09-TR1-HD-1910 |  | Finishing Concrete Surface | 2d | 2025-07-06 A | 2025-09-12 A | CP09-TR1-HD-1900, CP09-TR1-RW-1320, CP09-TR1-RW-1330, CP09-TR1-RW-1430, CP09-TR1-RW-1440 | 100% |  | 2025-08-24 | 2025-08-26 |  |  | Cost [866953]; Mason [48 h]; Labor [48 h] | 866,953.06 | 866,953 |  | TR01 | HS | MS#01 | CON | HD | CON |

| ID | WBS | Activity | Duration | Start | Finish | Predecessors | Complete | Planned start | Planned finish | Resources | Cost | Actual cost | Hardscape | CP09_Terrace-7 | CP09-Trade | CP09_Milestone-7 | CP09_Discipline-7 | DES |
| --- | --- | --- | --- | --- | --- | --- | --- | --- | --- | --- | --- | --- | --- | --- | --- | --- | --- | --- |
|  | 1 | **Marble Paving** |  | 2025-02-18 | 2025-10-24 |  |  |  |  |  |  |  |  |  |  |  |  |  |
|  | 1 | **Slab on Garde** |  | 2025-02-18 | 2025-08-08 |  |  |  |  |  |  |  |  |  |  |  |  |  |
| CP09-TR1-HD-1820 |  | Plain Concrete with HDPE | 2d | 2025-02-18 A | 2025-03-11 A | CP09-TR1-EW-1030, CP09-TR1-EW-1050, CP09-TR1-IR-1140, CP09-TR1-EL-1060, CP09-EN-TR1-A-1540 | 100% | 2025-04-14 | 2025-04-15 | Cost [173552]; Mason [128 h]; Labor [48 h]; Plain Concrete [808.88 M3]; HDPE | 173,552.22 | 173,552 | MRB | TR01 | HS | MS#01 | CON | HD |
| CP09-TR1-HD-1830 |  | Reinfored Concrete slab on grade | 3d | 2025-05-07 A | 2025-08-08 A | CP09-TR1-HD-1820 SS+1d, CP09-TR1-HD-1820 FF+1d | 100% | 2025-05-07 | 2025-05-11 | Cost [416525]; Mason [48 h]; Steel Fixer [170 h]; Shutter [48 h]; Labor [48 h]; Reinforced Concrete [80.89 M3] | 416,525.33 | 416,525 | MRB | TR01 | HS | MS#01 | CON | HD |
| CP09-TR1-HD-1840 |  | Waterproofing & Screed | 2d | 2025-07-06 A | 2025-08-08 A | CP09-TR1-HD-1830 SS+1d, CP09-TR1-HD-1830 FF+1d | 100% | 2025-07-31 | 2025-08-02 | Cost [104131]; Mason [128 h]; Labor [48 h]; Waterproofing [808.88 M2] | 104,131.33 | 104,131 | MRB | TR01 | HS | MS#01 | CON | HD |
|  | 2 | **Marble Tiles** |  | 2025-04-20 | 2025-10-24 |  |  |  |  |  |  |  |  |  |  |  |  |  |
| CP09-TR1-HD-1850 |  | Marble Fixiation | 3d | 2025-04-20 A | 2025-09-19 A | CP09-TR1-HD-1840 SS+1d, CP09-TR1-HD-2380, CP09-EN-TR1-A-1540, CP09-PR-HD-DY-1010, CP09-TR1-HD-1840 FF+1d | 100% | 2025-06-23 | 2025-06-25 | Cost [2283133]; Mason [280 h]; Labor [48 h]; Marble [1120.38] | 2,283,132.51 | 2,283,133 | MRB | TR01 | HS | MS#01 | CON | HD |
| CP09-TR1-HD-1860 |  | Marble Surfcae Finishing | 2d | 2025-09-24 A | 2025-10-24 A | CP09-TR1-HD-1850, CP09-TR1-HD-1910 SS | 100% | 2025-08-28 | 2025-08-31 | Cost [402906]; Mason [48 h]; Labor [48 h] | 402,905.74 | 402,906 | MRB | TR01 | HS | MS#01 | CON | HD |
|  | 3 | **Wooden Floor Boards** |  |  |  |  |  |  |  |  |  |  |  |  |  |  |  |  |
|  | 1 | **Slab on Garde** |  |  |  |  |  |  |  |  |  |  |  |  |  |  |  |  |
|  | 2 | **Wood- Plastic Composit** |  |  |  |  |  |  |  |  |  |  |  |  |  |  |  |  |
|  | 4 | **Gravel layer** |  | 2025-09-30 | 2026-04-10 |  |  |  |  |  |  |  |  |  |  |  |  |  |
|  | 1 | **Slab on Garde** |  | 2025-09-30 | 2026-04-10 |  |  |  |  |  |  |  |  |  |  |  |  |  |
| CP09-TR1-HD-1970 |  | Plain Concrete with HDPE | 2d | 2025-09-30 A | 2025-10-04 A | CP09-TR1-EW-1030, CP09-TR1-EW-1040, CP09-TR1-IR-1140, CP09-TR1-EL-1060, CP09-EN-TR1-A-1560 | 100% | 2025-10-12 | 2025-10-13 | Cost [7507.48]; Mason [90 h]; Labor [48 h]; Plain Concrete [128.88 M3]; HDPE | 7,507.48 | 7,507 | GRV | TR01 | HS | MS#01 | CON | HD |
| CP09-TR1-HD-1990 |  | Mortar bed | 2d | 2026-03-31 A | 2026-04-10 A | CP09-TR1-HD-1970 SS+1d, CP09-TR1-HD-1970 FF+1d | 100% | 2026-03-31 | 2026-04-01 | Cost [7507.48]; Mason [48 h]; Labor [48 h] | 7,507 |  | GRV | TR01 | HS | MS#01 | CON | HD |
|  | 2 | **Gravel Layer, w./Earth Colors** |  | 2026-04-06 | 2026-04-10 |  |  |  |  |  |  |  |  |  |  |  |  |  |
| CP09-TR1-HD-2000 |  | Furnish & install Garvel Layer | 3d | 2026-04-06 A | 2026-04-10 A | CP09-TR1-HD-1990, CP09-TR1-HD-2380, CP09-EN-TR1-A-1560, CP09-PR-HD-DY-1030 | 100% | 2026-04-18 | 2026-04-20 | Cost [35034.9]; Mason [77 h]; Labor [48 h]; Gravel Layer [128.88] | 35,035 |  | GRV | TR01 | HS | MS#01 | CON | HD |
|  | 5 | **Crushed Stone** |  | 2025-09-30 | 2026-04-10 |  |  |  |  |  |  |  |  |  |  |  |  |  |
|  | 1 | **Slab on Garde** |  | 2025-09-30 | 2026-04-10 |  |  |  |  |  |  |  |  |  |  |  |  |  |
| CP09-TR1-HD-2010 |  | Geotextile membrane | 2.81d | 2025-09-30 A | 2025-10-04 A | CP09-TR1-EW-1030, CP09-TR1-EW-1040, CP09-TR1-IR-1140, CP09-TR1-EL-1060, CP09-EN-TR1-A-1570 | 100% | 2025-10-12 | 2025-10-14 | Cost [3164.14]; Mason [48 h]; Labor [4 h]; Geotextile Sheets [13.25] | 3,164.14 | 3,164 | CRST | TR01 | HS | MS#01 | CON | HD |
| CP09-TR1-HD-2030 |  | Gravel Fix sheets | 2.81d | 2026-03-31 A | 2026-04-10 A | CP09-TR1-HD-2010 | 100% | 2026-03-31 | 2026-04-02 | Cost [3164.14]; Waterproofing | 3,164 |  | CRST | TR01 | HS | MS#01 | CON | HD |
|  | 2 | **Crushed Dolomite Stone** |  | 2026-04-06 | 2026-04-10 |  |  |  |  |  |  |  |  |  |  |  |  |  |
| CP09-TR1-HD-2040 |  | Furnish & Install Crushed Dolomite stone , w./ mixed colors | 4d | 2026-04-06 A | 2026-04-10 A | CP09-TR1-HD-2030 FF, CP09-TR1-HD-2030 SS, CP09-TR1-HD-2000 SS, CP09-TR1-HD-2380, CP09-EN-TR1-A-1570, CP09-PR-HD-DY-1040 | 100% | 2026-04-18 | 2026-04-21 | Cost [14766]; Mason [37 h]; Labor [48 h]; Crushed Dolomite stone [13.25] | 14,766 |  | CRST | TR01 | HS | MS#01 | CON | HD |
|  | 6 | **Loose Gravel** |  | 2026-04-06 | 2026-04-10 |  |  |  |  |  |  |  |  |  |  |  |  |  |
|  | 2 | **Loose Gravel 50mm** |  | 2026-04-06 | 2026-04-10 |  |  |  |  |  |  |  |  |  |  |  |  |  |
| CP09-TR1-HD-2050 |  | Furnish & Install loose gravel w./earth colors. | 4d | 2026-04-06 A | 2026-04-10 A | CP09-TR1-HD-2380, CP09-TR1-IR-1140, CP09-TR1-EL-1060, CP09-EN-TR1-A-1580, CP09-PR-HD-DY-1050 | 100% | 2026-04-18 | 2026-04-21 | Cost [8429.21]; Mason [19 h]; Labor [48 h]; Loose gravel [31.38] | 8,429 |  | LGRV | TR01 | HS | MS#01 | CON | HD |

| ID | WBS | Activity | Duration | Start | Finish | Predecessors | Complete | Planned start | Planned finish | Total float | Free float | Resources | Cost | Actual cost | Hardscape | CP09_Terrace-7 | CP09-Trade | CP09_Milestone-7 | CP09_Discipline-7 | DES |
| --- | --- | --- | --- | --- | --- | --- | --- | --- | --- | --- | --- | --- | --- | --- | --- | --- | --- | --- | --- | --- |
|  | 7 | **Clean Sand Layer** |  | 2025-09-30 | 2026-04-10 |  |  |  |  |  |  |  |  |  |  |  |  |  |  |  |
|  | 1 | **Kids & Fitness Area** |  | 2025-09-30 | 2026-04-10 |  |  |  |  |  |  |  |  |  |  |  |  |  |  |  |
| CP09-TR1-HD-2060 |  | Geotextile Sheets | 3d | 2025-09-30 A | 2026-04-10 A | CP09-TR1-EW-1030, CP09-TR1-EW-1040, CP09-TR1-HD-2380, CP09-TR1-IR-1140, CP09-TR1-EL-1060, CP09-EN-TR1-A-1590 | 100% | 2025-11-09 | 2025-11-11 |  |  | Cost [65290.1]; Geotextile Sheets [1227.62] | 65,290.06 | 58,761 | SND | TR01 | HS | MS#01 | CON | HD |
| CP09-TR1-HD-2070 |  | Install Clean sand layer | 3d | 2025-09-30 A | 2026-04-10 A | CP09-TR1-HD-2060, CP09-TR1-HD-2050, CP09-TR1-HD-2380, CP09-EN-TR1-A-1590, CP09-PR-HD-DY-1070 | 100% | 2025-11-03 | 2025-11-05 |  |  | Cost [261160]; Clean sand [1227.62] | 261,160.24 | 235,044 | SND | TR01 | HS | MS#01 | CON | HD |
|  | 2 | **Site Improvments** |  | 2025-09-30 | 2026-06-28 |  |  |  |  |  |  |  |  |  |  |  |  |  |  |  |
|  | 1 | **Marble Steps** |  | 2025-09-30 | 2025-10-04 |  |  |  |  |  |  |  |  |  |  |  |  |  |  |  |
| CP09-TR1-HD-2140 |  | Reinforecd Concrete Step. | 4d | 2025-09-30 A | 2025-10-04 A | CP09-TR1-EW-1030, CP09-TR1-EW-1040, CP09-EN-TR1-A-1620, CP09-TR1-IR-1140, CP09-TR1-EL-1060 | 100% | 2025-06-29 | 2025-07-02 |  |  | Cost [255883]; Mason [48 h]; Steel Fixer [48 h]; Shutter [48 h]; Labor [48 h]; Reinforced Concrete | 255,882.62 | 255,883 | STP | TR01 | HS | MS#01 | CON | HD |
| CP09-TR1-HD-2150 |  | Install Marble Blocks | 3d | 2025-09-30 A | 2025-10-04 A | CP09-TR1-HD-2140 SS+2d, CP09-TR1-HD-2140 FF+2d, CP09-PR-HD-DY-1100 | 100% | 2025-09-07 | 2025-09-09 |  |  | Cost [162834]; Marble Step [6.38] | 162,834.39 | 162,834 | STP | TR01 | HS | MS#01 | CON | HD |
| CP09-TR1-HD-2160 |  | Finishing Marble Surface | 2d | 2025-09-30 A | 2025-10-04 A | CP09-TR1-HD-2150, CP09-TR1-RW-1320, CP09-TR1-RW-1330, CP09-TR1-RW-1430, CP09-TR1-RW-1440 | 100% | 2025-10-09 | 2025-10-11 |  |  | Cost [46524.1] | 46,524.11 | 46,524 | STP | TR01 | HS | MS#01 | CON | HD |
|  | 2 | **Curvelinear Block Seat** |  | 2025-09-30 | 2026-04-28 |  |  |  |  |  |  |  |  |  |  |  |  |  |  |  |
| CP09-TR1-HD-2170 |  | Excavation | 2d | 2025-09-30 A | 2025-12-29 A | CP09-TR1-EW-1030, CP09-TR1-EW-1040, CP09-EN-TR1-A-1630 | 100% | 2025-02-17 | 2025-02-18 |  |  | Cost [9988.94]; EXCAVATOR [48 h]; LOADER [56 h]; TRUCK [56 h]; Excavation [59.96 M3] | 9,988.94 | 9,989 | SEAT | TR01 | HS | MS#01 | CON | HD |
| CP09-TR1-HD-2180 |  | Plaing Concrete with HPDE | 2d | 2025-09-30 A | 2025-12-29 A | CP09-TR1-HD-2170 | 100% | 2025-02-19 | 2025-02-20 |  |  | Cost [12486.2]; Mason [24 h]; Labor [48 h]; Plain Concrete [34.59 M3]; HDPE | 12,486.18 | 12,486 | SEAT | TR01 | HS | MS#01 | CON | HD |
| CP09-TR1-HD-2190 |  | Reinforced Concrete for Footing | 4d | 2025-09-30 A | 2025-12-29 A | CP09-TR1-HD-2180 SS+2d, CP09-TR1-HD-2180 FF+2d | 100% | 2025-03-05 | 2025-03-11 |  |  | Cost [74917.1]; Mason [48 h]; Steel Fixer [31 h]; Shutter [48 h]; Labor [48 h]; Reinforced Concrete [8.84 M3] | 74,917.07 | 74,917 | SEAT | TR01 | HS | MS#01 | CON | HD |
| CP09-TR1-HD-2200 |  | Reinforced Concrete for beam | 3d | 2025-09-30 A | 2025-12-29 A | CP09-TR1-HD-2190 SS+3d, CP09-TR1-HD-2190 FF+3d | 100% | 2025-04-16 | 2025-04-20 |  |  | Cost [24972.4]; Mason [5 h]; Steel Fixer [77 h]; Shutter [6 h]; Labor [48 h]; Reinforced Concrete [1.54 M3] | 24,972.36 | 24,972 | SEAT | TR01 | HS | MS#01 | CON | HD |
| CP09-TR1-HD-2210 |  | Waterproofing & Protection | 2d | 2025-12-25 A | 2025-12-29 A | CP09-TR1-HD-2200 SS+2d, CP09-TR1-HD-2200 FF+2d | 100% | 2026-01-03 | 2026-01-05 |  |  | Cost [24972.4]; Mason [6.44 h]; Waterproofing [9.22 M2] | 24,972.36 | 24,972 | SEAT | TR01 | HS | MS#01 | CON | HD |
| CP09-TR1-HD-2220 |  | Backfilling | 2d | 2025-12-25 A | 2025-12-29 A | CP09-TR1-HD-2210 SS+2d, CP09-TR1-HD-2210 FF+2d | 100% | 2026-01-05 | 2026-01-07 |  |  | Cost [14983.4]; Backfilling [40.74 M3] | 14,983.41 | 14,983 | SEAT | TR01 | HS | MS#01 | CON | HD |
| CP09-TR1-HD-2230 |  | Marble Capping | 2d | 2026-04-24 A | 2026-04-28 A | CP09-TR1-RW-1430, CP09-TR1-RW-1440, CP09-TR1-RW-1320, CP09-TR1-RW-1330, CP09-TR1-HD-2220 SS+1d, CP09-PR-HD-DY-1110, CP09-TR1-HD-2220 FF+1d | 100% | 2026-05-13 | 2026-05-14 |  |  | Cost [87403.2]; Mason [160 h]; Labor [48 h]; Marble Coping [25.62] | 87,403 |  | SEAT | TR01 | HS | MS#01 | CON | HD |
|  | 4 | **Handrails** |  | 2026-06-24 | 2026-06-28 |  |  |  |  |  |  |  |  |  |  |  |  |  |  |  |
| CP09-TR1-HD-2390 |  | Install & Fix Stainless Handrail (500 mm height) | 3d | 2026-06-24 | 2026-06-27 | CP09-TR1-HD-2150, CP09-TR1-HD-2230, CP09-EN-TR1-A-1650, CP09-PR-HD-DY-1160 |  |  |  | -150d | 15d | Cost [131128]; Labor [51 h]; Stanless Steel Handrial [25.62] | 131,128 |  | HND | TR01 | HS | MS#01 | CON | HD |
| CP09-TR1-HD-2400 |  | Install & Fix Glass Handrail (900mm height) | 4d | 2026-06-24 | 2026-06-28 | CP09-TR1-HD-2150, CP09-TR1-HD-2230, CP09-EN-TR1-A-1650, CP09-PR-HD-DY-1170 |  |  |  | -151d | 14d | Cost [44178.5]; Glass Handrail [3.5]; Labor [7 h] | 44,179 |  | HND | TR01 | HS | MS#01 | CON | HD |
|  | 8 | **Sinage** |  | 2025-09-30 | 2026-04-28 |  |  |  |  |  |  |  |  |  |  |  |  |  |  |  |
| CP09-TR1-SN-2520 |  | Excavation | 7d | 2025-09-30 A | 2025-10-04 A | CP09-TR1-RW-1420, CP09-TR1-RW-1310, CP09-TR1-HD-2130, CP09-EN-TR1-A-1690 | 100% | 2025-08-30 | 2025-09-08 |  |  | Cost [21369.8]; EXCAVATOR [72 h]; LOADER [88 h]; TRUCK [88 h]; Excavation [92.06 M3] | 21,369.83 | 21,370 | SING | TR01 | SIN | MS#01 | CON | HD |
| CP09-TR1-SN-2530 |  | Plain Concrete with HDPE | 5d | 2025-09-30 A | 2025-10-04 A | CP09-TR1-SN-2520 SS+1d, CP09-TR1-SN-2520 FF+1d | 100% | 2025-09-02 | 2025-09-09 |  |  | Cost [32054.7]; Mason [4 h]; Labor [48 h]; Plain Concrete [6.14 M3] | 32,054.74 | 32,055 | SING | TR01 | SIN | MS#01 | CON | HD |
| CP09-TR1-SN-2540 |  | Reinforced Concrete | 10d | 2025-09-30 A | 2025-10-04 A | CP09-TR1-SN-2530 SS+2d, CP09-TR1-SN-2530 FF+2d | 100% | 2025-09-06 | 2025-09-17 |  |  | Cost [117534]; Mason [92 h]; Steel Fixer [616 h]; Shutter [123 h]; Labor [48 h]; Reinforced Concrete [30.69 M3] | 117,534.04 | 117,534 | SING | TR01 | SIN | MS#01 | CON | HD |
| CP09-TR1-SN-2550 |  | Waterproofing | 5d | 2025-09-30 A | 2025-10-04 A | CP09-TR1-SN-2540 SS+3d, CP09-TR1-SN-2540 FF+3d | 100% | 2025-09-15 | 2025-09-21 |  |  | Cost [21369.8]; Mason [128.8 h]; Labor [48 h]; Waterproofing [184.12 M2] | 21,369.83 | 21,370 | SING | TR01 | SIN | MS#01 | CON | HD |
| CP09-TR1-SN-2560 |  | Grouting | 6d | 2025-09-30 A | 2025-10-04 A | CP09-TR1-SN-2550 SS+2d, CP09-TR1-SN-2550 FF+2d | 100% | 2025-09-17 | 2025-09-24 |  |  | Cost [21369.8] | 21,369.83 | 21,370 | SING | TR01 | SIN | MS#01 | CON | HD |
| CP09-TR1-SN-2610 |  | RULES SIGN | 10d | 2025-09-30 A | 2025-10-04 A | CP09-PR-SN-DY-1030, CP09-TR1-SN-2560 | 100% | 2025-10-19 | 2025-10-30 |  |  | Cost [227367]; Sign [3.88] | 227,367.42 | 227,367 | SING | TR01 | SIN | MS#01 | CON | HD |
| CP09-TR1-SN-2620 |  | IDENTIFICATION SIGN | 5d | 2025-11-24 A | 2026-04-28 A | CP09-TR1-SN-2570, CP09-TR1-SN-2580, CP09-TR1-SN-2610, CP09-PR-SN-DY-1040, CP09-TR1-SN-2560 FF | 100% | 2025-11-01 | 2025-11-06 |  |  | Cost [81022.5]; Sign [2.25] | 81,022.5 | 81,022.5 | SING | TR01 | SIN | MS#01 | CON | HD |
| CP09-TR1-SN-2570 |  | STREET DIRECTIONAL SIGN | 10d | 2026-02-16 A | 2026-04-28 A | CP09-PR-SN-DY-1000, CP09-TR1-SN-2560 FS+1d | 100% | 2025-10-20 | 2025-11-01 |  |  | Cost [55703]; Sign [5] | 55,702.97 | 44,562.4 | SING | TR01 | SIN | MS#01 | CON | HD |
| CP09-TR1-SN-2600 |  | UNIT ID SIGN (BACK YARD) | 5d | 2026-02-16 A | 2026-04-28 A | CP09-TR1-SN-2570, CP09-TR1-SN-2580, CP09-TR1-SN-2610, CP09-PR-SN-DY-1020, CP09-TR1-SN-2560 FF | 100% | 2025-11-01 | 2025-11-06 |  |  | Cost [124876]; Sign [41.25] | 124,875.64 | 99,900.8 | SING | TR01 | SIN | MS#01 | CON | HD |
| CP09-TR1-SN-2580 |  | DIRECTIONAL SIGN FOR VEHICULAR | 10d | 2026-02-22 A | 2026-04-28 A | CP09-TR1-SN-2560, CP09-PR-SN-DY-1010 | 100% | 2025-10-19 | 2025-10-30 |  |  | Cost [102164]; Sign [10.38] | 102,163.55 | 81,731.2 | SING | TR01 | SIN | MS#01 | CON | HD |
| CP09-TR1-SN-2590 |  | UNIT ID SIGN (FRONT YARD) | 5d | 2026-02-22 A | 2026-04-28 A | CP09-TR1-SN-2570, CP09-TR1-SN-2580, CP09-TR1-SN-2610, CP09-TR1-SN-2560, CP09-PR-SN-DY-1020 | 100% | 2025-11-01 | 2025-11-06 |  |  | Cost [49962.7]; Sign [60] | 49,962.69 | 49,962.69 | SING | TR01 | SIN | MS#01 | CON | HD |

| ID | WBS | Activity | Duration | Start | Finish | Predecessors | Complete | Remaining | Planned start | Planned finish | Total float | Free float | Resources | Cost | Actual cost | Softscape | CP09_Terrace-7 | CP09-Trade | CP09_Milestone-7 | CP09_Discipline-7 | DES |
| --- | --- | --- | --- | --- | --- | --- | --- | --- | --- | --- | --- | --- | --- | --- | --- | --- | --- | --- | --- | --- | --- |
|  | 7 | **Landscape Furntiure** |  | 2025-09-01 | 2026-06-15 |  |  |  |  |  |  |  |  |  |  |  |  |  |  |  |  |
| CP09-TR1-FN-2480 |  | Install & Fix tensile Teflon Tent | 15d | 2025-09-01 A | 2026-06-15 | CP09-TR1-HD-2390, CP09-TR1-HD-2400, CP09-TR1-HD-2380 FF, CP09-PR-HD-DY-1020 FF, CP09-PR-HD-A-1020 FF+7d, CP09-TR1-EW-1030 FF+3d, CP09-TR1-EW-1040 FF+3d, CP09-TR1-IR-1140 FF+3d, CP09-TR1-EL-1060 FF+3d, CP09-TR1-HD-2130, CP09-TR1-HD-2050 FF, CP09-TR1-HD-2040 FF, CP09-TR1-HD-2000 FF, CP09-TR1-HD-1860 FF, CP09-TR1-HD-1910 FF, CP09-EN-TR1-A-1660, CP09-PR-FN-DY-1070 | 50% | 7.5d | 2025-10-11 | 2025-10-28 | -139.5d | 28.5d | Cost [555836]; tensile Teflon Tent [2.5] | 555,836.37 | 277,918 | FRNT | TR01 | LA-F | MS#01 | CON | SO |
| CP09-TR1-FN-2420 |  | Install & Fix Crcular Cast-iron tree grate | 10d | 2025-11-24 A | 2025-11-28 A | CP09-TR1-HD-2390, CP09-TR1-HD-2400, CP09-TR1-HD-2380 FF, CP09-PR-HD-DY-1020 FF, CP09-PR-HD-A-1020 FF+7d, CP09-TR1-EW-1030 FF+3d, CP09-TR1-EW-1040 FF+3d, CP09-TR1-IR-1140 FF+3d, CP09-TR1-EL-1060 FF+3d, CP09-TR1-HD-2130, CP09-TR1-HD-2050 FF, CP09-TR1-HD-2040 FF, CP09-TR1-HD-2000 FF, CP09-TR1-HD-1860 FF, CP09-TR1-HD-1910 FF, CP09-EN-TR1-A-1660, CP09-PR-FN-DY-1010 | 100% |  | 2025-12-21 | 2026-01-01 |  |  | Cost [655486]; Crcular Cast-iron tree grate [23.38] | 655,486.19 | 655,486 | FRNT | TR01 | LA-F | MS#01 | CON | SO |
| CP09-TR1-FN-2440 |  | Install & Fix Pitch Pine Benchs | 7d | 2025-11-24 A | 2026-01-23 A | CP09-TR1-HD-2390, CP09-TR1-HD-2400, CP09-TR1-HD-2380 FF, CP09-PR-HD-DY-1020 FF, CP09-PR-HD-A-1020 FF+7d, CP09-TR1-EW-1030 FF+3d, CP09-TR1-EW-1040 FF+3d, CP09-TR1-IR-1140 FF+3d, CP09-TR1-EL-1060 FF+3d, CP09-TR1-HD-2130 FF, CP09-TR1-HD-2050 FF, CP09-TR1-HD-2040 FF, CP09-TR1-HD-2000 FF, CP09-TR1-HD-1860 FF, CP09-TR1-HD-1910 FF, CP09-EN-TR1-A-1660, CP09-PR-FN-DY-1030 | 100% |  | 2025-12-17 | 2025-12-24 |  |  | Cost [316796]; Pitch Pine Benchs [9.5] | 316,795.55 | 316,795.55 | FRNT | TR01 | LA-F | MS#01 | CON | SO |
| CP09-TR1-FN-2450 |  | Install & Fix Polyester Hammocks | 10d | 2025-11-24 A | 2025-11-28 A | CP09-TR1-HD-2390, CP09-TR1-HD-2400, CP09-TR1-HD-2380 FF, CP09-PR-HD-DY-1020 FF, CP09-PR-HD-A-1020 FF+7d, CP09-TR1-EW-1030 FF+3d, CP09-TR1-EW-1040 FF+3d, CP09-TR1-IR-1140 FF+3d, CP09-TR1-EL-1060 FF+3d, CP09-TR1-HD-2130, CP09-TR1-HD-2050 FF, CP09-TR1-HD-2040 FF, CP09-TR1-HD-2000 FF, CP09-TR1-HD-1860 FF, CP09-TR1-HD-1910 FF, CP09-EN-TR1-A-1660, CP09-PR-FN-DY-1040 | 100% |  | 2025-12-17 | 2025-12-28 |  |  | Cost [40144.4]; Polyester Hammocks [1] | 40,144.39 | 40,144 | FRNT | TR01 | LA-F | MS#01 | CON | SO |
| CP09-TR1-FN-2460 |  | Install & Fix Adult Play Swing | 10d | 2025-11-24 A | 2025-11-28 A | CP09-TR1-HD-2390, CP09-TR1-HD-2400, CP09-TR1-HD-2380 FF, CP09-PR-HD-DY-1020 FF, CP09-PR-HD-A-1020 FF+7d, CP09-TR1-EW-1030 FF+3d, CP09-TR1-EW-1040 FF+3d, CP09-TR1-IR-1140 FF+3d, CP09-TR1-EL-1060 FF+3d, CP09-TR1-HD-2130, CP09-TR1-HD-2050 FF, CP09-TR1-HD-2040 FF, CP09-TR1-HD-2000 FF, CP09-TR1-HD-1860 FF, CP09-TR1-HD-1910 FF, CP09-EN-TR1-A-1660, CP09-PR-FN-DY-1050 | 100% |  | 2025-12-17 | 2025-12-28 |  |  | Cost [30435]; Adult Play Swing [1] | 30,434.95 | 30,435 | FRNT | TR01 | LA-F | MS#01 | CON | SO |
| CP09-TR1-FN-2470 |  | Install & Fix Aluminum Trash Bin | 10d | 2025-11-24 A | 2026-01-23 A | CP09-TR1-HD-2390, CP09-TR1-HD-2400, CP09-TR1-HD-2380 FF, CP09-PR-HD-DY-1020 FF, CP09-PR-HD-A-1020 FF+7d, CP09-TR1-EW-1030 FF+3d, CP09-TR1-EW-1040 FF+3d, CP09-TR1-IR-1140 FF+3d, CP09-TR1-EL-1060 FF+3d, CP09-TR1-HD-2130, CP09-TR1-HD-2050 FF, CP09-TR1-HD-2040 FF, CP09-TR1-HD-2000 FF, CP09-TR1-HD-1860 FF, CP09-TR1-HD-1910 FF, CP09-EN-TR1-A-1660, CP09-PR-FN-DY-1060 | 100% |  | 2025-12-17 | 2025-12-28 |  |  | Cost [896214]; Aluminum Trash Bin [14] | 896,213.92 | 896,213.92 | FRNT | TR01 | LA-F | MS#01 | CON | SO |
| CP09-TR1-FN-2410 |  | Install & Fix Pitch Pine Picnic Table | 7d | 2026-04-24 A | 2026-04-28 A | CP09-TR1-HD-2390, CP09-TR1-HD-2400, CP09-TR1-HD-2380 FF, CP09-PR-HD-DY-1020 FF, CP09-PR-HD-A-1020 FF+7d, CP09-TR1-EW-1030 FF+3d, CP09-TR1-EW-1040 FF+3d, CP09-TR1-IR-1140 FF+3d, CP09-TR1-EL-1060 FF+3d, CP09-TR1-HD-2130, CP09-TR1-HD-2050, CP09-TR1-HD-2040, CP09-TR1-HD-2000, CP09-TR1-HD-1860 FF, CP09-TR1-HD-1910 FF, CP09-EN-TR1-A-1660, CP09-PR-FN-DY-1000 | 100% |  | 2026-05-20 | 2026-05-27 |  |  | Cost [93998.3]; Pitch Pine Picnic Table [1] | 93,998 |  | FRNT | TR01 | LA-F | MS#01 | CON | SO |
| CP09-TR1-FN-2490 |  | Lanscape Edging ( Rubber) | 15d | 2026-04-24 A | 2026-04-28 A | CP09-TR1-HD-2390, CP09-TR1-HD-2400, CP09-TR1-HD-2380 FF, CP09-PR-HD-DY-1020 FF, CP09-PR-HD-A-1020 FF+7d, CP09-TR1-EW-1030 FF+3d, CP09-TR1-EW-1040 FF+3d, CP09-TR1-IR-1140 FF+3d, CP09-TR1-EL-1060 FF+3d, CP09-TR1-HD-2130, CP09-TR1-HD-2050 FF, CP09-TR1-HD-2040 FF, CP09-TR1-HD-2000 FF, CP09-TR1-HD-1860 FF, CP09-TR1-HD-1910 FF, CP09-EN-TR1-A-1660, CP09-PR-FN-DY-1080 | 100% |  | 2026-05-24 | 2026-06-10 |  |  | Cost [65739.9]; Lanscape Edging ( Rubber) [236.5] | 65,740 |  | FRNT | TR01 | LA-F | MS#01 | CON | SO |
|  | 10 | **Play Field Equipment** |  | 2026-03-02 | 2026-06-11 |  |  |  |  |  |  |  |  |  |  |  |  |  |  |  |  |
| CP09-TR1-PE-2510 |  | Kids playground equipment | 5d | 2026-03-02 A | 2026-04-28 A | CP09-TR1-HD-2070, CP09-PR-PE-DY-1040, CP09-PR-PE-DY-1050, CP09-PR-PE-DY-1060, CP09-PR-PE-DY-1070, CP09-PR-PE-DY-1080, CP09-PR-PE-DY-1090, CP09-PR-PE-DY-1100 | 100% |  | 2026-04-11 | 2026-04-16 |  |  | Cost [1256494]; Kids equipment [5] | 1,256,494 |  | P.EQ | TR01 | PF-E | MS#01 | CON | SO |
| CP09-TR1-PE-2500 |  | Fitness areas equipment | 5d | 2026-06-07 | 2026-06-11 | CP09-TR1-HD-2070, CP09-EN-TR1-A-1700, CP09-PR-PE-DY-1000, CP09-PR-PE-DY-1010, CP09-PR-PE-DY-1020, CP09-PR-PE-DY-1030 |  |  |  |  | -137d | 31d | Cost [1442780]; Fitness equipment [6] | 1,442,780 |  | P.EQ | TR01 | PF-E | MS#01 | CON | SO |
|  | 5 | **Lighting for Softscape** |  | 2025-11-10 | 2026-07-18 |  |  |  |  |  |  |  |  |  |  |  |  |  |  |  |  |
|  | 1 | **Exterior Lighting** |  | 2025-11-10 | 2026-07-18 |  |  |  |  |  |  |  |  |  |  |  |  |  |  |  |  |
| CP09-TR1-SF-1250 |  | Install Landscape Lighting Pole | 10d | 2025-11-10 A | 2026-04-28 A | CP09-TR1-EL-1050, CP09-EN-TR1-A-1730, CP09-PR-EL-DY-1080 | 100% |  | 2025-12-14 | 2025-12-24 |  |  | Cost [97302.1]; Lighting Pole [3]; Electrican [30 h] | 97,302.11 | 63,246.3 | LHT | TR01 | LFS | MS#01 | CON | HD |
| CP09-TR1-SF-1260 |  | Install Bollard for Walkways | 4d | 2026-02-16 A | 2026-04-28 A | CP09-TR1-HD-2380, CP09-PR-HD-DY-1020, CP09-PR-HD-A-1020 FS+7d, CP09-TR1-EW-1030 FS+3d, CP09-TR1-EW-1040 FS+3d, CP09-TR1-IR-1140 FS+3d, CP09-TR1-EL-1060 FS+3d, CP09-TR1-EL-1050, CP09-TR1-HD-2130, CP09-TR1-HD-1910, CP09-TR1-HD-1860, CP09-TR1-HD-2000, CP09-TR1-HD-2040, CP09-TR1-HD-2050, CP09-TR1-HD-2070, CP09-EN-TR1-A-1730, CP09-PR-EL-DY-1090, CP09-TR1-SF-1250 | 100% |  | 2025-12-25 | 2025-12-29 |  |  | Cost [1108355]; Bollard [258]; Electrican [25 h] | 1,108,355.36 | 1,052,937.25 | LHT | TR01 | LFS | MS#01 | CON | HD |
| CP09-TR1-SF-1280 |  | Install Inground Uplight For Palms | 6d | 2026-04-24 A | 2026-04-28 A | CP09-TR1-SF-1290 SS, CP09-TR1-SF-1260 SS, CP09-EN-TR1-A-1730, CP09-PR-EL-DY-1120 | 100% |  | 2026-05-31 | 2026-06-06 |  |  | Cost [393484]; Inground Uplight [85]; Electrican [25 h] | 393,484 |  | LHT | TR01 | LFS | MS#01 | CON | HD |
| CP09-TR1-SF-1290 |  | Install Projectors for Trees | 4d | 2026-04-24 A | 2026-04-28 A | CP09-TR1-SF-1180, CP09-TR1-SF-1190, CP09-TR1-SF-1200, CP09-TR1-SF-1210, CP09-TR1-SF-1220, CP09-TR1-SF-1230, CP09-TR1-SF-1240, CP09-EN-TR1-A-1730, CP09-PR-EL-DY-1130 | 100% |  | 2026-05-31 | 2026-06-03 |  |  | Cost [484837]; Projectors For Trees [118]; Electrican [25 h] | 484,837 |  | LHT | TR01 | LFS | MS#01 | CON | HD |
| CP09-TR1-SF-1270 |  | Install Diffused Wall Recessed Step | 6d | 2026-07-12 | 2026-07-18 | CP09-TR1-SF-1260 SS+3d, CP09-EN-TR1-A-1730, CP09-PR-EL-DY-1110 |  |  |  |  | -168d | 0d | Cost [194419]; Diffused Wall [47]; Electrican [25 h] | 194,419 |  | LHT | TR01 | LFS | MS#01 | CON | HD |
|  | 2 | **Outlet Lighting Fixtures** |  | 2026-04-24 | 2026-04-28 |  |  |  |  |  |  |  |  |  |  |  |  |  |  |  |  |
| CP09-TR1-SF-1310 |  | Install outlet lighting fixtures | 5d | 2026-04-24 A | 2026-04-28 A | CP09-TR1-SF-1260, CP09-EN-TR1-A-1730, CP09-PR-EL-DY-1150 | 100% |  | 2026-05-31 | 2026-06-04 |  |  | Cost [357578]; Outlet Lighting Fixtiure [518]; Electrican [25 h] | 357,578 |  | LHT | TR01 | LFS | MS#01 | CON | HD |
|  | 2 | **Softscape** |  | 2025-08-04 | 2026-06-13 |  |  |  |  |  |  |  |  |  |  |  |  |  |  |  |  |
|  | 1 | **Planting** |  | 2025-08-04 | 2026-06-13 |  |  |  |  |  |  |  |  |  |  |  |  |  |  |  |  |
| CP09-TR1-SF-1200 |  | Ground Covers | 6d | 2025-08-04 A | 2026-06-09 | CP09-TR1-SF-1170, CP09-TR1-SF-1160, CP09-TR1-SF-1180 SS+3d, CP09-TR1-SF-1180 FF+3d, CP09-PR-PN-DY-1070 | 50% | 3d | 2025-08-07 | 2025-08-14 | -135d | 33d | Cost [840914]; Ground Covers [41638] | 840,914.15 | 420,457 | PLNT | TR01 | SS | MS#01 | CON | SO |
| CP09-TR1-SF-1190 |  | Shrubs | 6d | 2025-09-01 A | 2026-06-09 | CP09-TR1-SF-1170, CP09-TR1-SF-1160, CP09-TR1-SF-1180 SS+3d, CP09-TR1-SF-1180 FF+3d, CP09-PR-PN-DY-1060 | 50% | 3d | 2025-09-03 | 2025-09-11 | -135d | 33d | Cost [758721]; Shrubs [5056] | 758,720.84 | 379,360.5 | PLNT | TR01 | SS | MS#01 | CON | SO |
| CP09-TR1-SF-1160 |  | Sweet sand for all plants | 7d | 2025-09-30 A | 2026-04-10 A | CP09-TR1-EW-1050, CP09-TR1-HD-2380, CP09-TR1-HD-2130, CP09-EN-TR1-A-1720, CP09-PR-PN-DY-1000 | 100% |  | 2025-08-16 | 2025-08-24 |  |  | Cost [1296918]; Sweet sand [3702.2] | 1,296,917.68 | 1,167,226.2 | PLNT | TR01 | SS | MS#01 | CON | SO |
| CP09-TR1-SF-1170 |  | Organic Manure | 7d | 2025-09-30 A | 2026-04-10 A | CP09-TR1-SF-1160 SS+5d, CP09-EN-TR1-A-1720, CP09-PR-PN-DY-1010 | 100% |  | 2025-09-03 | 2025-09-11 |  |  | Cost [841200]; Organic Manure [843.3] | 841,200.18 | 757,080 | PLNT | TR01 | SS | MS#01 | CON | SO |
| CP09-TR1-SF-1210 |  | Succulents | 6d | 2025-09-30 A | 2026-04-28 A | CP09-TR1-SF-1170, CP09-TR1-SF-1160, CP09-TR1-SF-1180 SS+3d, CP09-TR1-SF-1180 FF+3d, CP09-PR-PN-DY-1080 | 100% |  | 2025-09-03 | 2025-09-11 |  |  | Cost [363438]; Succulents [1300] | 363,438.44 | 181,719 | PLNT | TR01 | SS | MS#01 | CON | SO |
| CP09-TR1-SF-1220 |  | Vines & Climbers | 6d | 2025-09-30 A | 2026-04-28 A | CP09-TR1-SF-1170, CP09-TR1-SF-1160, CP09-TR1-SF-1180 SS+3d, CP09-TR1-SF-1180 FF+3d, CP09-PR-PN-DY-1030 | 100% |  | 2025-10-12 | 2025-10-18 |  |  | Cost [26566.1]; Vines & Climbers [241] | 26,566.06 | 13,283 | PLNT | TR01 | SS | MS#01 | CON | SO |
| CP09-TR1-SF-1230 |  | Ornamental grass | 6d | 2025-09-30 A | 2026-06-13 | CP09-TR1-SF-1170, CP09-TR1-SF-1160, CP09-TR1-SF-1180 SS+3d, CP09-TR1-SF-1180 FF+3d, CP09-PR-PN-DY-1050 | 50% | 6d | 2025-11-18 | 2025-11-24 | -138d | 30d | Cost [502971]; Ornamental grass [13594] | 502,970.63 | 50,297.1 | PLNT | TR01 | SS | MS#01 | CON | SO |
| CP09-TR1-SF-1240 |  | Lawn | 6d | 2025-09-30 A | 2026-06-13 | CP09-TR1-SF-1170, CP09-TR1-SF-1160, CP09-TR1-SF-1180 SS+3d, CP09-TR1-SF-1180 FF+3d, CP09-PR-PN-DY-1040 | 50% | 6d | 2025-12-02 | 2025-12-08 | -138d | 30d | Cost [83925.4]; Lawn [1476] | 83,925.36 | 8,392.5 | PLNT | TR01 | SS | MS#01 | CON | SO |
| CP09-TR1-SF-1180 |  | Large Trees | 7d | 2025-11-24 A | 2026-04-28 A | CP09-PR-PN-DY-1020, CP09-TR1-IR-1160, CP09-TR1-IR-1170, CP09-TR1-IR-1180, CP09-TR1-IR-1190, CP09-TR1-IR-1200, CP09-TR1-IR-1150, CP09-TR1-IR-1210 | 100% |  | 2025-09-14 | 2025-09-22 |  |  | Cost [1933001]; Large Trees [706] | 1,933,000.57 | 1,778,167.62 | PLNT | TR01 | SS | MS#01 | CON | SO |

| ID | WBS | Activity | Duration | Start | Finish | Predecessors | Complete | Planned start | Planned finish | Resources | Cost | Actual cost | CP09_Terrace-7 | CP09-Trade | CP09_Milestone-7 | CP09_Discipline-7 | DES | Walls |
| --- | --- | --- | --- | --- | --- | --- | --- | --- | --- | --- | --- | --- | --- | --- | --- | --- | --- | --- |
|  | 17 | **Terrace # 02** |  | 2024-12-14 | 2026-07-18 |  |  |  |  |  |  |  |  |  |  |  |  |  |
|  | 6 | **Earth Work** |  | 2025-09-30 | 2025-10-28 |  |  |  |  |  |  |  |  |  |  |  |  |  |
|  | 1 | **Grading works** |  | 2025-09-30 | 2025-10-28 |  |  |  |  |  |  |  |  |  |  |  |  |  |
| CP09-TR2-EW-1060 |  | Excavation work to Reduce Level | 6d | 2025-09-30 A | 2025-10-28 A | CP09-EN-TR2-A-1740, CP09-CLD-1000, CP09-MS-1010 FS+4d | 100% | 2024-09-28 | 2024-10-03 | Cost; EXCAVATOR; LOADER; TRUCK; Labor [48 h]; Excavation |  |  | TR02 | E-W | MS#01 | CON | HD |  |
| CP09-TR2-EW-1070 |  | Filling works to make up levels with Compacting | 6d | 2025-09-30 A | 2025-10-28 A | CP09-EN-TR2-A-1740, CP09-MS-1010, CP09-CLD-1000, CP09-TR2-EW-1060 SS+4.69d | 100% | 2024-10-05 | 2024-10-13 | Cost; Labor [48 h]; Filling |  |  | TR02 | E-W | MS#01 | CON | HD |  |
|  | 2 | **Planting** |  | 2025-09-30 | 2025-10-28 |  |  |  |  |  |  |  |  |  |  |  |  |  |
| CP09-TR2-EW-1080 |  | Excavation works for Planting Beds | 6d | 2025-09-30 A | 2025-10-28 A | CP09-TR2-EW-1060 SS, CP09-TR2-EW-1070 SS, CP09-EN-TR2-A-1740 | 100% | 2024-10-05 | 2024-10-13 | Cost [915350]; EXCAVATOR [4544 h]; LOADER [5456 h]; TRUCK [5456 h]; Labor [280 h]; Excavation [5681.88 M3] | 915,350.06 | 915,350 | TR02 | E-W | MS#01 | CON | HD |  |
|  | 9 | **Retaining & Cheek Walls** |  | 2024-12-14 | 2026-04-28 |  |  |  |  |  |  |  |  |  |  |  |  |  |
|  | 1 | **Soild Block Work Cheek Walls** |  | 2024-12-14 | 2026-04-28 |  |  |  |  |  |  |  |  |  |  |  |  |  |
| CP09-TR2-RW-1500 |  | Excavation | 3.75d | 2024-12-14 A | 2024-12-18 A | CP09-TR2-EW-1060, CP09-TR2-EW-1070 | 100% | 2024-12-28 | 2024-12-31 | Cost [19413.7]; EXCAVATOR [48 h]; LOADER [56 h]; TRUCK [56 h]; Labor [31 h]; Excavation [60.55 M3] | 19,413.74 | 19,414 | TR02 | RE&CW | MS#01 | CON | HD | RW |
| CP09-TR2-RW-1450 |  | Plaing Concrete with HPDE | 2d | 2024-12-19 A | 2025-04-02 A | CP09-EN-TR2-A-1750, CP09-TR2-RW-1500 SS+2.81d, CP09-TR2-RW-1500 FF+2.81d | 100% | 2025-01-01 | 2025-01-04 | Cost [25885]; Mason [27 h]; Labor [48 h]; Plain Concrete [38.81 M3]; HDPE | 25,884.99 | 25,885 | TR02 | RE&CW | MS#01 | CON | HD | RW |
| CP09-TR2-RW-1460 |  | Reinforced Concrete for Footing | 4d | 2025-01-26 A | 2025-04-05 A | CP09-EN-TR2-A-1760, CP09-EN-TR2-A-1750, CP09-TR2-RW-1450 SS+2d, CP09-TR2-RW-1450 FF+2d | 100% | 2025-02-15 | 2025-02-19 | Cost [194137]; Mason [48 h]; Steel Fixer [45 h]; Shutter [48 h]; Labor [48 h]; Reinforced Concrete [12.94 M3] | 194,137.42 | 194,137 | TR02 | RE&CW | MS#01 | CON | HD | RW |
| CP09-TR2-RW-1470 |  | Reinforced Concrete for Tie beam | 4.69d | 2025-01-28 A | 2025-04-05 A | CP09-TR2-RW-1460 SS+2d, CP09-TR2-RW-1460 FF+2d | 100% | 2025-02-17 | 2025-02-22 | Cost [32356.2]; Mason [48 h]; Steel Fixer [48 h]; Shutter [48 h]; Labor [48 h]; Reinforced Concrete | 32,356.24 | 32,356 | TR02 | RE&CW | MS#01 | CON | HD | RW |
| CP09-TR2-RW-1480 |  | Reinforced Concrete for Column | 3d | 2025-02-03 A | 2025-04-15 A | CP09-TR2-RW-1470 SS+2.81d, CP09-TR2-RW-1470 FF+2.81d | 100% | 2025-02-22 | 2025-02-25 | Cost [32356.2]; Mason [48 h]; Steel Fixer [48 h]; Shutter [48 h]; Labor [48 h]; Reinforced Concrete | 32,356.24 | 32,356 | TR02 | RE&CW | MS#01 | CON | HD | RW |
| CP09-TR2-RW-1490 |  | Soild Block Work | 3d | 2025-05-18 A | 2025-11-28 A | CP09-EN-TR2-A-1780, CP09-PR-CV-DY-1020, CP09-TR2-RW-1480 SS+2d, CP09-TR2-RW-1480 FF+2d | 100% | 2025-05-15 | 2025-05-19 | Cost [64712.5]; Mason [38 h]; Labor [48 h]; Blocks [10.35] | 64,712.47 | 64,712 | TR02 | RE&CW | MS#01 | CON | HD | RW |
| CP09-TR2-RW-1510 |  | Reinforced Concrete for Beam | 4d | 2025-10-24 A | 2025-11-28 A | CP09-TR2-RW-1490 SS+2d, CP09-TR2-RW-1490 FF+2d | 100% | 2025-10-26 | 2025-10-29 | Cost [64712.5]; Mason [12 h]; Steel Fixer [207 h]; Shutter [17 h]; Labor [48 h]; Reinforced Concrete [4.14 M3] | 64,712.47 | 64,712 | TR02 | RE&CW | MS#01 | CON | HD | RW |
| CP09-TR2-RW-1520 |  | Waterproofing & Protection | 3d | 2025-11-10 A | 2025-11-28 A | CP09-EN-TR2-A-1770, CP09-TR2-RW-1510 SS+2d, CP09-TR2-RW-1510 FF+2d | 100% | 2025-11-12 | 2025-11-15 | Cost [25885]; Mason [10.08 h]; Labor [48 h]; Waterproofing [14.49 M2] | 25,884.99 | 25,885 | TR02 | RE&CW | MS#01 | CON | HD | RW |
| CP09-TR2-RW-1530 |  | Backfilling | 3d | 2025-11-10 A | 2025-11-28 A | CP09-TR2-RW-1520 SS+2d, CP09-TR2-RW-1520 FF+2d | 100% | 2025-11-15 | 2025-11-17 | Cost [25885]; Labor [25 h]; Backfilling [41.14 M3] | 25,884.99 | 25,885 | TR02 | RE&CW | MS#01 | CON | HD | RW |
| CP09-TR2-RW-1540 |  | Marble Cladding | 4d | 2026-04-24 A | 2026-04-28 A | CP09-EN-TR2-A-1790, CP09-PR-CV-DY-1120, CP09-TR2-RW-1530 SS+1d, CP09-TR2-RW-1530 FF+1d | 100% | 2026-05-10 | 2026-05-13 | Cost [129425]; Mason [88 h]; Labor [48 h]; Marble [31.05] | 129,425 |  | TR02 | RE&CW | MS#01 | CON | HD | RW |
| CP09-TR2-RW-1550 |  | Marble Copping | 4d | 2026-04-24 A | 2026-04-28 A | CP09-EN-TR2-A-1790, CP09-PR-CV-DY-1120, CP09-TR2-RW-1540 SS+2d, CP09-TR2-RW-1540 FF+2d | 100% | 2026-05-12 | 2026-05-16 | Cost [32356.2]; Mason [160 h]; Labor [48 h]; Marble Coping [25.88] | 32,356 |  | TR02 | RE&CW | MS#01 | CON | HD | RW |
|  | 2 | **Solid Block Retaining Walls** |  | 2024-12-14 | 2026-04-28 |  |  |  |  |  |  |  |  |  |  |  |  |  |
| CP09-TR2-RW-1610 |  | Excavation | 3.75d | 2024-12-14 A | 2024-12-18 A | CP09-TR2-EW-1060, CP09-TR2-EW-1070 | 100% | 2024-12-28 | 2024-12-31 | Cost [5993.22]; EXCAVATOR [48 h]; LOADER [56 h]; TRUCK [56 h]; Labor [31 h]; Excavation [60.55 M3] | 5,993.22 | 5,993 | TR02 | RE&CW | MS#01 | CON | HD | CHW |
| CP09-TR2-RW-1560 |  | Plaing Concrete with HPDE | 2d | 2024-12-19 A | 2025-04-02 A | CP09-EN-TR2-A-1750, CP09-TR2-RW-1610 SS+2d, CP09-TR2-RW-1610 FF+2d | 100% | 2024-12-31 | 2025-01-02 | Cost [7990.96]; Mason [27 h]; Labor [48 h]; Plain Concrete [38.81 M3]; HDPE | 7,990.96 | 7,991 | TR02 | RE&CW | MS#01 | CON | HD | CHW |
| CP09-TR2-RW-1570 |  | Reinforced Concrete for Footing | 4d | 2025-01-26 A | 2025-04-05 A | CP09-EN-TR2-A-1750, CP09-EN-TR2-A-1760, CP09-TR2-RW-1560 SS+1d, CP09-TR2-RW-1560 FF+1d | 100% | 2025-02-15 | 2025-02-19 | Cost [59932.2]; Mason [48 h]; Steel Fixer [45 h]; Shutter [48 h]; Labor [48 h]; Reinforced Concrete [12.94 M3] | 59,932.18 | 59,932 | TR02 | RE&CW | MS#01 | CON | HD | CHW |
| CP09-TR2-RW-1580 |  | Reinforced Concrete for Tie beam | 5d | 2025-01-28 A | 2025-04-05 A | CP09-TR2-RW-1570 SS+2d, CP09-TR2-RW-1570 FF+2d | 100% | 2025-02-17 | 2025-02-23 | Cost [9988.7]; Mason [48 h]; Steel Fixer [48 h]; Shutter [48 h]; Labor [48 h]; Reinforced Concrete | 9,988.7 | 9,989 | TR02 | RE&CW | MS#01 | CON | HD | CHW |
| CP09-TR2-RW-1590 |  | Reinforced Concrete for Column | 3d | 2025-02-03 A | 2025-04-15 A | CP09-TR2-RW-1580 SS+2d, CP09-TR2-RW-1580 FF+2d | 100% | 2025-02-22 | 2025-02-25 | Cost [9988.7]; Mason [48 h]; Steel Fixer [48 h]; Shutter [48 h]; Labor [48 h]; Reinforced Concrete | 9,988.7 | 9,989 | TR02 | RE&CW | MS#01 | CON | HD | CHW |
| CP09-TR2-RW-1600 |  | Soild Block Work | 3d | 2025-09-30 A | 2025-11-28 A | CP09-EN-TR2-A-1780, CP09-TR2-RW-1590 SS+1d, CP09-TR2-RW-1590 FF+1d | 100% | 2025-04-19 | 2025-04-23 | Cost [19977.4]; Mason [38 h]; Labor [48 h]; Blocks [10.35] | 19,977.39 | 19,977 | TR02 | RE&CW | MS#01 | CON | HD | CHW |
| CP09-TR2-RW-1620 |  | Reinforced Concrete for Beam | 4d | 2025-09-30 A | 2025-10-04 A | CP09-TR2-RW-1600 SS+1d, CP09-TR2-RW-1600 FF+1d | 100% | 2025-10-12 | 2025-10-15 | Cost [19977.4]; Mason [12 h]; Steel Fixer [207 h]; Shutter [17 h]; Labor [48 h]; Reinforced Concrete [4.14 M3] | 19,977.39 | 19,977 | TR02 | RE&CW | MS#01 | CON | HD | CHW |
| CP09-TR2-RW-1630 |  | Waterproofing & Protection | 3d | 2025-11-24 A | 2025-11-28 A | CP09-TR2-RW-1620 SS+2d, CP09-TR2-RW-1620 FF+2d | 100% | 2025-11-23 | 2025-11-25 | Cost [7990.96]; Mason [10.08 h]; Labor [48 h]; Waterproofing [14.49 M2] | 7,990.96 | 7,991 | TR02 | RE&CW | MS#01 | CON | HD | CHW |
| CP09-TR2-RW-1640 |  | Backfilling | 3d | 2025-11-24 A | 2025-11-28 A | CP09-TR2-RW-1630 SS+1d, CP09-TR2-RW-1630 FF+1d | 100% | 2025-11-24 | 2025-11-26 | Cost [7990.96]; Labor [25 h]; Backfilling [41.14 M3] | 7,990.96 | 7,991 | TR02 | RE&CW | MS#01 | CON | HD | CHW |
| CP09-TR2-RW-1650 |  | Marble Cladding | 4d | 2026-04-24 A | 2026-04-28 A | CP09-EN-TR2-A-1790, CP09-PR-CV-DY-1120, CP09-TR2-RW-1640 SS+1d, CP09-TR2-RW-1640 FF+1d | 100% | 2026-05-10 | 2026-05-13 | Cost [39954.8]; Mason [88 h]; Labor [48 h]; Marble [31.05] | 39,955 |  | TR02 | RE&CW | MS#01 | CON | HD | CHW |
| CP09-TR2-RW-1660 |  | Marble Copping | 4d | 2026-04-24 A | 2026-04-28 A | CP09-EN-TR2-A-1790, CP09-PR-CV-DY-1120, CP09-TR2-RW-1650 SS+2d, CP09-TR2-RW-1650 FF+2d | 100% | 2026-05-12 | 2026-05-16 | Cost [9988.7]; Mason [160 h]; Labor [48 h]; Marble Coping [25.88] | 9,989 |  | TR02 | RE&CW | MS#01 | CON | HD | CHW |

| ID | WBS | Activity | Duration | Start | Finish | Predecessors | Complete | Remaining | Planned start | Planned finish | Total float | Free float | Resources | Cost | Actual cost | Networks | CP09_Terrace-7 | CP09-Trade | CP09_Milestone-7 | CP09_Discipline-7 | DES | Hardscape |
| --- | --- | --- | --- | --- | --- | --- | --- | --- | --- | --- | --- | --- | --- | --- | --- | --- | --- | --- | --- | --- | --- | --- |
|  | 1 | **Irrigation Works** |  | 2025-10-13 | 2026-06-18 |  |  |  |  |  |  |  |  |  |  |  |  |  |  |  |  |  |
|  | 1 | **Sub-Main & Lateral** |  | 2025-10-13 | 2026-04-28 |  |  |  |  |  |  |  |  |  |  |  |  |  |  |  |  |  |
| CP09-TR2-IR-1220 |  | Excavation for Sub-main & Lateral Pieps | 4d | 2025-10-13 A | 2026-04-28 A | CP09-EN-TR2-A-1980, CP09-TR2-HD-3040 | 100% |  | 2025-05-28 | 2025-06-02 |  |  | Cost [484535]; EXCAVATOR [4784 h]; LOADER [5744 h]; TRUCK [5744 h]; Excavation [7977.8 M3] | 484,535.36 | 460,308.25 | IRR | TR02 | IRR-W | MS#01 | CON | SO |  |
| CP09-TR2-IR-1230 |  | Sub-main & Lateral Pieps laying out and installation | 5d | 2025-11-03 A | 2026-04-28 A | CP09-TR2-IR-1220 SS+2d, CP09-TR2-IR-1220 FF+5d, CP09-PR-IR-DY-1000 | 100% |  | 2025-06-02 | 2025-06-17 |  |  | Cost [872164]; PipeFitter [280 h]; Labor [48 h]; UPVC Pipes [7977.8 M] | 872,163.65 | 828,555.8 | IRR | TR02 | IRR-W | MS#01 | CON | SO |  |
| CP09-TR2-IR-1240 |  | Sub-main & Lateral Pieps Testing | 3d | 2026-02-16 A | 2026-04-28 A | CP09-TR2-IR-1230 SS+2d, CP09-TR2-IR-1230 FF+2d | 100% |  | 2025-10-30 | 2025-11-03 |  |  | Cost [96907.1] | 96,907.07 | 92,061.65 | IRR | TR02 | IRR-W | MS#01 | CON | SO |  |
| CP09-TR2-IR-1250 |  | Backfilling forSub-main & Lateral Pieps | 4d | 2026-02-16 A | 2026-04-28 A | CP09-TR2-IR-1240 SS+2d, CP09-TR2-IR-1240 FF+2d | 100% |  | 2025-11-02 | 2025-11-06 |  |  | Cost [484535]; Labor [48 h]; Backfilling [7977.8 M3] | 484,535.36 | 460,308.25 | IRR | TR02 | IRR-W | MS#01 | CON | SO |  |
|  | 2 | **Fittings & Accessories** |  | 2026-02-16 | 2026-06-18 |  |  |  |  |  |  |  |  |  |  |  |  |  |  |  |  |  |
| CP09-TR2-IR-1310 |  | Installation of Controller decoder cables | 5d | 2026-02-16 A | 2026-04-28 A | CP09-TR2-IR-1300 SF, CP09-PR-IR-DY-1070 | 100% |  | 2026-01-13 | 2026-01-19 |  |  | Cost [198024]; Controller Cable [1850]; Labor [48 h] | 198,024 | 198,024 | IRR | TR02 | IRR-W | MS#01 | CON | SO |  |
| CP09-TR2-IR-1260 |  | Installation of Dripline | 3d | 2026-03-09 A | 2026-06-09 | CP09-PR-IR-DY-1010, CP09-TR2-IR-1240, CP09-TR2-SF-1330 | 50% | 3d | 2026-03-16 | 2026-03-19 | -143d | 0d | Cost [789420]; Labor [280 h]; Dripline [29500 Nos_] | 789,420 |  | IRR | TR02 | IRR-W | MS#01 | CON | SO |  |
| CP09-TR2-IR-1290 |  | Installation of Electrical solenoid valve | 3d | 2026-03-09 A | 2026-06-09 | CP09-TR2-IR-1280, CP09-PR-IR-DY-1050 | 60% | 3d | 2026-03-26 | 2026-03-30 | -135d | 33d | Cost [439801]; Solenoid valve [22.4]; Labor [48 h] | 439,801 |  | IRR | TR02 | IRR-W | MS#01 | CON | SO |  |
| CP09-TR2-IR-1320 |  | Installation of Decoder one station | 3d | 2026-06-07 | 2026-06-09 | CP09-TR2-IR-1310 SS, CP09-PR-IR-DY-1080 |  |  |  |  | -111d | 138.06d | Cost [212404]; Decoder station [28.4]; Labor [48 h] | 212,404 |  | IRR | TR02 | IRR-W | MS#01 | CON | SO |  |
| CP09-TR2-IR-1270 |  | Installation of Sprinklers | 3d | 2026-06-09 | 2026-06-11 | CP09-TR2-IR-1260 SS+2d, CP09-PR-IR-DY-1040, CP09-TR2-IR-1260 FF+2d |  |  |  |  | -143d | 0d | Cost [57038.3]; Labor [48 h]; Sprinkle [84.1 Nos_] | 57,038 |  | IRR | TR02 | IRR-W | MS#01 | CON | SO |  |
| CP09-TR2-IR-1280 |  | Installation Valves & Rings | 5d | 2026-06-11 | 2026-06-16 | CP09-TR2-IR-1270 SS+2d, CP09-PR-IR-DY-1030, CP09-PR-IR-DY-1020, CP09-TR2-IR-1270 FF+2d |  |  |  |  | -143d | 0d | Cost [208328]; Valves [715.1]; Labor [48 h] | 208,328 |  | IRR | TR02 | IRR-W | MS#01 | CON | SO |  |
| CP09-TR2-IR-1300 |  | Installation of Controller (decoder system plastic pedestal) | 2d | 2026-06-17 | 2026-06-18 | CP09-TR2-IR-1280, CP09-TR2-IR-1290 SS, CP09-PR-IR-DY-1060 |  |  |  |  | -143d | 25d | Cost [262719]; Controller [1]; Labor [48 h] | 262,719 |  | IRR | TR02 | IRR-W | MS#01 | CON | SO |  |
|  | 4 | **Electrical Works** |  | 2025-10-13 | 2026-07-14 |  |  |  |  |  |  |  |  |  |  |  |  |  |  |  |  |  |
|  | 1 | **Power Cable & Pillars** |  | 2025-10-13 | 2026-07-14 |  |  |  |  |  |  |  |  |  |  |  |  |  |  |  |  |  |
| CP09-TR2-EL-1080 |  | Excavation | 5d | 2025-10-13 A | 2026-01-23 A | CP09-TR2-EW-1060, CP09-TR2-EW-1070, CP09-TR2-IR-1250, CP09-EN-TR2-A-1940 | 100% |  | 2025-10-30 | 2025-11-05 |  |  | Cost [374565]; EXCAVATOR [3344 h]; LOADER [4016 h]; TRUCK [4016 h]; Excavation [6974.38 M3] | 374,564.9 | 355,836.75 | ELEC | TR02 | EL-W | MS#01 | CON | HD |  |
| CP09-TR2-EL-1090 |  | Installation of Power Cables | 4d | 2025-10-13 A | 2026-01-23 A | CP09-TR2-EL-1080 SS+2d, CP09-TR2-EL-1080 FF+2d, CP09-EN-TR2-A-1940, CP09-EN-TR2-A-1950, CP09-PR-EL-DY-1060 | 100% |  | 2025-11-03 | 2025-11-08 |  |  | Cost [898956]; Electrical Cable [6974.38]; Electrican [280 h]; Labor [48 h] | 898,955.77 | 854,008.2 | ELEC | TR02 | EL-W | MS#01 | CON | HD |  |
| CP09-TR2-EL-1100 |  | Backfilling for Power Cables | 4d | 2025-10-13 A | 2026-01-23 A | CP09-TR2-EL-1090 SS+2d, CP09-TR2-EL-1090 FF+2d | 100% |  | 2025-11-05 | 2025-11-10 |  |  | Cost [224739]; Backfilling [6974.38 M3] | 224,738.94 | 213,502.05 | ELEC | TR02 | EL-W | MS#01 | CON | HD |  |
| CP09-TR2-EL-1110 |  | Installation of Connecting Pillars | 3d | 2026-07-12 | 2026-07-14 | CP09-PR-EL-DY-1070, CP09-TR2-HD-2920 SS+3d |  |  |  |  | -159d | 0d | Cost [428687]; Pillars [3]; Electrican [48 h]; Labor [48 h] | 428,687 |  | ELEC | TR02 | EL-W | MS#01 | CON | HD |  |
|  | 3 | **Hardscape** |  | 2025-09-30 | 2026-06-30 |  |  |  |  |  |  |  |  |  |  |  |  |  |  |  |  |  |
|  | 6 | **Concrete Curb** |  | 2025-10-24 | 2026-04-10 |  |  |  |  |  |  |  |  |  |  |  |  |  |  |  |  |  |
| CP09-TR2-HD-2870 |  | Excavation | 2d | 2025-10-24 A | 2025-12-12 A | CP09-TR2-EW-1080 SS+3d, CP09-TR2-EW-1070 FF+3d, CP09-TR2-EW-1060 FF+3d, CP09-TR2-EW-1080 FF+3d, CP09-TR2-EW-1060 SS+3d, CP09-TR2-EW-1070 SS+3d | 100% |  | 2025-10-29 | 2025-11-01 |  |  | Cost [158617]; EXCAVATOR [312 h]; LOADER [368 h]; TRUCK [368 h]; Excavation [384.51 M3] | 158,616.78 | 158,617 |  | TR02 | HS | MS#01 | CON | HD | CURB |
| CP09-TR2-HD-2880 |  | Plains Concrete with HDPE waterproofing | 2d | 2025-10-24 A | 2025-12-12 A | CP09-EN-TR2-A-1870, CP09-TR2-HD-2870 | 100% |  | 2025-11-01 | 2025-11-03 |  |  | Cost [475850]; Plain Concrete [1121.49 M3]; HDPE | 475,850.35 | 475,850 |  | TR02 | HS | MS#01 | CON | HD | CURB |
| CP09-TR2-HD-3030 |  | Under Paving Reinforced Concrete Curb | 4d | 2025-10-24 A | 2025-12-12 A | CP09-TR2-HD-2880 SS+1.88d, CP09-TR2-HD-2880 FF+1.88d | 100% |  | 2025-11-03 | 2025-11-08 |  |  | Cost [951701]; Mason [385 h]; Steel Fixer [269 h]; Shutter [513 h]; Labor [48 h]; Reinforced Concrete [128.17 M3] | 951,700.7 | 951,701 |  | TR02 | HS | MS#01 | CON | HD | CURB |
| CP09-TR2-HD-3040 |  | Instal Flush Curb | 3d | 2026-03-31 A | 2026-04-10 A | CP09-EN-TR2-A-1870, CP09-PR-HD-DY-1080, CP09-TR2-HD-3030 SS+3d, CP09-TR2-HD-3030 SF+3d, CP09-TR2-HD-3030 FS+3d, CP09-TR2-HD-3030 FF+3d | 100% |  | 2026-03-31 | 2026-04-02 |  |  | Cost [116047]; Mason [160 h]; Labor [48 h]; Flush Curb [360.25] | 116,047 |  |  | TR02 | HS | MS#01 | CON | HD | CURB |

| ID | WBS | Activity | Duration | Start | Finish | Predecessors | Complete | Planned start | Planned finish | Resources | Cost | Actual cost | Hardscape | CP09_Terrace-7 | CP09-Trade | CP09_Milestone-7 | CP09_Discipline-7 | DES |
| --- | --- | --- | --- | --- | --- | --- | --- | --- | --- | --- | --- | --- | --- | --- | --- | --- | --- | --- |
|  | 1 | **Side wake & Plazes** |  | 2025-09-30 | 2026-05-08 |  |  |  |  |  |  |  |  |  |  |  |  |  |
|  | 8 | **Interlocking Paving** |  | 2025-12-08 | 2026-01-09 |  |  |  |  |  |  |  |  |  |  |  |  |  |
| CP09-TR2-HD-2890 |  | Crush Stone for Interlock Types IL-(01,02,06,07) | 4d | 2025-12-08 A | 2026-01-09 A | CP09-EN-TR2-A-1880, CP09-TR2-EW-1060, CP09-TR2-EW-1070, CP09-TR2-IR-1250, CP09-TR2-EL-1100, CP09-PR-HD-DY-1090 | 100% | 2025-12-24 | 2025-12-29 | Cost [410521]; Mason [280 h]; Labor [48 h]; Crushed Stone [2325.12] | 410,520.86 | 410,521 | INTK | TR02 | HS | MS#01 | CON | HD |
| CP09-TR2-HD-2900 |  | Sand Layer for Interlock Types IL-(01,02,06,07) | 4d | 2025-12-08 A | 2026-01-09 A | CP09-EN-TR2-A-1880, CP09-TR2-HD-2890 SS+2d, CP09-TR2-HD-2890 FF+2d | 100% | 2025-12-27 | 2025-12-31 | Cost [279178]; Mason [48 h]; Clean sand [2321.5] | 279,178.42 | 279,178 | INTK | TR02 | HS | MS#01 | CON | HD |
| CP09-TR2-HD-2910 |  | Motar Bed Interlock Types IL-(03,04,08,09,10) | 3d | 2025-12-08 A | 2026-01-09 A | CP09-EN-TR2-A-1880, CP09-TR2-HD-2900 SS | 100% | 2025-12-27 | 2025-12-30 | Cost [68357.3]; Mason [48 h]; Labor [48 h] | 68,357.32 | 68,357 | INTK | TR02 | HS | MS#01 | CON | HD |
| CP09-TR2-HD-2920 |  | Interlocking Paving | 5d | 2025-12-08 A | 2026-01-09 A | CP09-TR2-HD-2910 SS+2d, CP09-TR2-HD-2900 FF+2d, CP09-TR2-HD-2910 FF+2d, CP09-EN-TR2-A-1880, CP09-PR-HD-DY-1180, CP09-TR2-HD-2900 SS+2d | 100% | 2025-12-29 | 2026-01-04 | Cost [521304]; Mason [280 h]; Labor [48 h]; Interlock [2966] | 521,303.61 | 521,304 | INTK | TR02 | HS | MS#01 | CON | HD |
|  | 2 | **Concrete in Situ** |  | 2026-02-16 | 2026-04-10 |  |  |  |  |  |  |  |  |  |  |  |  |  |
|  | 1 | **Slab on Garde** |  | 2026-02-16 | 2026-04-10 |  |  |  |  |  |  |  |  |  |  |  |  |  |
| CP09-TR2-HD-2690 |  | Reinfored Concrete slab on grade | 3d | 2026-02-16 A | 2026-04-10 A | CP09-TR2-HD-2680 FF+1d, CP09-TR2-HD-2680 SS+1d | 100% | 2025-12-28 | 2025-12-30 | Cost [1444922]; Mason [48 h]; Steel Fixer [128 h]; Shutter [48 h]; Labor [48 h]; Reinforced Concrete [333.99 M3] | 1,444,921.77 | 433,476.6 | CON | TR02 | HS | MS#01 | CON | HD |
| CP09-TR2-HD-2680 |  | Plain Concrete with HDPE | 2d | 2026-02-22 A | 2026-04-10 A | CP09-TR2-IR-1250, CP09-TR2-EL-1100, CP09-EN-TR2-A-1800, CP09-TR2-EW-1060, CP09-TR2-EW-1070 | 100% | 2025-10-28 | 2025-10-30 | Cost [577969]; Mason [160 h]; Labor [48 h]; Plain Concrete [3339.88 M3]; HDPE | 577,968.71 | 549,070.55 | CON | TR02 | HS | MS#01 | CON | HD |
| CP09-TR2-HD-2700 |  | Waterproofing & Screed | 2d | 2026-02-22 A | 2026-04-10 A | CP09-TR2-HD-2690 FF+1d, CP09-TR2-HD-2690 SS+1d | 100% | 2025-12-30 | 2025-12-31 | Cost [288984]; Mason [160 h]; Labor [48 h]; Waterproofing [3339.88 M2] | 288,984.35 | 86,695.2 | CON | TR02 | HS | MS#01 | CON | HD |
|  | 2 | **Concrete In-situ w./Exposed Aggregate Finish** |  | 2026-02-16 | 2026-04-10 |  |  |  |  |  |  |  |  |  |  |  |  |  |
| CP09-TR2-HD-2720 |  | Finishing Concrete Surface | 2d | 2026-02-16 A | 2026-04-10 A | CP09-TR2-HD-2710, CP09-TR2-RW-1540, CP09-TR2-RW-1550, CP09-TR2-RW-1650, CP09-TR2-RW-1660 | 100% | 2026-01-18 | 2026-01-19 | Cost [866953]; Mason [48 h]; Labor [48 h] | 866,953.06 | 260,085.9 | CON | TR02 | HS | MS#01 | CON | HD |
| CP09-TR2-HD-2710 |  | Concrete casting (including Joints & Wire Mish) | 3d | 2026-02-22 A | 2026-04-10 A | CP09-EN-TR2-A-1800, CP09-PR-HD-DY-1000, CP09-TR2-HD-2700 FF+1d, CP09-TR2-HD-2700 SS+1d, CP09-TR2-HD-3040 | 100% | 2025-12-31 | 2026-01-03 | Cost [2600859]; Mason [160 h]; Labor [48 h]; Concrete /Exposed Aggregate [3339.88] | 2,600,859.19 | 780,257.7 | CON | TR02 | HS | MS#01 | CON | HD |
|  | 1 | **Marble Paving** |  | 2025-10-13 | 2026-01-29 |  |  |  |  |  |  |  |  |  |  |  |  |  |
|  | 1 | **Slab on Garde** |  | 2025-10-13 | 2025-11-28 |  |  |  |  |  |  |  |  |  |  |  |  |  |
| CP09-TR2-HD-2630 |  | Plain Concrete with HDPE | 2d | 2025-10-13 A | 2025-11-28 A | CP09-TR2-IR-1250, CP09-TR2-EL-1100, CP09-EN-TR2-A-1810, CP09-TR2-EW-1060, CP09-TR2-EW-1080 | 100% | 2025-11-10 | 2025-11-12 | Cost [173552]; Mason [128 h]; Labor [48 h]; Plain Concrete [808.88 M3]; HDPE | 173,552.22 | 173,552 | MRB | TR02 | HS | MS#01 | CON | HD |
| CP09-TR2-HD-2640 |  | Reinfored Concrete slab on grade | 3d | 2025-10-13 A | 2025-11-28 A | CP09-TR2-HD-2630 FF+1d, CP09-TR2-HD-2630 SS+1d | 100% | 2025-11-11 | 2025-11-15 | Cost [416525]; Mason [48 h]; Steel Fixer [170 h]; Shutter [48 h]; Labor [48 h]; Reinforced Concrete [80.89 M3] | 416,525.33 | 416,525 | MRB | TR02 | HS | MS#01 | CON | HD |
| CP09-TR2-HD-2650 |  | Waterproofing & Screed | 2d | 2025-11-03 A | 2025-11-28 A | CP09-TR2-HD-2640 FF+1d, CP09-TR2-HD-2640 SS+1d | 100% | 2025-11-11 | 2025-11-12 | Cost [104131]; Mason [128 h]; Labor [48 h]; Waterproofing [808.88 M2] | 104,131.33 | 104,131 | MRB | TR02 | HS | MS#01 | CON | HD |
|  | 2 | **Marble Tiles** |  | 2025-10-24 | 2026-01-29 |  |  |  |  |  |  |  |  |  |  |  |  |  |
| CP09-TR2-HD-2660 |  | Marble Fixiation | 3d | 2025-10-24 A | 2026-01-29 A | CP09-EN-TR2-A-1810, CP09-PR-HD-DY-1010, CP09-TR2-HD-2650 FF+1d, CP09-TR2-HD-2650 SS+1d, CP09-TR2-HD-3040 | 100% | 2025-11-15 | 2025-11-18 | Cost [2283133]; Mason [160 h]; Labor [48 h]; Marble [1120.38] | 2,283,132.51 | 2,168,976.35 | MRB | TR02 | HS | MS#01 | CON | HD |
| CP09-TR2-HD-2670 |  | Marble Surfcae Finishing | 2d | 2025-11-17 A | 2026-01-29 A | CP09-TR2-HD-2660, CP09-TR2-HD-2720 SS | 100% | 2025-12-14 | 2025-12-15 | Cost [402906]; Mason [48 h]; Labor [48 h] | 402,905.74 | 382,760.7 | MRB | TR02 | HS | MS#01 | CON | HD |
|  | 3 | **Wooden Floor Boards** |  |  |  |  |  |  |  |  |  |  |  |  |  |  |  |  |
|  | 1 | **Slab on Garde** |  |  |  |  |  |  |  |  |  |  |  |  |  |  |  |  |
|  | 2 | **Wood- Plastic Composit** |  |  |  |  |  |  |  |  |  |  |  |  |  |  |  |  |
|  | 4 | **Gravel layer** |  | 2025-09-30 | 2026-05-08 |  |  |  |  |  |  |  |  |  |  |  |  |  |
|  | 1 | **Slab on Garde** |  | 2025-09-30 | 2026-05-08 |  |  |  |  |  |  |  |  |  |  |  |  |  |
| CP09-TR2-HD-2780 |  | Plain Concrete with HDPE | 2d | 2025-09-30 A | 2025-10-04 A | CP09-TR2-IR-1250, CP09-TR2-EL-1100, CP09-EN-TR2-A-1830, CP09-TR2-EW-1060, CP09-TR2-EW-1070 | 100% | 2025-11-03 | 2025-11-05 | Cost [7507.48]; Mason [90 h]; Labor [48 h]; Plain Concrete [128.88 M3]; HDPE | 7,507.48 | 7,507 | GRV | TR02 | HS | MS#01 | CON | HD |
| CP09-TR2-HD-2790 |  | Mortar bed | 2d | 2026-04-30 A | 2026-05-08 A | CP09-TR2-HD-2780 SS+1d, CP09-TR2-HD-2780 FF+1d | 100% | 2026-04-30 | 2026-05-02 | Cost [7507.48]; Mason [48 h]; Labor [48 h] | 7,507 |  | GRV | TR02 | HS | MS#01 | CON | HD |

| ID | WBS | Activity | Duration | Start | Finish | Predecessors | Complete | Planned start | Planned finish | Total float | Free float | Resources | Cost | Actual cost | Hardscape | CP09_Terrace-7 | CP09-Trade | CP09_Milestone-7 | CP09_Discipline-7 | DES |
| --- | --- | --- | --- | --- | --- | --- | --- | --- | --- | --- | --- | --- | --- | --- | --- | --- | --- | --- | --- | --- |
|  | 2 | **Gravel Layer, w./Earth Colors** |  | 2026-05-04 | 2026-05-08 |  |  |  |  |  |  |  |  |  |  |  |  |  |  |  |
| CP09-TR2-HD-2800 |  | Furnish & install Garvel Layer | 3d | 2026-05-04 A | 2026-05-08 A | CP09-EN-TR2-A-1830, CP09-PR-HD-DY-1030, CP09-TR2-HD-2790, CP09-TR2-HD-3040 | 100% | 2026-05-18 | 2026-05-20 |  |  | Cost [35034.9]; Mason [77 h]; Labor [48 h]; Gravel Layer [128.88] | 35,035 |  | GRV | TR02 | HS | MS#01 | CON | HD |
|  | 5 | **Crushed Stone** |  | 2026-04-30 | 2026-05-08 |  |  |  |  |  |  |  |  |  |  |  |  |  |  |  |
|  | 1 | **Slab on Garde** |  | 2026-04-30 | 2026-05-08 |  |  |  |  |  |  |  |  |  |  |  |  |  |  |  |
| CP09-TR2-HD-2810 |  | Geotextile membrane | 2.81d | 2026-04-30 A | 2026-05-08 A | CP09-TR2-IR-1250, CP09-TR2-EL-1100, CP09-EN-TR2-A-1840, CP09-TR2-EW-1060, CP09-TR2-EW-1070 | 100% | 2026-04-30 | 2026-05-03 |  |  | Cost [3164.14]; Mason [48 h]; Labor [4 h]; Geotextile Sheets [13.25] | 3,164 |  | CRST | TR02 | HS | MS#01 | CON | HD |
| CP09-TR2-HD-2820 |  | Gravel fix sheets | 2.81d | 2026-05-04 A | 2026-05-08 A | CP09-TR2-HD-2810 | 100% | 2026-05-03 | 2026-05-06 |  |  | Cost [3164.14]; Waterproofing | 3,164 |  | CRST | TR02 | HS | MS#01 | CON | HD |
|  | 2 | **Crushed Dolomite Stone** |  | 2026-05-04 | 2026-05-08 |  |  |  |  |  |  |  |  |  |  |  |  |  |  |  |
| CP09-TR2-HD-2830 |  | Furnish & Install Crushed Dolomite stone , w./ mixed colors | 4d | 2026-05-04 A | 2026-05-08 A | CP09-EN-TR2-A-1840, CP09-PR-HD-DY-1040, CP09-TR2-HD-2820 FF, CP09-TR2-HD-2820 SS, CP09-TR2-HD-2800 SS, CP09-TR2-HD-3040 | 100% | 2026-05-18 | 2026-05-21 |  |  | Cost [14766]; Mason [37 h]; Labor [48 h]; Crushed Dolomite stone [13.25] | 14,766 |  | CRST | TR02 | HS | MS#01 | CON | HD |
|  | 6 | **Loose Gravel** |  | 2026-05-04 | 2026-05-08 |  |  |  |  |  |  |  |  |  |  |  |  |  |  |  |
|  | 2 | **Loose Gravel 50mm** |  | 2026-05-04 | 2026-05-08 |  |  |  |  |  |  |  |  |  |  |  |  |  |  |  |
| CP09-TR2-HD-2840 |  | Furnish & Install loose gravel w./earth colors. | 4d | 2026-05-04 A | 2026-05-08 A | CP09-TR2-IR-1250, CP09-TR2-EL-1100, CP09-EN-TR2-A-1850, CP09-PR-HD-DY-1050, CP09-TR2-HD-3040 | 100% | 2026-05-18 | 2026-05-21 |  |  | Cost [8429.21]; Mason [19 h]; Labor [48 h]; Loose gravel [31.38] | 8,429 |  | LGRV | TR02 | HS | MS#01 | CON | HD |
|  | 7 | **Clean Sand Layer** |  | 2026-03-09 | 2026-04-10 |  |  |  |  |  |  |  |  |  |  |  |  |  |  |  |
|  | 1 | **Kids & Fitness Area** |  | 2026-03-09 | 2026-04-10 |  |  |  |  |  |  |  |  |  |  |  |  |  |  |  |
| CP09-TR2-HD-2850 |  | Geotextile Sheets | 3d | 2026-03-09 A | 2026-04-10 A | CP09-TR2-HD-3040, CP09-TR2-IR-1250, CP09-TR2-EL-1100, CP09-EN-TR2-A-1860, CP09-TR2-EW-1060, CP09-TR2-EW-1070 | 100% | 2026-03-18 | 2026-03-22 |  |  | Cost [65290.1]; Geotextile Sheets [1227.62] | 65,290 |  | SND | TR02 | HS | MS#01 | CON | HD |
| CP09-TR2-HD-2860 |  | Install Clean sand layer | 3d | 2026-03-09 A | 2026-04-10 A | CP09-EN-TR2-A-1860, CP09-PR-HD-DY-1070, CP09-TR2-HD-2850, CP09-TR2-HD-2840, CP09-TR2-HD-3040 | 100% | 2026-03-30 | 2026-04-01 |  |  | Cost [261160]; Clean sand [1227.62] | 261,160 |  | SND | TR02 | HS | MS#01 | CON | HD |
|  | 2 | **Site Improvments** |  | 2025-11-10 | 2026-06-30 |  |  |  |  |  |  |  |  |  |  |  |  |  |  |  |
|  | 1 | **Marble Steps** |  | 2025-12-08 | 2026-02-06 |  |  |  |  |  |  |  |  |  |  |  |  |  |  |  |
| CP09-TR2-HD-2930 |  | Reinforecd Concrete Step. | 4d | 2025-12-08 A | 2026-02-06 A | CP09-TR2-EW-1060, CP09-TR2-EW-1070, CP09-EN-TR2-A-1890, CP09-TR2-IR-1250, CP09-TR2-EL-1100 | 100% | 2025-12-24 | 2025-12-29 |  |  | Cost [255883]; Mason [48 h]; Steel Fixer [48 h]; Shutter [48 h]; Labor [48 h]; Reinforced Concrete | 255,882.62 | 243,088.85 | STP | TR02 | HS | MS#01 | CON | HD |
| CP09-TR2-HD-2940 |  | Install Marble Blocks | 3d | 2025-12-08 A | 2026-02-06 A | CP09-TR2-HD-2930 SS+2d, CP09-TR2-HD-2930 FF+2d, CP09-PR-HD-DY-1100 | 100% | 2025-12-28 | 2025-12-31 |  |  | Cost [162834]; Marble Step [6.38] | 162,834.39 | 154,692.3 | STP | TR02 | HS | MS#01 | CON | HD |
| CP09-TR2-HD-2950 |  | Finishing Marble Surface | 2d | 2025-12-08 A | 2026-02-06 A | CP09-TR2-HD-2940, CP09-TR2-RW-1540, CP09-TR2-RW-1550, CP09-TR2-RW-1650, CP09-TR2-RW-1660 | 100% | 2026-01-04 | 2026-01-05 |  |  | Cost [46524.1] | 46,524.11 | 44,197.8 | STP | TR02 | HS | MS#01 | CON | HD |
|  | 2 | **Curvelinear Block Seat** |  | 2025-11-10 | 2026-06-25 |  |  |  |  |  |  |  |  |  |  |  |  |  |  |  |
| CP09-TR2-HD-2960 |  | Excavation | 2d | 2025-11-10 A | 2025-11-21 A | CP09-TR2-EW-1060, CP09-TR2-EW-1070, CP09-EN-TR2-A-1900 | 100% | 2025-11-09 | 2025-11-10 |  |  | Cost [9988.94]; EXCAVATOR [48 h]; LOADER [56 h]; TRUCK [56 h]; Excavation [59.96 M3] | 9,988.94 | 9,989 | SEAT | TR02 | HS | MS#01 | CON | HD |
| CP09-TR2-HD-2970 |  | Plaing Concrete with HPDE | 2d | 2025-11-10 A | 2025-11-21 A | CP09-TR2-HD-2960 | 100% | 2025-11-11 | 2025-11-12 |  |  | Cost [12486.2]; Mason [24 h]; Labor [48 h]; Plain Concrete [34.59 M3]; HDPE | 12,486.18 | 12,486 | SEAT | TR02 | HS | MS#01 | CON | HD |
| CP09-TR2-HD-2980 |  | Reinforced Concrete for Footing | 4d | 2025-11-10 A | 2025-11-21 A | CP09-TR2-HD-2970 SS+2d, CP09-TR2-HD-2970 FF+2d | 100% | 2025-11-13 | 2025-11-17 |  |  | Cost [74917.1]; Mason [48 h]; Steel Fixer [31 h]; Shutter [48 h]; Labor [48 h]; Reinforced Concrete [8.84 M3] | 74,917.07 | 74,917 | SEAT | TR02 | HS | MS#01 | CON | HD |
| CP09-TR2-HD-2990 |  | Reinforced Concrete for Beam | 3d | 2025-11-10 A | 2025-11-21 A | CP09-TR2-HD-2980 SS+3d, CP09-TR2-HD-2980 FF+3d | 100% | 2025-11-18 | 2025-11-20 |  |  | Cost [24972.4]; Mason [5 h]; Steel Fixer [77 h]; Shutter [6 h]; Labor [48 h]; Reinforced Concrete [1.54 M3] | 24,972.36 | 24,972 | SEAT | TR02 | HS | MS#01 | CON | HD |
| CP09-TR2-HD-3000 |  | Waterproofing & Protection | 2d | 2025-11-10 A | 2025-11-21 A | CP09-TR2-HD-2990 SS+2d, CP09-TR2-HD-2990 FF+2d | 100% | 2025-11-22 | 2025-11-23 |  |  | Cost [24972.4]; Waterproofing [9.22 M2] | 24,972.36 | 24,972 | SEAT | TR02 | HS | MS#01 | CON | HD |
| CP09-TR2-HD-3010 |  | Backfilling | 2d | 2025-12-22 A | 2025-12-26 A | CP09-TR2-HD-3000 SS+2d, CP09-TR2-HD-3000 FF+2d | 100% | 2025-12-28 | 2025-12-29 |  |  | Cost [14983.4]; Backfilling [40.74 M3] | 14,983.41 | 14,983 | SEAT | TR02 | HS | MS#01 | CON | HD |
| CP09-TR2-HD-3020 |  | Marble Capping | 2d | 2026-06-24 | 2026-06-25 | CP09-TR2-RW-1650, CP09-TR2-RW-1660, CP09-TR2-RW-1540, CP09-TR2-RW-1550, CP09-TR2-HD-3010 SS+1d, CP09-PR-HD-DY-1110, CP09-TR2-HD-3010 FF+1d |  |  |  | -147d | 0d | Cost [87403.2]; Mason [160 h]; Labor [48 h]; Marble Coping [25.62] | 87,403 |  | SEAT | TR02 | HS | MS#01 | CON | HD |

| ID | WBS | Activity | Duration | Start | Finish | Predecessors | Complete | Planned start | Planned finish | Total float | Free float | Resources | Cost | Hardscape | CP09_Terrace-7 | CP09-Trade | CP09_Milestone-7 | CP09_Discipline-7 | DES | Softscape |
| --- | --- | --- | --- | --- | --- | --- | --- | --- | --- | --- | --- | --- | --- | --- | --- | --- | --- | --- | --- | --- |
|  | 4 | **Handrails** |  | 2026-06-27 | 2026-06-30 |  |  |  |  |  |  |  |  |  |  |  |  |  |  |  |
| CP09-TR2-HD-3050 |  | Install & Fix Stainless Handrail (500 mm height) | 3d | 2026-06-27 | 2026-06-29 | CP09-TR2-HD-2940, CP09-TR2-HD-3020, CP09-EN-TR2-A-1920, CP09-PR-HD-DY-1160 |  |  |  | -146d | 13d | Cost [131128]; Labor [51 h]; Stanless Steel Handrial [25.62] | 131,128 | HND | TR02 | HS | MS#01 | CON | HD |  |
| CP09-TR2-HD-3060 |  | Install & Fix Glass Handrail (900mm height) | 4d | 2026-06-27 | 2026-06-30 | CP09-TR2-HD-2940, CP09-TR2-HD-3020, CP09-EN-TR2-A-1920, CP09-PR-HD-DY-1170 |  |  |  | -147d | 12d | Cost [44178.5]; Glass Handrail [3.5]; Labor [7 h] | 44,179 | HND | TR02 | HS | MS#01 | CON | HD |  |
|  | 8 | **Sinage** |  | 2025-09-30 | 2026-04-28 |  |  |  |  |  |  |  |  |  |  |  |  |  |  |  |
| CP09-TR2-SN-3180 |  | Excavation | 2d | 2025-09-30 A | 2026-04-24 A | CP09-TR2-HD-2920, CP09-EN-TR2-A-1960 | 100% | 2026-02-15 | 2026-02-16 |  |  | Cost [21369.8]; EXCAVATOR [72 h]; LOADER [88 h]; TRUCK [88 h]; Excavation [92.06 M3] | 21,370 | SING | TR02 | SIN | MS#01 | CON | HD |  |
| CP09-TR2-SN-3190 |  | Plain Concrete with HDPE | 3d | 2025-09-30 A | 2026-04-24 A | CP09-TR2-SN-3180 SS+1d, CP09-TR2-SN-3180 FF+1d | 100% | 2026-02-16 | 2026-02-18 |  |  | Cost [32054.7]; Mason [4 h]; Labor [48 h]; Plain Concrete [6.14 M3] | 32,055 | SING | TR02 | SIN | MS#01 | CON | HD |  |
| CP09-TR2-SN-3200 |  | Reinforced Concrete | 6d | 2025-09-30 A | 2026-04-24 A | CP09-TR2-SN-3190 SS+2d, CP09-TR2-SN-3190 FF+2d | 100% | 2026-02-18 | 2026-02-24 |  |  | Cost [117534]; Mason [92 h]; Steel Fixer [160 h]; Shutter [123 h]; Labor [48 h]; Reinforced Concrete [30.69 M3] | 117,534 | SING | TR02 | SIN | MS#01 | CON | HD |  |
| CP09-TR2-SN-3220 |  | Grouting | 6d | 2025-09-30 A | 2026-04-24 A | CP09-TR2-SN-3210 SS+1d, CP09-TR2-SN-3210 FF+1d | 100% | 2026-02-28 | 2026-03-05 |  |  | Cost [21369.8] | 21,370 | SING | TR02 | SIN | MS#01 | CON | HD |  |
| CP09-TR2-SN-3210 |  | Waterproofing | 2d | 2025-12-08 A | 2026-04-24 A | CP09-TR2-SN-3200 SS+3d, CP09-TR2-SN-3200 FF+3d | 100% | 2026-02-26 | 2026-02-28 |  |  | Cost [21369.8]; Mason [128.8 h]; Labor [48 h]; Waterproofing [184.12 M2] | 21,370 | SING | TR02 | SIN | MS#01 | CON | HD |  |
| CP09-TR2-SN-3230 |  | STREET DIRECTIONAL SIGN | 2d | 2026-03-02 A | 2026-04-24 A | CP09-PR-SN-DY-1000, CP09-TR2-SN-3220 FF+1d | 100% | 2026-03-10 | 2026-03-11 |  |  | Cost [55703]; Sign [5] | 55,703 | SING | TR02 | SIN | MS#01 | CON | HD |  |
| CP09-TR2-SN-3240 |  | DIRECTIONAL SIGN FOR VEHICULAR | 2d | 2026-03-02 A | 2026-04-24 A | CP09-TR2-SN-3220, CP09-PR-SN-DY-1010 | 100% | 2026-03-11 | 2026-03-12 |  |  | Cost [102164]; Sign [10.38] | 102,164 | SING | TR02 | SIN | MS#01 | CON | HD |  |
| CP09-TR2-SN-3270 |  | RULES SIGN | 2d | 2026-03-02 A | 2026-04-24 A | CP09-PR-SN-DY-1030, CP09-TR2-SN-3220 FF | 100% | 2026-03-09 | 2026-03-10 |  |  | Cost [227367]; Sign [3.88] | 227,367 | SING | TR02 | SIN | MS#01 | CON | HD |  |
| CP09-TR2-SN-3280 |  | IDENTIFICATION SIGN | 2d | 2026-03-02 A | 2026-04-24 A | CP09-PR-SN-DY-1040, CP09-TR2-SN-3220 FF | 100% | 2026-03-09 | 2026-03-10 |  |  | Cost [81022.5]; Sign [2.25] | 81,023 | SING | TR02 | SIN | MS#01 | CON | HD |  |
| CP09-TR2-SN-3250 |  | UNIT ID SIGN (FRONT YARD) | 2d | 2026-04-24 A | 2026-04-28 A | CP09-TR2-SN-3220, CP09-PR-SN-DY-1020 | 100% | 2026-04-26 | 2026-04-27 |  |  | Cost [49962.7]; Sign [60] | 49,963 | SING | TR02 | SIN | MS#01 | CON | HD |  |
| CP09-TR2-SN-3260 |  | UNIT ID SIGN (BACK YARD) | 4d | 2026-04-24 A | 2026-04-28 A | CP09-PR-SN-DY-1020, CP09-TR2-SN-3220 FF | 100% | 2026-04-26 | 2026-04-29 |  |  | Cost [124876]; Sign [41.25] | 124,876 | SING | TR02 | SIN | MS#01 | CON | HD |  |
|  | 7 | **Landscape Furntiure** |  | 2026-03-02 | 2026-06-09 |  |  |  |  |  |  |  |  |  |  |  |  |  |  |  |
| CP09-TR2-FN-3100 |  | Install & Fix Pitch Pine Benchs | 4d | 2026-03-02 A | 2026-04-28 A | CP09-TR2-HD-2920 FF, CP09-TR2-HD-2840 FF, CP09-TR2-HD-2830 FF, CP09-TR2-HD-2800 FF, CP09-TR2-HD-2670 FF, CP09-TR2-HD-2720 FF, CP09-EN-TR2-A-1930, CP09-PR-FN-DY-1030, CP09-TR2-HD-3040 FF, CP09-PR-HD-DY-1020 FF, CP09-PR-HD-A-1020 FF+7d, CP09-TR2-EW-1060 FF+3d, CP09-TR2-EW-1070 FF+3d, CP09-TR2-IR-1250 FF+3d, CP09-TR2-EL-1100 FF+3d | 100% | 2026-03-17 | 2026-03-21 |  |  | Cost [316796]; Pitch Pine Benchs [9.5] | 316,796 |  | TR02 | LA-F | MS#01 | CON | SO | FRNT |
| CP09-TR2-FN-3130 |  | Install & Fix Aluminum Trash Bin | 2.81d | 2026-03-02 A | 2026-04-28 A | CP09-TR2-HD-2920, CP09-TR2-HD-2840 FF, CP09-TR2-HD-2830 FF, CP09-TR2-HD-2800 FF, CP09-TR2-HD-2670 FF, CP09-TR2-HD-2720 FF, CP09-EN-TR2-A-1930, CP09-PR-FN-DY-1060, CP09-TR2-HD-3040 FF, CP09-PR-HD-DY-1020 FF, CP09-PR-HD-A-1020 FF+7d, CP09-TR2-EW-1060 FF+3d, CP09-TR2-EW-1070 FF+3d, CP09-TR2-IR-1250 FF+3d, CP09-TR2-EL-1100 FF+3d | 100% | 2026-03-18 | 2026-03-21 |  |  | Cost [896214]; Aluminum Trash Bin [14] | 896,214 |  | TR02 | LA-F | MS#01 | CON | SO | FRNT |
| CP09-TR2-FN-3150 |  | Lanscape Edging ( Rubber) | 2.81d | 2026-03-02 A | 2026-04-28 A | CP09-TR2-HD-2920, CP09-TR2-HD-2840 FF, CP09-TR2-HD-2830 FF, CP09-TR2-HD-2800 FF, CP09-TR2-HD-2670 FF, CP09-TR2-HD-2720 FF, CP09-EN-TR2-A-1930, CP09-PR-FN-DY-1080, CP09-TR2-HD-3040 FF, CP09-PR-HD-DY-1020 FF, CP09-PR-HD-A-1020 FF+7d, CP09-TR2-EW-1060 FF+3d, CP09-TR2-EW-1070 FF+3d, CP09-TR2-IR-1250 FF+3d, CP09-TR2-EL-1100 FF+3d | 100% | 2026-03-28 | 2026-03-30 |  |  | Cost [65739.9]; Lanscape Edging ( Rubber) [236.5] | 65,740 |  | TR02 | LA-F | MS#01 | CON | SO | FRNT |
| CP09-TR2-FN-3070 |  | Install & Fix Pitch Pine Picnic Table | 4d | 2026-04-24 A | 2026-04-28 A | CP09-TR2-HD-2920, CP09-TR2-HD-2840, CP09-TR2-HD-2830, CP09-TR2-HD-2800, CP09-TR2-HD-2670 FF, CP09-TR2-HD-2720 FF, CP09-EN-TR2-A-1930, CP09-PR-FN-DY-1000, CP09-TR2-HD-3040 FF, CP09-PR-HD-DY-1020 FF, CP09-PR-HD-A-1020 FF+7d, CP09-TR2-EW-1060 FF+3d, CP09-TR2-EW-1070 FF+3d, CP09-TR2-IR-1250 FF+3d, CP09-TR2-EL-1100 FF+3d | 100% | 2026-05-18 | 2026-05-21 |  |  | Cost [93998.3]; Pitch Pine Picnic Table [1] | 93,998 |  | TR02 | LA-F | MS#01 | CON | SO | FRNT |
| CP09-TR2-FN-3080 |  | Install & Fix Crcular Cast-iron tree grate | 3.75d | 2026-04-24 A | 2026-04-28 A | CP09-TR2-HD-2920, CP09-TR2-HD-2840 FF, CP09-TR2-HD-2830 FF, CP09-TR2-HD-2800 FF, CP09-TR2-HD-2670 FF, CP09-TR2-HD-2720 FF, CP09-EN-TR2-A-1930, CP09-PR-FN-DY-1010, CP09-TR2-HD-3040 FF, CP09-PR-HD-DY-1020 FF, CP09-PR-HD-A-1020 FF+7d, CP09-TR2-EW-1060 FF+3d, CP09-TR2-EW-1070 FF+3d, CP09-TR2-IR-1250 FF+3d, CP09-TR2-EL-1100 FF+3d | 100% | 2026-05-24 | 2026-05-27 |  |  | Cost [655486]; Crcular Cast-iron tree grate [23.38] | 655,486 |  | TR02 | LA-F | MS#01 | CON | SO | FRNT |
| CP09-TR2-FN-3110 |  | Install & Fix Polyester Hammocks | 4d | 2026-04-24 A | 2026-04-28 A | CP09-TR2-HD-2920, CP09-TR2-HD-2840 FF, CP09-TR2-HD-2830 FF, CP09-TR2-HD-2800 FF, CP09-TR2-HD-2670 FF, CP09-TR2-HD-2720 FF, CP09-EN-TR2-A-1930, CP09-PR-FN-DY-1040, CP09-TR2-HD-3040 FF, CP09-PR-HD-DY-1020 FF, CP09-PR-HD-A-1020 FF+7d, CP09-TR2-EW-1060 FF+3d, CP09-TR2-EW-1070 FF+3d, CP09-TR2-IR-1250 FF+3d, CP09-TR2-EL-1100 FF+3d | 100% | 2026-05-13 | 2026-05-17 |  |  | Cost [40144.4]; Polyester Hammocks [1] | 40,144 |  | TR02 | LA-F | MS#01 | CON | SO | FRNT |
| CP09-TR2-FN-3120 |  | Install & Fix Adult Play Swing | 4d | 2026-04-24 A | 2026-04-28 A | CP09-TR2-HD-2920, CP09-TR2-HD-2840 FF, CP09-TR2-HD-2830 FF, CP09-TR2-HD-2800 FF, CP09-TR2-HD-2670 FF, CP09-TR2-HD-2720 FF, CP09-EN-TR2-A-1930, CP09-PR-FN-DY-1050, CP09-TR2-HD-3040 FF, CP09-PR-HD-DY-1020 FF, CP09-PR-HD-A-1020 FF+7d, CP09-TR2-EW-1060 FF+3d, CP09-TR2-EW-1070 FF+3d, CP09-TR2-IR-1250 FF+3d, CP09-TR2-EL-1100 FF+3d | 100% | 2026-05-13 | 2026-05-17 |  |  | Cost [30435]; Adult Play Swing [1] | 30,435 |  | TR02 | LA-F | MS#01 | CON | SO | FRNT |
| CP09-TR2-FN-3140 |  | Install & Fix tensile Teflon Tent | 2.81d | 2026-06-07 | 2026-06-09 | CP09-TR2-HD-2920, CP09-TR2-HD-2840 FF, CP09-TR2-HD-2830 FF, CP09-TR2-HD-2800 FF, CP09-TR2-HD-2670 FF, CP09-TR2-HD-2720 FF, CP09-EN-TR2-A-1930, CP09-PR-FN-DY-1070, CP09-TR2-HD-3040 FF, CP09-PR-HD-DY-1020 FF, CP09-PR-HD-A-1020 FF+7d, CP09-TR2-EW-1060 FF+3d, CP09-TR2-EW-1070 FF+3d, CP09-TR2-IR-1250 FF+3d, CP09-TR2-EL-1100 FF+3d |  |  |  | -134.81d | 33.19d | Cost [555836]; tensile Teflon Tent [2.5] | 555,836 |  | TR02 | LA-F | MS#01 | CON | SO | FRNT |

| ID | WBS | Activity | Duration | Start | Finish | Predecessors | Complete | Remaining | Planned start | Planned finish | Total float | Free float | Resources | Cost | Actual cost | Softscape | CP09_Terrace-7 | CP09-Trade | CP09_Milestone-7 | CP09_Discipline-7 | DES | Swimming Pool |
| --- | --- | --- | --- | --- | --- | --- | --- | --- | --- | --- | --- | --- | --- | --- | --- | --- | --- | --- | --- | --- | --- | --- |
|  | 10 | **Play Field Equipment** |  | 2025-09-24 | 2026-06-11 |  |  |  |  |  |  |  |  |  |  |  |  |  |  |  |  |  |
| CP09-TR2-PE-3170 |  | Kids playground equipment | 5d | 2025-09-24 A | 2026-04-28 A | CP09-TR2-HD-2860, CP09-PR-PE-DY-1040, CP09-PR-PE-DY-1050, CP09-PR-PE-DY-1060, CP09-PR-PE-DY-1070, CP09-PR-PE-DY-1080, CP09-PR-PE-DY-1090, CP09-PR-PE-DY-1100 | 100% |  | 2026-02-08 | 2026-02-14 |  |  | Cost [1256494]; Kids equipment [5] | 1,256,493.83 | 251,298.8 | P.EQ | TR02 | PF-E | MS#01 | CON | SO |  |
| CP09-TR2-PE-3160 |  | Fitness areas equipment | 5d | 2026-06-07 | 2026-06-11 | CP09-TR2-HD-2860, CP09-EN-TR2-A-1970, CP09-PR-PE-DY-1000, CP09-PR-PE-DY-1010, CP09-PR-PE-DY-1020, CP09-PR-PE-DY-1030 |  |  |  |  | -137d | 31d | Cost [1442780]; Fitness equipment [6] | 1,442,780 |  | P.EQ | TR02 | PF-E | MS#01 | CON | SO |  |
|  | 5 | **Lighting for Softscape** |  | 2026-03-02 | 2026-07-18 |  |  |  |  |  |  |  |  |  |  |  |  |  |  |  |  |  |
|  | 1 | **Exterior Lighting** |  | 2026-03-02 | 2026-07-18 |  |  |  |  |  |  |  |  |  |  |  |  |  |  |  |  |  |
| CP09-TR2-SF-1420 |  | Install Bollard for Walkways | 4d | 2026-03-02 A | 2026-04-28 A | CP09-TR2-EL-1090, CP09-TR2-HD-2920, CP09-TR2-HD-2720, CP09-TR2-HD-2670, CP09-TR2-HD-2800, CP09-TR2-HD-2830, CP09-TR2-HD-2840, CP09-TR2-HD-2860, CP09-EN-TR2-A-2000, CP09-PR-EL-DY-1090, CP09-TR2-SF-1410, CP09-TR2-HD-3040, CP09-PR-HD-DY-1020, CP09-PR-HD-A-1020 FS+7d, CP09-TR2-EW-1060 FS+3d, CP09-TR2-EW-1070 FS+3d, CP09-TR2-IR-1250 FS+3d, CP09-TR2-EL-1100 FS+3d | 100% |  | 2026-03-25 | 2026-03-29 |  |  | Cost [1108355]; Bollard [258]; Electrican [25 h] | 1,108,355 |  | LHT | TR02 | LFS | MS#01 | CON | HD |  |
| CP09-TR2-SF-1410 |  | Install Landscape Lighting Pole | 10d | 2026-04-24 A | 2026-04-28 A | CP09-TR2-EL-1090, CP09-EN-TR2-A-2000, CP09-PR-EL-DY-1080 | 100% |  | 2026-04-26 | 2026-05-06 |  |  | Cost [97302.1]; Lighting Pole [3]; Electrican [25 h] | 97,302 |  | LHT | TR02 | LFS | MS#01 | CON | HD |  |
| CP09-TR2-SF-1430 |  | Install Diffused Wall Recessed Step | 6d | 2026-07-12 | 2026-07-18 | CP09-TR2-SF-1420 SS+3d, CP09-EN-TR2-A-2000, CP09-PR-EL-DY-1110 |  |  |  |  | -168d | 0d | Cost [194419]; Diffused Wall [47]; Electrican [25 h] | 194,419 |  | LHT | TR02 | LFS | MS#01 | CON | HD |  |
| CP09-TR2-SF-1440 |  | Install Inground Uplight For Palms | 6d | 2026-07-12 | 2026-07-18 | CP09-TR2-SF-1450 SS, CP09-TR2-SF-1420 SS, CP09-EN-TR2-A-2000, CP09-PR-EL-DY-1120 |  |  |  |  | -168d | 0d | Cost [393484]; Inground Uplight [85]; Electrican [25 h] | 393,484 |  | LHT | TR02 | LFS | MS#01 | CON | HD |  |
| CP09-TR2-SF-1450 |  | Install Projectors for Trees | 4d | 2026-07-12 | 2026-07-15 | CP09-TR2-SF-1340, CP09-TR2-SF-1350, CP09-TR2-SF-1360, CP09-TR2-SF-1370, CP09-TR2-SF-1380, CP09-TR2-SF-1390, CP09-TR2-SF-1400, CP09-EN-TR2-A-2000, CP09-PR-EL-DY-1130 |  |  |  |  | -168d | 0d | Cost [484837]; Projectors For Trees [118]; Electrican [25 h] | 484,837 |  | LHT | TR02 | LFS | MS#01 | CON | HD |  |
|  | 2 | **Outlet Lighting Fixtures** |  | 2026-04-24 | 2026-04-28 |  |  |  |  |  |  |  |  |  |  |  |  |  |  |  |  |  |
| CP09-TR2-SF-1470 |  | Install outlet lighting fixtures | 5d | 2026-04-24 A | 2026-04-28 A | CP09-TR2-SF-1420, CP09-EN-TR2-A-2000, CP09-PR-EL-DY-1150 | 100% |  | 2026-05-31 | 2026-06-04 |  |  | Cost [357578]; Outlet Lighting Fixtiure [519]; Electrican [25 h] | 357,578 |  | LHT | TR02 | LFS | MS#01 | CON | HD |  |
|  | 2 | **Softscape** |  | 2025-12-22 | 2026-06-17 |  |  |  |  |  |  |  |  |  |  |  |  |  |  |  |  |  |
|  | 1 | **Planting** |  | 2025-12-22 | 2026-06-17 |  |  |  |  |  |  |  |  |  |  |  |  |  |  |  |  |  |
| CP09-TR2-SF-1320 |  | Sweet sand for all plants | 7d | 2025-12-22 A | 2026-04-10 A | CP09-TR2-EW-1080, CP09-TR2-HD-3040, CP09-TR2-HD-2920, CP09-EN-TR2-A-1990, CP09-PR-PN-DY-1000 | 100% |  | 2025-12-14 | 2025-12-22 |  |  | Cost [1296918]; Sweet sand [3702.2] | 1,296,917.68 | 972,688.5 | PLNT | TR02 | SS | MS#01 | CON | SO |  |
| CP09-TR2-SF-1330 |  | Organic Manure | 7d | 2025-12-22 A | 2026-04-10 A | CP09-TR2-SF-1320 SS+5d, CP09-EN-TR2-A-1990, CP09-PR-PN-DY-1010 | 100% |  | 2025-12-20 | 2025-12-28 |  |  | Cost [841200]; Organic Manure [843.3] | 841,200.18 | 630,900 | PLNT | TR02 | SS | MS#01 | CON | SO |  |
| CP09-TR2-SF-1340 |  | Large Trees | 7d | 2026-03-09 A | 2026-06-14 | CP09-PR-PN-DY-1020, CP09-TR2-IR-1270, CP09-TR2-IR-1280, CP09-TR2-IR-1290, CP09-TR2-IR-1300, CP09-TR2-IR-1310, CP09-TR2-IR-1260, CP09-TR2-IR-1320 | 60% | 7d | 2026-03-30 | 2026-04-07 | -148d | 0d | Cost [1933001]; Large Trees [706] | 1,933,001 |  | PLNT | TR02 | SS | MS#01 | CON | SO |  |
| CP09-TR2-SF-1350 |  | Shrubs | 6d | 2026-04-06 A | 2026-06-17 | CP09-TR2-SF-1330, CP09-TR2-SF-1320, CP09-TR2-SF-1340 SS+3d, CP09-TR2-SF-1340 FF+3d, CP09-PR-PN-DY-1060 | 20% | 6d | 2026-04-08 | 2026-04-14 | -148d | 20d | Cost [758721]; Shrubs [5056] | 758,721 |  | PLNT | TR02 | SS | MS#01 | CON | SO |  |
| CP09-TR2-SF-1360 |  | Ground Covers | 6d | 2026-04-06 A | 2026-06-17 | CP09-TR2-SF-1330, CP09-TR2-SF-1320, CP09-TR2-SF-1340 SS+3d, CP09-TR2-SF-1340 FF+3d, CP09-PR-PN-DY-1070 | 20% | 6d | 2026-04-08 | 2026-04-14 | -148d | 20d | Cost [840914]; Ground Covers [41638] | 840,914 |  | PLNT | TR02 | SS | MS#01 | CON | SO |  |
| CP09-TR2-SF-1370 |  | Succulents | 6d | 2026-04-24 A | 2026-06-17 | CP09-TR2-SF-1330, CP09-TR2-SF-1320, CP09-TR2-SF-1340 SS+3d, CP09-TR2-SF-1340 FF+3d, CP09-PR-PN-DY-1080 | 20% | 6d | 2026-04-30 | 2026-05-06 | -148d | 20d | Cost [363438]; Succulents [1300] | 363,438 |  | PLNT | TR02 | SS | MS#01 | CON | SO |  |
| CP09-TR2-SF-1380 |  | Vines & Climbers | 6d | 2026-04-24 A | 2026-06-17 | CP09-TR2-SF-1330, CP09-TR2-SF-1320, CP09-TR2-SF-1340 SS+3d, CP09-TR2-SF-1340 FF+3d, CP09-PR-PN-DY-1030 | 20% | 6d | 2026-04-30 | 2026-05-06 | -148d | 20d | Cost [26566.1]; Vines & Climbers [241] | 26,566 |  | PLNT | TR02 | SS | MS#01 | CON | SO |  |
| CP09-TR2-SF-1390 |  | Ornamental grass | 6d | 2026-04-24 A | 2026-06-17 | CP09-TR2-SF-1330, CP09-TR2-SF-1320, CP09-TR2-SF-1340 SS+3d, CP09-TR2-SF-1340 FF+3d, CP09-PR-PN-DY-1050 | 20% | 6d | 2026-05-26 | 2026-06-01 | -148d | 20d | Cost [502971]; Ornamental grass [13594] | 502,971 |  | PLNT | TR02 | SS | MS#01 | CON | SO |  |
| CP09-TR2-SF-1400 |  | Lawn | 6d | 2026-04-24 A | 2026-06-17 | CP09-TR2-SF-1330, CP09-TR2-SF-1320, CP09-TR2-SF-1340 SS+3d, CP09-TR2-SF-1340 FF+3d, CP09-PR-PN-DY-1040 | 20% | 6d | 2026-04-30 | 2026-05-06 | -148d | 20d | Cost [83925.4]; Lawn [1476] | 83,925 |  | PLNT | TR02 | SS | MS#01 | CON | SO |  |
|  | 2 | **Terrace # 03** |  | 2024-02-10 | 2026-08-06 |  |  |  |  |  |  |  |  |  |  |  |  |  |  |  |  |  |
|  | 8 | **Swimming Pool-SP01 & Mechnical Room-MR-01** |  | 2024-02-10 | 2026-07-20 |  |  |  |  |  |  |  |  |  |  |  |  |  |  |  |  |  |
|  | 1 | **Structure Works for Swimming Pool** |  | 2024-02-10 | 2026-03-06 |  |  |  |  |  |  |  |  |  |  |  |  |  |  |  |  |  |
| CP09-TR3-SW-1000 |  | Excvation up to Formation Level | 1d | 2024-02-10 A | 2024-05-14 A | CP09-MS-1010, CP09-CLD-1000 | 100% |  | 2024-02-10 | 2024-02-10 |  |  | Cost [138716]; EXCAVATOR [856 h]; LOADER [1024 h]; TRUCK [1024 h]; Labor [128 h]; Excavation [1070 M3] | 138,715.79 | 138,716 |  | TR03 | SP&MR | MS#02 | CON | HD | SP01 |
| CP09-TR3-SW-1010 |  | Plain Concret for For Raft | 2.81d | 2024-08-04 A | 2024-08-31 A | CP09-TR3-SW-1000, CP09-EN-TR3-A-1000, CP09-PR-CV-DY-1000 SS | 100% |  | 2024-09-04 | 2024-09-07 |  |  | Cost [231193]; Mason [128 h]; Labor [48 h]; Plain Concrete [760 M3] | 231,192.98 | 231,193 |  | TR03 | SP&MR | MS#02 | CON | HD | SP01 |
| CP09-TR3-SW-1020 |  | Water Proofing with screed | 1.88d | 2024-08-31 A | 2024-09-02 A | CP09-TR3-SW-1010, CP09-EN-TR3-A-1020, CP09-PR-CV-DY-1010 SS | 100% |  |  |  |  |  | Cost [92477.2]; Mason [77 h]; Labor [48 h]; Waterproofing [760 M2] | 92,477.19 | 92,477 |  | TR03 | SP&MR | MS#02 | CON | HD | SP01 |
| CP09-TR3-SW-1030 |  | Reinforcement concrete for Raft | 4.69d | 2024-09-13 A | 2024-12-11 A | CP09-TR3-SW-1020, CP09-EN-TR3-A-1000, CP09-EN-TR3-A-1010, CP09-PR-CV-DY-1130 | 100% |  | 2024-10-03 | 2024-10-09 |  |  | Cost [1155965]; Mason [48 h]; Steel Fixer [616 h]; Shutter [48 h]; Labor [48 h]; Reinforced Concrete [185 M3] | 1,155,964.89 | 1,155,965 |  | TR03 | SP&MR | MS#02 | CON | HD | SP01 |
| CP09-TR3-SW-1040 |  | Water Proofing for Raft with screed | 3.75d | 2024-12-12 A | 2024-12-15 A | CP09-TR3-SW-1030, CP09-EN-TR3-A-1020, CP09-PR-CV-DY-1010 SS | 100% |  | 2024-12-26 | 2024-12-31 |  |  | Cost [231193]; Mason [556.64 h]; Labor [48 h]; Waterproofing [795 M2] | 231,192.98 | 231,193 |  | TR03 | SP&MR | MS#02 | CON | HD | SP01 |
| CP09-TR3-SW-1050 |  | Reinforcement Concrete for Walls | 6.56d | 2024-12-16 A | 2025-03-15 A | CP09-TR3-SW-1040 | 100% |  | 2025-01-02 | 2025-01-11 |  |  | Cost [462386]; Mason [96 h]; Steel Fixer [280 h]; Shutter [128 h]; Labor [48 h]; Reinforced Concrete [32 M3] | 462,385.96 | 462,386 |  | TR03 | SP&MR | MS#02 | CON | HD | SP01 |
| CP09-TR3-SW-1060 |  | External Waterproofing for Walls | 5d | 2025-09-30 A | 2026-01-16 A | CP09-TR3-SW-1050 | 100% |  | 2025-04-10 | 2025-04-15 |  |  | Cost [231193]; Mason [511 h]; Labor [48 h]; Waterproofing [730 M2] | 231,192.98 | 231,193 |  | TR03 | SP&MR | MS#02 | CON | HD | SP01 |
| CP09-TR3-SW-1070 |  | Protection Block Works | 5d | 2026-03-02 A | 2026-03-06 A | CP09-TR3-SW-1060, CP09-PR-CV-DY-1020 SS | 100% |  | 2026-02-28 | 2026-03-04 |  |  | Cost [92477.2]; Mason [304 h]; Labor [48 h]; Waterproofing; Blocks [80] | 92,477 |  |  | TR03 | SP&MR | MS#02 | CON | HD | SP01 |
| CP09-TR3-SW-1080 |  | Backfilling | 5.62d | 2026-03-02 A | 2026-03-06 A | CP09-TR3-SW-1070, CP09-TR3-SW-1230 FF | 100% |  | 2026-03-05 | 2026-03-11 |  |  | Cost [92477.2]; Labor [192 h]; Backfilling [1953 M3] | 92,477 |  |  | TR03 | SP&MR | MS#02 | CON | HD | SP01 |

| ID | WBS | Activity | Duration | Start | Finish | Predecessors | Complete | Remaining | Planned start | Planned finish | Total float | Free float | Resources | Cost | Actual cost | Swimming Pool | CP09_Terrace-7 | CP09-Trade | CP09_Milestone-7 | CP09_Discipline-7 | DES |
| --- | --- | --- | --- | --- | --- | --- | --- | --- | --- | --- | --- | --- | --- | --- | --- | --- | --- | --- | --- | --- | --- |
|  | 3 | **Finishing Works for Swimming Pool** |  | 2026-04-13 | 2026-07-02 |  |  |  |  |  |  |  |  |  |  |  |  |  |  |  |  |
| CP09-TR3-SW-1100 |  | Granite for Pool Edg | 3.75d | 2026-04-13 A | 2026-04-28 A | CP09-TR3-SW-1090, CP09-EN-TR3-A-1050, CP09-PR-CV-DY-1040 | 100% |  | 2026-05-12 | 2026-05-16 |  |  | Cost [369909]; Mason [48 h]; Labor [48 h] | 369,909 |  | SP01 | TR03 | SP&MR | MS#02 | CON | HD |
| CP09-TR3-SW-1110 |  | Garnite for Drinage Grate | 3.75d | 2026-04-13 A | 2026-04-28 A | CP09-TR3-SW-1100 SS, CP09-EN-TR3-A-1050 | 100% |  | 2026-05-12 | 2026-05-16 |  |  | Cost [184954]; Mason [48 h]; Labor [48 h] | 184,954 |  | SP01 | TR03 | SP&MR | MS#02 | CON | HD |
| CP09-TR3-SW-1120 |  | Granite for Pool Coping | 3.75d | 2026-04-13 A | 2026-04-28 A | CP09-TR3-SW-1100, CP09-EN-TR3-A-1050 | 100% |  | 2026-05-17 | 2026-05-20 |  |  | Cost [231193]; Mason [160 h]; Labor [48 h]; Granit-Coping [90] | 231,193 |  | SP01 | TR03 | SP&MR | MS#02 | CON | HD |
| CP09-TR3-SW-1090 |  | Mosaics Tiles | 11.25d | 2026-05-11 A | 2026-06-20 | CP09-TR3-SW-1070, CP09-TR3-SW-1080, CP09-EN-TR3-A-1040, CP09-PR-CV-DY-1030 | 90% | 11.25d | 2026-05-18 | 2026-05-31 | -150.06d | 3.75d | Cost [924772]; Mason [616 h]; Labor [48 h]; Mosaic [795] | 924,772 |  | SP01 | TR03 | SP&MR | MS#02 | CON | HD |
| CP09-TR3-SW-1130 |  | Stanless Steel Ladders | 2.81d | 2026-06-24 | 2026-06-27 | CP09-TR3-SW-1090, CP09-TR3-SW-1100, CP09-TR3-SW-1110, CP09-TR3-SW-1120, CP09-EN-TR3-A-1070, CP09-EN-TR3-A-1060, CP09-PR-CV-DY-1050 |  |  |  |  | -153.81d | 0d | Cost [92477.2]; Labor [4 h]; Stanless Steel Ladders [2] | 92,477 |  | SP01 | TR03 | SP&MR | MS#02 | CON | HD |
| CP09-TR3-SW-1140 |  | Stanless Steel Handrial | 5d | 2026-06-27 | 2026-07-02 | CP09-TR3-SW-1130, CP09-EN-TR3-A-1070, CP09-PR-CV-DY-1060 |  |  |  |  | -153.81d | 14.25d | Cost [92477.2]; Labor [2 h]; Stanless Steel Handrial [1] | 92,477 |  | SP01 | TR03 | SP&MR | MS#02 | CON | HD |
|  | 4 | **Machine Room_MR01** |  | 2024-02-10 | 2026-06-28 |  |  |  |  |  |  |  |  |  |  |  |  |  |  |  |  |
| CP09-TR3-SW-1150 |  | Excvation up to Formation Level | 3.75d | 2024-02-10 A | 2024-05-18 A | CP09-TR3-SW-1000 SS | 100% |  | 2024-02-10 | 2024-02-13 |  |  | Cost [60173.5]; EXCAVATOR [400 h]; LOADER [480 h]; TRUCK [480 h]; Labor [250 h]; Excavation [500 M3] | 60,173.53 | 60,174 | SP01 | TR03 | SP&MR | MS#02 | CON | HD |
| CP09-TR3-SW-1160 |  | Plain Concret for For Raft | 2.81d | 2024-09-04 A | 2024-10-22 A | CP09-TR3-SW-1150, CP09-EN-TR3-A-1000 | 100% |  | 2024-08-31 | 2024-09-02 |  |  | Cost [30086.8]; Mason [77 h]; Labor [48 h]; Plain Concrete [110 M3] | 30,086.77 | 30,087 | SP01 | TR03 | SP&MR | MS#02 | CON | HD |
| CP09-TR3-SW-1170 |  | Water Proofing with screed | 1.88d | 2024-10-23 A | 2024-12-30 A | CP09-TR3-SW-1160, CP09-EN-TR3-A-1020, CP09-PR-CV-DY-1010 | 100% |  | 2024-10-20 | 2024-10-22 |  |  | Cost [30086.8]; Mason [77 h]; Labor [48 h]; Waterproofing [110 M2] | 30,086.77 | 30,087 | SP01 | TR03 | SP&MR | MS#02 | CON | HD |
| CP09-TR3-SW-1180 |  | Reinforcement concrete for Raft | 3d | 2025-01-02 A | 2025-03-13 A | CP09-TR3-SW-1170, CP09-EN-TR3-A-1000, CP09-EN-TR3-A-1010 | 100% |  | 2025-01-16 | 2025-01-19 |  |  | Cost [180521]; Mason [48 h]; Steel Fixer [95 h]; Shutter [48 h]; Labor [48 h]; Reinforced Concrete [27 M3] | 180,520.59 | 180,521 | SP01 | TR03 | SP&MR | MS#02 | CON | HD |
| CP09-TR3-SW-1190 |  | Water Proofing for Raft with screed | 3.75d | 2025-03-15 A | 2025-04-02 A | CP09-TR3-SW-1180 | 100% |  | 2025-04-05 | 2025-04-09 |  |  | Cost [75216.9]; Mason [161 h]; Labor [48 h]; Waterproofing [230 M2] | 75,216.91 | 75,217 | SP01 | TR03 | SP&MR | MS#02 | CON | HD |
| CP09-TR3-SW-1200 |  | Reinforcement Concrete for Walls & Columns | 9.38d | 2025-05-10 A | 2025-06-20 A | CP09-TR3-SW-1190 | 100% |  | 2025-04-30 | 2025-05-11 |  |  | Cost [330954]; Mason [105 h]; Steel Fixer [616 h]; Shutter [140 h]; Labor [48 h]; Reinforced Concrete [35 M3] | 330,954.42 | 330,954 | SP01 | TR03 | SP&MR | MS#02 | CON | HD |
| CP09-TR3-SW-1210 |  | Reinforcement Concrete for Slab | 11.25d | 2025-09-30 A | 2025-10-04 A | CP09-TR3-SW-1200 | 100% |  | 2025-07-06 | 2025-07-19 |  |  | Cost [150434]; Mason [60 h]; Steel Fixer [616 h]; Shutter [80 h]; Labor [48 h]; Reinforced Concrete [20 M3] | 150,433.83 | 150,434 | SP01 | TR03 | SP&MR | MS#02 | CON | HD |
| CP09-TR3-SW-1250 |  | Plaster for Internal Walls | 6d | 2025-11-17 A | 2025-11-21 A | CP09-TR3-SW-1220, CP09-EN-TR3-A-1370, CP09-PR-CV-DY-1070 | 100% |  | 2025-11-29 | 2025-12-04 |  |  | Cost [45130.2]; Mason [630 h]; Labor [48 h]; Plaster [180] | 45,130.15 | 45,130 | SP01 | TR03 | SP&MR | MS#02 | CON | HD |
| CP09-TR3-SW-1260 |  | Emulsion Paint for Internal Wall | 6d | 2025-11-24 A | 2025-11-28 A | CP09-TR3-SW-1250, CP09-TR3-SW-1310, CP09-PR-CV-DY-1080 | 100% |  | 2025-12-17 | 2025-12-24 |  |  | Cost [30086.8]; Paint [180]; Labor [48 h]; Painter [432 h]; Epoxy for flooring | 30,086.77 | 30,087 | SP01 | TR03 | SP&MR | MS#02 | CON | HD |
| CP09-TR3-SW-1220 |  | External Waterproofing with Protection | 5d | 2025-12-01 A | 2026-01-29 A | CP09-TR3-SW-1210 | 100% |  | 2025-12-07 | 2025-12-11 |  |  | Cost [270781]; Mason [119 h]; Labor [48 h]; Waterproofing [170 M2] | 270,780.89 | 243,702.9 | SP01 | TR03 | SP&MR | MS#02 | CON | HD |
| CP09-TR3-SW-1270 |  | Epoxy for flooring | 3d | 2026-02-09 A | 2026-06-09 | CP09-TR3-SW-1260, CP09-TR3-SW-1280, CP09-TR3-SW-1240, CP09-TR3-SW-1320, CP09-TR3-SW-1360, CP09-TR3-SW-1350, CP09-PR-CV-DY-1110 | 80% | 3d | 2026-03-23 | 2026-03-26 | -134d | 34.06d | Cost [75216.9]; Mason [48 h]; Labor [48 h]; Epoxy for flooring [3.82] | 75,217 |  | SP01 | TR03 | SP&MR | MS#02 | CON | HD |
| CP09-TR3-SW-1230 |  | Backfilling | 5d | 2026-02-22 A | 2026-03-06 A | CP09-TR3-SW-1220 | 100% |  | 2026-02-08 | 2026-02-12 |  |  | Cost [45130.2]; Labor [108 h]; Backfilling [180 M3] | 45,130 |  | SP01 | TR03 | SP&MR | MS#02 | CON | HD |
| CP09-TR3-SW-1280 |  | Metal Works | 5d | 2026-06-07 | 2026-06-11 | CP09-TR3-SW-1260 |  |  |  |  | -113d | 136.06d | Cost [120347]; Metals for MR | 120,347 |  | SP01 | TR03 | SP&MR | MS#02 | CON | HD |
| CP09-TR3-SW-1240 |  | Drainage Gravel including Geotextile & Geocomposit | 3.75d | 2026-06-24 | 2026-06-28 | CP09-TR3-SW-1260, CP09-PR-CV-DY-1090, CP09-PR-CV-DY-1100 |  |  |  |  | -126.75d | 122.31d | Cost [60173.5]; Drainage Gravel | 60,174 |  | SP01 | TR03 | SP&MR | MS#02 | CON | HD |
|  | 2 | **MEP Works for Swimmimg Pool & Machine Room** |  | 2026-02-22 | 2026-07-20 |  |  |  |  |  |  |  |  |  |  |  |  |  |  |  |  |
|  | 1 | **Mechnical Works** |  | 2026-02-22 | 2026-05-15 |  |  |  |  |  |  |  |  |  |  |  |  |  |  |  |  |
| CP09-TR3-SW-1300 |  | UPVC pipes, fitting, valves, | 5d | 2026-02-22 A | 2026-05-15 A | CP09-TR3-SW-1250, CP09-EN-TR3-A-1080, CP09-PR-ME-DY-1000, CP09-PR-ME-DY-1010 | 100% |  | 2025-08-11 | 2025-08-16 |  |  | Cost [710030]; Labor [48 h] | 710,029.67 | 710,029.67 | SP01 | TR03 | SP&MR | MS#02 | CON | HD |
| CP09-TR3-SW-1320 |  | Mechnical Equipment (Valves, Pumps, Filtters, Controllers ,Dosinng,& Ventilation exahust fan) | 15d | 2026-05-11 A | 2026-05-15 A | CP09-TR3-SW-1260, CP09-TR3-SW-1300, CP09-EN-TR3-A-1080, CP09-PR-ME-DY-1020, CP09-PR-ME-DY-1030, CP09-PR-ME-DY-1040, CP09-PR-ME-DY-1050, CP09-PR-ME-DY-1060, CP09-PR-ME-DY-1070, CP09-PR-ME-DY-1080 | 100% |  | 2026-05-06 | 2026-05-23 |  |  | Cost [2371025]; Labor [48 h] | 2,371,025 |  | SP01 | TR03 | SP&MR | MS#02 | CON | HD |

| ID | WBS | Activity | Duration | Start | Finish | Predecessors | Complete | Remaining | Planned start | Planned finish | Total float | Free float | Resources | Cost | Actual cost | Swimming Pool | CP09_Terrace-7 | CP09-Trade | CP09_Milestone-7 | CP09_Discipline-7 | DES | Walls |
| --- | --- | --- | --- | --- | --- | --- | --- | --- | --- | --- | --- | --- | --- | --- | --- | --- | --- | --- | --- | --- | --- | --- |
|  | 2 | **Electrical Works-SW** |  | 2026-06-24 | 2026-07-20 |  |  |  |  |  |  |  |  |  |  |  |  |  |  |  |  |  |
| CP09-TR3-SW-1310 |  | Conduits, Cable tray | 6d | 2026-06-24 | 2026-07-01 | CP09-TR3-SW-1250, CP09-EN-TR3-A-1090, CP09-PR-EL-DY-1000, CP09-PR-EL-DY-1010 |  |  |  |  | -168.06d | 0d | Cost [174464]; Labor [48 h] | 174,464 |  | SP01 | TR03 | SP&MR | MS#02 | CON | HD |  |
| CP09-TR3-SW-1330 |  | Panel boards | 4d | 2026-07-01 | 2026-07-06 | CP09-TR3-SW-1310, CP09-TR3-SW-1260, CP09-EN-TR3-A-1090, CP09-PR-EL-DY-1020 |  |  |  |  | -168.06d | 0d | Cost [624381]; Labor [48 h] | 624,381 |  | SP01 | TR03 | SP&MR | MS#02 | CON | HD |  |
| CP09-TR3-SW-1340 |  | Power Cables & Wires | 5d | 2026-07-06 | 2026-07-12 | CP09-TR3-SW-1330, CP09-TR3-SW-1310, CP09-EN-TR3-A-1090, CP09-PR-EL-DY-1030 |  |  |  |  | -168.06d | 0d | Cost [8133]; Labor [48 h] | 8,133 |  | SP01 | TR03 | SP&MR | MS#02 | CON | HD |  |
| CP09-TR3-SW-1350 |  | Earthing System | 5d | 2026-07-06 | 2026-07-12 | CP09-TR3-SW-1340 SS, CP09-PR-EL-DY-1040 |  |  |  |  | -138.06d | 111d | Cost [52517.6]; Labor [48 h] | 52,518 |  | SP01 | TR03 | SP&MR | MS#02 | CON | HD |  |
| CP09-TR3-SW-1360 |  | (Lighting Outlets , Switches, Fixture ) | 7d | 2026-07-12 | 2026-07-20 | CP09-TR3-SW-1310, CP09-TR3-SW-1340, CP09-TR3-SW-1330, CP09-PR-EL-DY-1050, CP09-PR-EL-DY-1140 |  |  |  |  | -168.06d | 0d | Cost [651051]; Labor [48 h] | 651,051 |  | SP01 | TR03 | SP&MR | MS#02 | CON | HD |  |
|  | 6 | **Earth Work** |  | 2025-09-30 | 2026-02-13 |  |  |  |  |  |  |  |  |  |  |  |  |  |  |  |  |  |
|  | 1 | **Grading works** |  | 2025-09-30 | 2026-02-06 |  |  |  |  |  |  |  |  |  |  |  |  |  |  |  |  |  |
| CP09-TR3-EW-1000 |  | Excavation work to Reduce Level | 6d | 2025-09-30 A | 2026-02-06 A | CP09-TR3-SW-1150 SS+4d, CP09-EN-TR3-A-1100, CP09-CLD-1000 | 100% |  | 2025-02-18 | 2025-02-24 |  |  | Cost; EXCAVATOR; LOADER; TRUCK; Labor [48 h]; Excavation |  |  |  | TR03 | E-W | MS#02 | CON | HD |  |
| CP09-TR3-EW-1010 |  | Filling works to make up levels with Compacting | 6d | 2025-09-30 A | 2026-02-06 A | CP09-TR3-SW-1150, CP09-TR3-EW-1000 SS+4.69d, CP09-EN-TR3-A-1100 | 100% |  | 2025-02-23 | 2025-03-03 |  |  | Cost; Labor [48 h]; Filling |  |  |  | TR03 | E-W | MS#02 | CON | HD |  |
|  | 2 | **Planting** |  | 2025-09-30 | 2026-02-13 |  |  |  |  |  |  |  |  |  |  |  |  |  |  |  |  |  |
| CP09-TR3-EW-1020 |  | Excavation works for Planting Beds | 6d | 2025-09-30 A | 2026-02-13 A | CP09-TR3-EW-1000 SS, CP09-TR3-EW-1010 SS, CP09-EN-TR3-A-1100 | 100% |  | 2025-02-23 | 2025-03-03 |  |  | Cost [915350]; EXCAVATOR [4544 h]; LOADER [5456 h]; TRUCK [5456 h]; Labor [280 h]; Excavation [5681.88 M3] | 915,350.06 | 366,140 |  | TR03 | E-W | MS#02 | CON | HD |  |
|  | 9 | **Retaining & Cheek Walls** |  | 2024-12-16 | 2026-07-07 |  |  |  |  |  |  |  |  |  |  |  |  |  |  |  |  |  |
|  | 1 | **Soild Block Work Cheek Walls** |  | 2024-12-16 | 2026-07-07 |  |  |  |  |  |  |  |  |  |  |  |  |  |  |  |  |  |
| CP09-TR3-RW-1010 |  | Excavation | 3.75d | 2024-12-16 A | 2024-12-21 A | CP09-TR2-RW-1470, CP09-TR3-EW-1000, CP09-TR3-EW-1010 | 100% |  | 2025-01-13 | 2025-01-18 |  |  | Cost [19413.7]; EXCAVATOR [48 h]; LOADER [56 h]; TRUCK [56 h]; Labor [31 h]; Excavation [60.55 M3] | 19,413.74 | 19,414 |  | TR03 | RE&CW | MS#02 | CON | HD | CHW |
| CP09-TR3-RW-1030 |  | Plaing Concrete with HPDE | 4.69d | 2025-01-19 A | 2025-04-02 A | CP09-TR3-RW-1010 SS+2.81d, CP09-TR3-RW-1010 FF+2.81d, CP09-EN-TR3-A-1110 | 100% |  | 2025-02-17 | 2025-02-23 |  |  | Cost [25885]; Mason [27 h]; Labor [48 h]; Plain Concrete [38.81 M3]; HDPE | 25,884.99 | 25,885 |  | TR03 | RE&CW | MS#02 | CON | HD | CHW |
| CP09-TR3-RW-1050 |  | Reinforced Concrete for Footing | 6.56d | 2025-02-03 A | 2025-04-05 A | CP09-TR3-RW-1030 SS+2.81d, CP09-TR3-RW-1030 FF+2.81d, CP09-EN-TR3-A-1120, CP09-EN-TR3-A-1110 | 100% |  | 2025-03-03 | 2025-03-12 |  |  | Cost [194137]; Mason [48 h]; Steel Fixer [45 h]; Shutter [48 h]; Labor [48 h]; Reinforced Concrete [12.94 M3] | 194,137.42 | 194,137 |  | TR03 | RE&CW | MS#02 | CON | HD | CHW |
| CP09-TR3-RW-1080 |  | Reinforced Concrete for Tie beam | 4.69d | 2025-03-17 A | 2025-04-05 A | CP09-TR3-RW-1050 SS+2.81d, CP09-TR3-RW-1050 FF+2.81d | 100% |  | 2025-04-20 | 2025-04-27 |  |  | Cost [32356.2]; Mason [48 h]; Steel Fixer [48 h]; Shutter [48 h]; Labor [48 h]; Reinforced Concrete | 32,356.24 | 32,356 |  | TR03 | RE&CW | MS#02 | CON | HD | CHW |
| CP09-TR3-RW-1100 |  | Reinforced Concrete for Column | 5.62d | 2025-03-20 A | 2026-06-08 | CP09-TR3-RW-1080 SS+2.81d, CP09-TR3-RW-1080 FF+2.81d | 100% | 1.8d | 2025-04-24 | 2025-04-30 | -109.8d | 139.26d | Cost [32356.2]; Mason [48 h]; Steel Fixer [48 h]; Shutter [48 h]; Labor [48 h]; Reinforced Concrete | 32,356.24 | 32,356 |  | TR03 | RE&CW | MS#02 | CON | HD | CHW |
| CP09-TR3-RW-1120 |  | Soild Block Work | 5.62d | 2025-12-08 A | 2025-12-12 A | CP09-TR3-RW-1100 SS+5.62d, CP09-TR3-RW-1100 FF+5.62d, CP09-EN-TR3-A-1140, CP09-PR-CV-DY-1020 | 100% |  | 2025-12-15 | 2025-12-22 |  |  | Cost [64712.5]; Mason [38 h]; Labor [48 h]; Blocks [10.35] | 64,712.47 | 64,712 |  | TR03 | RE&CW | MS#02 | CON | HD | CHW |
| CP09-TR3-RW-1140 |  | Reinforced Concrete for Beam | 7.5d | 2025-12-08 A | 2025-12-12 A | CP09-TR3-RW-1120 SS+3.75d, CP09-TR3-RW-1120 FF+3.75d | 100% |  | 2025-12-20 | 2025-12-29 |  |  | Cost [64712.5]; Mason [12 h]; Steel Fixer [207 h]; Shutter [17 h]; Labor [48 h]; Reinforced Concrete [4.14 M3] | 64,712.47 | 64,712 |  | TR03 | RE&CW | MS#02 | CON | HD | CHW |
| CP09-TR3-RW-1160 |  | Waterproofing & Protection | 6.56d | 2025-12-22 A | 2025-12-26 A | CP09-TR3-RW-1140 SS+7.5d, CP09-TR3-RW-1140 FF+7.5d, CP09-EN-TR3-A-1130 | 100% |  | 2025-12-28 | 2026-01-04 |  |  | Cost [25885]; Mason [10.08 h]; Labor [48 h]; Waterproofing [14.49 M2] | 25,884.99 | 25,885 |  | TR03 | RE&CW | MS#02 | CON | HD | CHW |
| CP09-TR3-RW-1180 |  | Backfilling | 5.62d | 2025-12-22 A | 2025-12-26 A | CP09-TR3-RW-1160 SS+2.81d, CP09-TR3-RW-1160 FF+2.81d | 100% |  | 2025-12-31 | 2026-01-07 |  |  | Cost [25885]; Labor [96 h]; Backfilling [41.14 M3] | 25,884.99 | 25,885 |  | TR03 | RE&CW | MS#02 | CON | HD | CHW |
| CP09-TR3-RW-1200 |  | Marble Cladding | 10d | 2026-06-21 | 2026-07-01 | CP09-TR3-RW-1180 SS+5.62d, CP09-TR3-RW-1180 FF+5.62d, CP09-EN-TR3-A-1150, CP09-PR-CV-DY-1120 |  |  |  |  | -183.94d | 0d | Cost [129425]; Mason [88 h]; Labor [48 h]; Marble [31.05] | 129,425 |  |  | TR03 | RE&CW | MS#02 | CON | HD | CHW |
| CP09-TR3-RW-1220 |  | Marble Copping | 10d | 2026-06-25 | 2026-07-07 | CP09-TR3-RW-1200 SS+4.69d, CP09-TR3-RW-1200 FF+4.69d, CP09-EN-TR3-A-1150, CP09-PR-CV-DY-1120 |  |  |  |  | -183.94d | 0d | Cost [32356.2]; Mason [160 h]; Labor [48 h]; Marble Coping [25.88] | 32,356 |  |  | TR03 | RE&CW | MS#02 | CON | HD | CHW |

| ID | WBS | Activity | Duration | Start | Finish | Predecessors | Complete | Remaining | Planned start | Planned finish | Total float | Free float | Resources | Cost | Actual cost | Walls | CP09_Terrace-7 | CP09-Trade | CP09_Milestone-7 | CP09_Discipline-7 | DES | Networks |
| --- | --- | --- | --- | --- | --- | --- | --- | --- | --- | --- | --- | --- | --- | --- | --- | --- | --- | --- | --- | --- | --- | --- |
|  | 2 | **Solid Block Retaining Walls** |  | 2024-12-16 | 2026-07-07 |  |  |  |  |  |  |  |  |  |  |  |  |  |  |  |  |  |
| CP09-TR3-RW-1020 |  | Excavation | 3.75d | 2024-12-16 A | 2024-12-21 A | CP09-TR3-RW-1010, CP09-TR3-EW-1000, CP09-TR3-EW-1010 | 100% |  | 2025-01-18 | 2025-01-22 |  |  | Cost [5993.22]; EXCAVATOR [48 h]; LOADER [56 h]; TRUCK [56 h]; Labor [31 h]; Excavation [60.55 M3] | 5,993.22 | 5,993 | RW | TR03 | RE&CW | MS#02 | CON | HD |  |
| CP09-TR3-RW-1040 |  | Plaing Concrete with HPDE | 5d | 2025-01-19 A | 2025-04-02 A | CP09-TR3-RW-1020 SS+2.81d, CP09-TR3-RW-1020 FF+2.81d, CP09-EN-TR3-A-1110 | 100% |  | 2025-02-17 | 2025-02-23 |  |  | Cost [7990.96]; Mason [27 h]; Labor [48 h]; Plain Concrete [38.81 M3]; HDPE | 7,990.96 | 7,991 | RW | TR03 | RE&CW | MS#02 | CON | HD |  |
| CP09-TR3-RW-1060 |  | Reinforced Concrete for Footing | 6.56d | 2025-02-03 A | 2025-04-05 A | CP09-TR3-RW-1040 SS+2.81d, CP09-TR3-RW-1040 FF+2.81d, CP09-EN-TR3-A-1110, CP09-EN-TR3-A-1120 | 100% |  | 2025-03-03 | 2025-03-12 |  |  | Cost [59932.2]; Mason [48 h]; Steel Fixer [45 h]; Shutter [48 h]; Labor [48 h]; Reinforced Concrete [12.94 M3] | 59,932.18 | 59,932 | RW | TR03 | RE&CW | MS#02 | CON | HD |  |
| CP09-TR3-RW-1070 |  | Reinforced Concrete for Tie beam | 5d | 2025-03-17 A | 2025-04-05 A | CP09-TR3-RW-1060 SS+2.81d, CP09-TR3-RW-1060 FF+2.81d | 100% |  | 2025-04-20 | 2025-04-27 |  |  | Cost [9988.7]; Mason [48 h]; Steel Fixer [48 h]; Shutter [48 h]; Labor [48 h]; Reinforced Concrete | 9,988.7 | 9,989 | RW | TR03 | RE&CW | MS#02 | CON | HD |  |
| CP09-TR3-RW-1090 |  | Reinforced Concrete for Column | 5.62d | 2025-09-30 A | 2025-10-04 A | CP09-TR3-RW-1070 SS+2.81d, CP09-TR3-RW-1070 FF+2.81d | 100% |  | 2025-04-23 | 2025-04-30 |  |  | Cost [9988.7]; Mason [48 h]; Steel Fixer [48 h]; Shutter [48 h]; Labor [48 h]; Reinforced Concrete | 9,988.7 | 9,989 | RW | TR03 | RE&CW | MS#02 | CON | HD |  |
| CP09-TR3-RW-1110 |  | Soild Block Work | 5.62d | 2025-09-30 A | 2025-10-04 A | CP09-TR3-RW-1090 SS+5.62d, CP09-TR3-RW-1090 FF+5.62d, CP09-EN-TR3-A-1140 | 100% |  | 2025-10-13 | 2025-10-19 |  |  | Cost [19977.4]; Mason [38 h]; Labor [48 h]; Blocks [10.35] | 19,977.39 | 19,977 | RW | TR03 | RE&CW | MS#02 | CON | HD |  |
| CP09-TR3-RW-1130 |  | Reinforced Concrete for Beam | 7.5d | 2025-09-30 A | 2025-10-04 A | CP09-TR3-RW-1110 SS+3.75d, CP09-TR3-RW-1110 FF+3.75d | 100% |  | 2025-10-16 | 2025-10-26 |  |  | Cost [19977.4]; Mason [12 h]; Steel Fixer [207 h]; Shutter [17 h]; Labor [48 h]; Reinforced Concrete [4.14 M3] | 19,977.39 | 19,977 | RW | TR03 | RE&CW | MS#02 | CON | HD |  |
| CP09-TR3-RW-1150 |  | Waterproofing & Protection | 6.56d | 2025-09-30 A | 2025-10-04 A | CP09-TR3-RW-1130 SS+7.5d, CP09-TR3-RW-1130 FF+7.5d | 100% |  | 2025-10-27 | 2025-11-03 |  |  | Cost [7990.96]; Mason [10.08 h]; Labor [48 h]; Waterproofing [14.49 M2] | 7,990.96 | 7,991 | RW | TR03 | RE&CW | MS#02 | CON | HD |  |
| CP09-TR3-RW-1170 |  | Backfilling | 5.62d | 2025-11-17 A | 2025-11-21 A | CP09-TR3-RW-1150 SS+2.81d, CP09-TR3-RW-1150 FF+2.81d | 100% |  | 2025-11-23 | 2025-11-29 |  |  | Cost [7990.96]; Labor [32 h]; Backfilling [41.14 M3] | 7,990.96 | 7,991 | RW | TR03 | RE&CW | MS#02 | CON | HD |  |
| CP09-TR3-RW-1190 |  | Marble Cladding | 10d | 2026-06-21 | 2026-07-01 | CP09-TR3-RW-1170 SS+4.69d, CP09-TR3-RW-1170 FF+4.69d, CP09-EN-TR3-A-1150, CP09-PR-CV-DY-1120 |  |  |  |  | -183.94d | 0d | Cost [39954.8]; Mason [88 h]; Labor [48 h]; Marble [31.05] | 39,955 |  | RW | TR03 | RE&CW | MS#02 | CON | HD |  |
| CP09-TR3-RW-1210 |  | Marble Copping | 10d | 2026-06-25 | 2026-07-07 | CP09-TR3-RW-1190 SS+4.69d, CP09-TR3-RW-1190 FF+4.69d, CP09-EN-TR3-A-1150, CP09-PR-CV-DY-1120 |  |  |  |  | -183.94d | 0d | Cost [9988.7]; Mason [160 h]; Labor [48 h]; Marble Coping [25.88] | 9,989 |  | RW | TR03 | RE&CW | MS#02 | CON | HD |  |
|  | 1 | **Irrigation Works** |  | 2026-02-22 | 2026-07-02 |  |  |  |  |  |  |  |  |  |  |  |  |  |  |  |  |  |
|  | 1 | **Sub-Main & Lateral** |  | 2026-02-22 | 2026-04-28 |  |  |  |  |  |  |  |  |  |  |  |  |  |  |  |  |  |
| CP09-TR3-IR-1000 |  | Excavation for Sub-main & Lateral Pieps | 4d | 2026-02-22 A | 2026-04-28 A | CP09-EN-TR3-A-1340, CP09-TR3-HD-1050 | 100% |  | 2025-11-20 | 2025-11-24 |  |  | Cost [484535]; EXCAVATOR [4784 h]; LOADER [5744 h]; TRUCK [5744 h]; Excavation [7977.8 M3] | 484,535.36 | 339,174.5 |  | TR03 | IRR-W | MS#02 | CON | SO | IRR |
| CP09-TR3-IR-1010 |  | Sub-main & Lateral Pieps laying out and installation | 5d | 2026-02-22 A | 2026-04-28 A | CP09-TR3-IR-1000 SS+2d, CP09-TR3-IR-1000 FF+5d, CP09-PR-IR-DY-1000 | 100% |  | 2025-11-25 | 2025-11-30 |  |  | Cost [872164]; PipeFitter [280 h]; Labor [48 h]; UPVC Pipes [7977.8 M] | 872,163.65 | 610,514.8 |  | TR03 | IRR-W | MS#02 | CON | SO | IRR |
| CP09-TR3-IR-1020 |  | Sub-main & Lateral Pieps Testing | 3d | 2026-02-22 A | 2026-04-28 A | CP09-TR3-IR-1010 SS+2d, CP09-TR3-IR-1010 FF+2d | 100% |  | 2025-11-30 | 2025-12-02 |  |  | Cost [96907.1] | 96,907.07 | 67,834.9 |  | TR03 | IRR-W | MS#02 | CON | SO | IRR |
| CP09-TR3-IR-1030 |  | Backfilling forSub-main & Lateral Pieps | 4d | 2026-02-22 A | 2026-04-28 A | CP09-TR3-IR-1020 SS+2d, CP09-TR3-IR-1020 FF+2d | 100% |  | 2025-12-02 | 2025-12-06 |  |  | Cost [484535]; Labor [48 h]; Backfilling [7977.8 M3] | 484,535.36 | 339,174.5 |  | TR03 | IRR-W | MS#02 | CON | SO | IRR |
|  | 2 | **Fittings & Accessories** |  | 2026-04-24 | 2026-07-02 |  |  |  |  |  |  |  |  |  |  |  |  |  |  |  |  |  |
| CP09-TR3-IR-1040 |  | Installation of Dripline | 6d | 2026-04-24 A | 2026-06-15 | CP09-TR3-IR-1020, CP09-TR3-SF-1020 FF, CP09-PR-IR-DY-1010 | 80% | 6d | 2026-05-09 | 2026-05-14 | -154d | 0d | Cost [789420]; Labor [280 h]; Dripline [29500 Nos_] | 789,420 |  |  | TR03 | IRR-W | MS#02 | CON | SO | IRR |
| CP09-TR3-IR-1090 |  | Installation of Controller decoder cables | 6d | 2026-04-24 A | 2026-04-28 A | CP09-TR3-IR-1080, CP09-PR-IR-DY-1070 | 100% |  | 2026-06-02 | 2026-06-08 |  |  | Cost [198024]; Controller Cable [1850]; Labor [48 h] | 198,024 | 198,024 |  | TR03 | IRR-W | MS#02 | CON | SO | IRR |
| CP09-TR3-IR-1100 |  | Installation of Decoder one station | 3d | 2026-06-07 | 2026-06-09 | CP09-TR3-IR-1090, CP09-PR-IR-DY-1080 |  |  |  |  | -134d | 70.94d | Cost [212404]; Decoder station [28.4]; Labor [48 h] | 212,404 |  |  | TR03 | IRR-W | MS#02 | CON | SO | IRR |
| CP09-TR3-IR-1050 |  | Installation of Sprinklers | 5d | 2026-06-16 | 2026-06-21 | CP09-TR3-IR-1040, CP09-PR-IR-DY-1040 |  |  |  |  | -154d | 0d | Cost [57038.3]; Labor [48 h]; Sprinkle [84.1 Nos_] | 57,038 |  |  | TR03 | IRR-W | MS#02 | CON | SO | IRR |
| CP09-TR3-IR-1060 |  | Installation Valves & Rings | 4d | 2026-06-22 | 2026-06-25 | CP09-TR3-IR-1050, CP09-PR-IR-DY-1030, CP09-PR-IR-DY-1020 |  |  |  |  | -154d | 0d | Cost [208328]; Valves [715.1]; Labor [48 h] | 208,328 |  |  | TR03 | IRR-W | MS#02 | CON | SO | IRR |
| CP09-TR3-IR-1070 |  | Installation of Electrical solenoid valve | 6d | 2026-06-22 | 2026-06-28 | CP09-TR3-IR-1060 SS, CP09-PR-IR-DY-1050 |  |  |  |  | -150d | 4d | Cost [439801]; Solenoid valve [22.4]; Labor [48 h] | 439,801 |  |  | TR03 | IRR-W | MS#02 | CON | SO | IRR |
| CP09-TR3-IR-1080 |  | Installation of Controller (decoder system plastic pedestal) | 6d | 2026-06-27 | 2026-07-02 | CP09-TR3-IR-1060, CP09-TR3-IR-1070 SS, CP09-PR-IR-DY-1060 |  |  |  |  | -154d | 50.94d | Cost [262719]; Controller [1]; Labor [48 h] | 262,719 |  |  | TR03 | IRR-W | MS#02 | CON | SO | IRR |

| ID | WBS | Activity | Duration | Start | Finish | Predecessors | Complete | Remaining | Planned start | Planned finish | Total float | Free float | Resources | Cost | Actual cost | Networks | CP09_Terrace-7 | CP09-Trade | CP09_Milestone-7 | CP09_Discipline-7 | DES | Hardscape |
| --- | --- | --- | --- | --- | --- | --- | --- | --- | --- | --- | --- | --- | --- | --- | --- | --- | --- | --- | --- | --- | --- | --- |
|  | 4 | **Electrical Works** |  | 2024-09-16 | 2026-07-14 |  |  |  |  |  |  |  |  |  |  |  |  |  |  |  |  |  |
|  | 1 | **Power Cable & Pillars** |  | 2024-09-16 | 2026-07-14 |  |  |  |  |  |  |  |  |  |  |  |  |  |  |  |  |  |
| CP09-TR3-EL-1000 |  | Excavation | 5d | 2024-09-16 A | 2026-03-06 A | CP09-TR3-EW-1000, CP09-TR3-EW-1010, CP09-TR3-IR-1030, CP09-EN-TR3-A-1300 | 100% |  | 2026-02-09 | 2026-02-14 |  |  | Cost [374564]; EXCAVATOR [3344 h]; LOADER [4016 h]; TRUCK [4016 h]; Excavation [6974.38 M3] | 374,564 | 374,564 | ELEC | TR03 | EL-W | MS#02 | CON | HD |  |
| CP09-TR3-EL-1010 |  | Installation of Power Cables | 4d | 2024-12-23 A | 2026-03-06 A | CP09-TR3-EL-1000 SS+2d, CP09-TR3-EL-1000 FF+2d, CP09-EN-TR3-A-1300, CP09-EN-TR3-A-1310, CP09-PR-EL-DY-1060 | 100% |  | 2026-02-12 | 2026-02-16 |  |  | Cost [898955]; Electrical Cable [6974.38]; Electrican [280 h]; Labor [48 h] | 898,955 | 898,955 | ELEC | TR03 | EL-W | MS#02 | CON | HD |  |
| CP09-TR3-EL-1020 |  | Backfilling for Power Cables | 4d | 2024-12-29 A | 2026-03-06 A | CP09-TR3-EL-1010 SS+2d, CP09-TR3-EL-1010 FF+2d | 100% |  | 2026-02-15 | 2026-02-18 |  |  | Cost [224738]; Backfilling [6974.38 M3] | 224,738 | 224,738 | ELEC | TR03 | EL-W | MS#02 | CON | HD |  |
| CP09-TR3-EL-1030 |  | Installation of Connecting Pillars | 3d | 2026-07-12 | 2026-07-14 | CP09-TR3-HD-1260, CP09-PR-EL-DY-1070 |  |  |  |  | -164d | 5.44d | Cost [428687]; Pillars [3]; Electrican [48 h]; Labor [48 h] | 428,687 |  | ELEC | TR03 | EL-W | MS#02 | CON | HD |  |
|  | 3 | **Hardscape** |  | 2024-10-24 | 2026-07-20 |  |  |  |  |  |  |  |  |  |  |  |  |  |  |  |  |  |
|  | 6 | **Concrete Curb** |  | 2025-11-03 | 2026-06-09 |  |  |  |  |  |  |  |  |  |  |  |  |  |  |  |  |  |
| CP09-TR3-HD-1010 |  | Excavation | 2d | 2025-11-03 A | 2025-12-26 A | CP09-TR3-EW-1000, CP09-TR3-EW-1010, CP09-TR3-EW-1020 | 100% |  | 2025-11-13 | 2025-11-16 |  |  | Cost [158617]; EXCAVATOR [312 h]; LOADER [368 h]; TRUCK [368 h]; Excavation [384.51 M3] | 158,616.78 | 158,617 |  | TR03 | HS | MS#02 | CON | HD | CURB |
| CP09-TR3-HD-1020 |  | Plains Concrete with HDPE waterproofing | 2d | 2025-11-03 A | 2025-12-26 A | CP09-TR3-HD-1010, CP09-EN-TR3-A-1230 | 100% |  | 2025-11-16 | 2025-11-18 |  |  | Cost [475850]; Plain Concrete [1121.49 M3]; HDPE | 475,850.35 | 475,850 |  | TR03 | HS | MS#02 | CON | HD | CURB |
| CP09-TR3-HD-1030 |  | Under Paving Reinforced Concrete Curb | 4d | 2025-11-03 A | 2025-12-26 A | CP09-TR3-HD-1020 SS+1.88d, CP09-TR3-HD-1020 FF+1.88d | 100% |  | 2025-11-18 | 2025-11-23 |  |  | Cost [951701]; Mason [385 h]; Steel Fixer [269 h]; Shutter [513 h]; Labor [48 h]; Reinforced Concrete [128.17 M3] | 951,700.7 | 951,701 |  | TR03 | HS | MS#02 | CON | HD | CURB |
| CP09-TR3-HD-1050 |  | Instal precast Flush Curb | 3d | 2026-06-07 | 2026-06-09 | CP09-EN-TR3-A-1230, CP09-PR-HD-DY-1080, CP09-TR3-HD-1030 SS+3d, CP09-TR3-HD-1030 SF+3d, CP09-TR3-HD-1030 FS+3d, CP09-TR3-HD-1030 FF+3d |  |  |  |  | -168.62d | 0d | Cost [116047]; Mason [144 h]; Labor [48 h]; Flush Curb [360.25] | 116,047 |  |  | TR03 | HS | MS#02 | CON | HD | CURB |
|  | 1 | **Side wake & Plazes** |  | 2024-10-24 | 2026-07-09 |  |  |  |  |  |  |  |  |  |  |  |  |  |  |  |  |  |
|  | 8 | **Interlocking Paving** |  | 2025-12-22 | 2026-01-23 |  |  |  |  |  |  |  |  |  |  |  |  |  |  |  |  |  |
| CP09-TR3-HD-1120 |  | Crush Stone for Interlock Types IL-(01,02,06,07) | 6.56d | 2025-12-22 A | 2026-01-23 A | CP09-EN-TR3-A-1240, CP09-TR3-EW-1000, CP09-TR3-EW-1010, CP09-TR3-IR-1030, CP09-TR3-EL-1020, CP09-PR-HD-DY-1090 | 100% |  | 2026-01-08 | 2026-01-15 |  |  | Cost [410521]; Mason [280 h]; Labor [48 h]; Crushed Stone [2325.12] | 410,520.86 | 389,994.95 |  | TR03 | HS | MS#02 | CON | HD | INTK |
| CP09-TR3-HD-1240 |  | Sand Layer for Interlock Types IL-(01,02,06,07) | 5.62d | 2025-12-22 A | 2026-01-23 A | CP09-TR3-HD-1120 SS+2.81d, CP09-TR3-HD-1120 FF+2.81d, CP09-EN-TR3-A-1240 | 100% |  | 2026-01-12 | 2026-01-19 |  |  | Cost [279178]; Mason [48 h]; Labor [280 h]; Clean sand [2321.5] | 279,178.42 | 265,219.1 |  | TR03 | HS | MS#02 | CON | HD | INTK |
| CP09-TR3-HD-1250 |  | Motar Bed Interlock Types IL-(03,04,08,09,10) | 5.62d | 2025-12-22 A | 2026-01-23 A | CP09-TR3-HD-1240 SS, CP09-EN-TR3-A-1240 | 100% |  | 2026-01-12 | 2026-01-19 |  |  | Cost [68357.3]; Mason [48 h]; Labor [48 h] | 68,357.32 | 68,357.32 |  | TR03 | HS | MS#02 | CON | HD | INTK |
| CP09-TR3-HD-1260 |  | Interlocking Paving | 7.5d | 2025-12-22 A | 2026-01-23 A | CP09-TR3-HD-1240 SS+2.81d, CP09-TR3-HD-1250 SS+2.81d, CP09-TR3-HD-1240 FF+2.81d, CP09-TR3-HD-1250 FF+2.81d, CP09-EN-TR3-A-1240, CP09-PR-HD-DY-1180 | 100% |  | 2026-01-15 | 2026-01-25 |  |  | Cost [521304]; Mason [280 h]; Labor [48 h]; Interlock [2966] | 521,303.61 | 495,238.8 |  | TR03 | HS | MS#02 | CON | HD | INTK |
|  | 2 | **Concrete in Situ** |  | 2025-09-30 | 2026-06-17 |  |  |  |  |  |  |  |  |  |  |  |  |  |  |  |  |  |
|  | 1 | **Slab on Garde** |  | 2025-09-30 | 2026-06-13 |  |  |  |  |  |  |  |  |  |  |  |  |  |  |  |  |  |
| CP09-TR3-HD-1070 |  | Plain Concrete with HDPE | 3.75d | 2025-09-30 A | 2026-06-10 | CP09-TR3-EW-1000, CP09-TR3-EW-1010, CP09-TR3-IR-1030, CP09-TR3-EL-1020, CP09-EN-TR3-A-1160 | 90% | 3.75d | 2026-03-02 | 2026-03-05 | -111.75d | 137.31d | Cost [577969]; Mason [280 h]; Labor [48 h]; Plain Concrete [3339.88 M3]; HDPE | 577,969 |  |  | TR03 | HS | MS#02 | CON | HD | CON |
| CP09-TR3-HD-1230 |  | Reinfored Concrete slab on grade | 5.62d | 2026-02-22 A | 2026-06-13 | CP09-TR3-HD-1070 | 90% | 5.62d | 2026-02-25 | 2026-03-04 | -113.62d | 135.44d | Cost [1444922]; Mason [48 h]; Steel Fixer [192 h]; Shutter [48 h]; Labor [48 h]; Reinforced Concrete [333.99 M3] | 1,444,922 |  |  | TR03 | HS | MS#02 | CON | HD | CON |
| CP09-TR3-HD-1330 |  | Waterproofing & Screed | 3.75d | 2026-02-22 A | 2026-06-10 | CP09-TR3-HD-1230 | 90% | 3.75d | 2026-03-04 | 2026-03-09 | -111.75d | 137.31d | Cost [288984]; Mason [128 h]; Labor [48 h]; Waterproofing [3339.88 M2] | 288,984 |  |  | TR03 | HS | MS#02 | CON | HD | CON |
|  | 2 | **Concrete In-situ w./Exposed Aggregate Finish** |  | 2026-02-22 | 2026-06-17 |  |  |  |  |  |  |  |  |  |  |  |  |  |  |  |  |  |
| CP09-TR3-HD-1390 |  | Concrete casting (including Joints & Wire Mish) | 9.38d | 2026-02-22 A | 2026-06-17 | CP09-TR3-HD-1330, CP09-TR3-HD-1050, CP09-EN-TR3-A-1160, CP09-PR-HD-DY-1000 | 90% | 9.38d | 2026-03-09 | 2026-03-19 | -117.38d | 131.69d | Cost [2600859]; Mason [128 h]; Labor [48 h]; Concrete /Exposed Aggregate [3339.88] | 2,600,859 |  |  | TR03 | HS | MS#02 | CON | HD | CON |
| CP09-TR3-HD-1520 |  | Finishing Concrete Surface | 5d | 2026-02-22 A | 2026-06-11 | CP09-TR3-HD-1390, CP09-TR3-RW-1200, CP09-TR3-RW-1220, CP09-TR3-RW-1190, CP09-TR3-RW-1210 | 90% | 5d | 2026-03-24 | 2026-03-30 | -154.75d | 4.56d | Cost [866953]; Mason [48 h]; Labor [48 h] | 866,953 |  |  | TR03 | HS | MS#02 | CON | HD | CON |

| ID | WBS | Activity | Duration | Start | Finish | Predecessors | Complete | Remaining | Planned start | Planned finish | Total float | Free float | Resources | Cost | Actual cost | Hardscape | CP09_Terrace-7 | CP09-Trade | CP09_Milestone-7 | CP09_Discipline-7 | DES |
| --- | --- | --- | --- | --- | --- | --- | --- | --- | --- | --- | --- | --- | --- | --- | --- | --- | --- | --- | --- | --- | --- |
|  | 1 | **Marble Paving** |  | 2024-10-24 | 2026-06-14 |  |  |  |  |  |  |  |  |  |  |  |  |  |  |  |  |
|  | 1 | **Slab on Garde** |  | 2024-10-24 | 2026-06-13 |  |  |  |  |  |  |  |  |  |  |  |  |  |  |  |  |
| CP09-TR3-HD-1060 |  | Plain Concrete with HDPE | 3.75d | 2024-10-24 A | 2026-06-10 | CP09-TR3-EW-1000, CP09-TR3-EW-1020, CP09-TR3-IR-1030, CP09-TR3-EL-1020, CP09-EN-TR3-A-1170 | 95% | 3.75d | 2026-01-22 | 2026-01-26 | -111.75d | 137.31d | Cost [173552]; Mason [160 h]; Labor [48 h]; Plain Concrete [808.88 M3]; HDPE | 173,552.22 |  | MRB | TR03 | HS | MS#02 | CON | HD |
| CP09-TR3-HD-1220 |  | Reinfored Concrete slab on grade | 5.62d | 2026-02-22 A | 2026-06-13 | CP09-TR3-HD-1060 | 95% | 5.62d | 2026-01-04 | 2026-01-11 | -113.62d | 135.44d | Cost [416525]; Mason [48 h]; Steel Fixer [170 h]; Shutter [48 h]; Labor [48 h]; Reinforced Concrete [80.89 M3] | 416,525.33 | 83,305 | MRB | TR03 | HS | MS#02 | CON | HD |
| CP09-TR3-HD-1320 |  | Waterproofing & Screed | 5d | 2026-02-22 A | 2026-06-11 | CP09-TR3-HD-1220 | 95% | 5d | 2026-01-11 | 2026-01-17 | -113d | 136.06d | Cost [104131]; Mason [160 h]; Labor [48 h]; Waterproofing [808.88 M2] | 104,131.33 | 20,826.2 | MRB | TR03 | HS | MS#02 | CON | HD |
|  | 2 | **Marble Tiles** |  | 2025-09-30 | 2026-06-14 |  |  |  |  |  |  |  |  |  |  |  |  |  |  |  |  |
| CP09-TR3-HD-1420 |  | Marble Fixiation | 7d | 2025-09-30 A | 2026-06-14 | CP09-TR3-HD-1320, CP09-TR3-HD-1050, CP09-EN-TR3-A-1170, CP09-PR-HD-DY-1010 | 95% | 7d | 2026-01-17 | 2026-01-25 | -115d | 134.06d | Cost [2283133]; Mason [280 h]; Labor [48 h]; Marble [1120.38] | 2,283,132.51 | 456,626.6 | MRB | TR03 | HS | MS#02 | CON | HD |
| CP09-TR3-HD-1530 |  | Marble Surfcae Finishing | 4d | 2026-04-13 A | 2026-06-10 | CP09-TR3-HD-1420, CP09-TR3-HD-1520 SS | 95% | 4d | 2026-04-20 | 2026-04-23 | -153.75d | 5.56d | Cost [402906]; Mason [48 h]; Labor [48 h] | 402,906 |  | MRB | TR03 | HS | MS#02 | CON | HD |
|  | 3 | **Wooden Floor Boards** |  | 2026-04-13 | 2026-06-22 |  |  |  |  |  |  |  |  |  |  |  |  |  |  |  |  |
|  | 1 | **Slab on Garde** |  | 2026-04-13 | 2026-04-28 |  |  |  |  |  |  |  |  |  |  |  |  |  |  |  |  |
| CP09-TR3-HD-1080 |  | Plain Concrete with HDPE | 2.81d | 2026-04-13 A | 2026-04-17 A | CP09-TR3-HD-1220, CP09-TR3-EW-1000, CP09-TR3-EW-1010, CP09-TR3-IR-1030, CP09-TR3-EL-1020, CP09-EN-TR3-A-1180 | 100% |  | 2026-04-27 | 2026-04-29 |  |  | Cost [116460]; Mason [160 h]; Labor [48 h]; Plain Concrete [395.25 M3]; HDPE | 116,460 |  | WPC | TR03 | HS | MS#02 | CON | HD |
| CP09-TR3-HD-1160 |  | Reinfored Concrete slab on grade | 5d | 2026-04-13 A | 2026-04-28 A | CP09-TR3-HD-1080 | 100% |  | 2026-04-29 | 2026-05-05 |  |  | Cost [279503]; Mason [48 h]; Steel Fixer [83 h]; Shutter [48 h]; Labor [48 h]; Reinforced Concrete [39.52 M3] | 279,503 |  | WPC | TR03 | HS | MS#02 | CON | HD |
| CP09-TR3-HD-1290 |  | Waterproofing & Screed | 2.81d | 2026-04-13 A | 2026-04-28 A | CP09-TR3-HD-1160 | 100% |  | 2026-05-05 | 2026-05-09 |  |  | Cost [69880]; Mason [160 h]; Labor [48 h]; Waterproofing [395.25 M2] | 69,880 |  | WPC | TR03 | HS | MS#02 | CON | HD |
|  | 2 | **Wood- Plastic Composit** |  | 2026-06-10 | 2026-06-22 |  |  |  |  |  |  |  |  |  |  |  |  |  |  |  |  |
| CP09-TR3-HD-1350 |  | WPC Installation | 6.56d | 2026-06-10 | 2026-06-17 | CP09-TR3-HD-1290, CP09-TR3-HD-1050, CP09-EN-TR3-A-1180, CP09-PR-HD-DY-1020 |  |  |  |  | -159.31d | 0d | Cost [1820401]; WPC [528] | 1,820,401 |  | WPC | TR03 | HS | MS#02 | CON | HD |
| CP09-TR3-HD-1600 |  | WPC surface finishing & Accessories | 3.75d | 2026-06-17 | 2026-06-22 | CP09-TR3-HD-1350, CP09-TR3-HD-1530, CP09-TR3-HD-1520 |  |  |  |  | -159.31d | 14.81d | Cost [455097] | 455,097 |  | WPC | TR03 | HS | MS#02 | CON | HD |
|  | 4 | **Gravel layer** |  | 2026-06-07 | 2026-07-01 |  |  |  |  |  |  |  |  |  |  |  |  |  |  |  |  |
|  | 1 | **Slab on Garde** |  | 2026-06-07 | 2026-06-15 |  |  |  |  |  |  |  |  |  |  |  |  |  |  |  |  |
| CP09-TR3-HD-1090 |  | Plain Concrete with HDPE | 2.81d | 2026-06-07 | 2026-06-09 | CP09-TR3-HD-1080, CP09-TR3-EW-1000, CP09-TR3-EW-1010, CP09-TR3-IR-1030, CP09-TR3-EL-1020, CP09-EN-TR3-A-1190 |  |  |  |  | -166.94d | 0d | Cost [7507.48]; Mason [90 h]; Labor [48 h]; Plain Concrete [128.88 M3]; HDPE | 7,507 |  | GRV | TR03 | HS | MS#02 | CON | HD |
| CP09-TR3-HD-1170 |  | Mortar bed | 5d | 2026-06-09 | 2026-06-15 | CP09-TR3-HD-1090 |  |  |  |  | -166.94d | 7.19d | Cost [7507.48]; Mason [48 h]; Steel Fixer [48 h]; Shutter [48 h]; Labor [48 h]; Reinforced Concrete | 7,507 |  | GRV | TR03 | HS | MS#02 | CON | HD |
|  | 2 | **Gravel Layer, w./Earth Colors** |  | 2026-06-24 | 2026-07-01 |  |  |  |  |  |  |  |  |  |  |  |  |  |  |  |  |
| CP09-TR3-HD-1360 |  | Furnish & install Garvel Layer | 6.56d | 2026-06-24 | 2026-07-01 | CP09-TR3-HD-1050, CP09-EN-TR3-A-1190, CP09-PR-HD-DY-1030, CP09-TR3-HD-1170 |  |  |  |  | -174.12d | 0d | Cost [35034.9]; Mason [77 h]; Labor [48 h]; Gravel Layer [128.88] | 35,035 |  | GRV | TR03 | HS | MS#02 | CON | HD |
|  | 5 | **Crushed Stone** |  | 2026-05-11 | 2026-07-09 |  |  |  |  |  |  |  |  |  |  |  |  |  |  |  |  |
|  | 1 | **Slab on Garde** |  | 2026-05-11 | 2026-06-11 |  |  |  |  |  |  |  |  |  |  |  |  |  |  |  |  |
| CP09-TR3-HD-1100 |  | Geotextile membrane | 2.81d | 2026-05-11 A | 2026-06-09 | CP09-TR3-HD-1160, CP09-TR3-EW-1000, CP09-TR3-EW-1010, CP09-TR3-IR-1030, CP09-TR3-EL-1020, CP09-EN-TR3-A-1200 | 80% | 2.81d | 2026-04-30 | 2026-05-03 | -110.81d | 138.25d | Cost [3164]; Mason [48 h]; Labor [4 h]; Geotextile Sheets [13.25] | 3,164 |  | CRST | TR03 | HS | MS#02 | CON | HD |
| CP09-TR3-HD-1180 |  | Gravel fix sheets | 5d | 2026-05-11 A | 2026-06-11 | CP09-TR3-HD-1100 | 80% | 5d | 2026-05-03 | 2026-05-09 | -152.56d | 23.12d | Cost [3164.14]; Reinforced Concrete | 3,164 |  | CRST | TR03 | HS | MS#02 | CON | HD |

| ID | WBS | Activity | Duration | Start | Finish | Predecessors | Complete | Planned start | Planned finish | Total float | Free float | Resources | Cost | Hardscape | CP09_Terrace-7 | CP09-Trade | CP09_Milestone-7 | CP09_Discipline-7 | DES |
| --- | --- | --- | --- | --- | --- | --- | --- | --- | --- | --- | --- | --- | --- | --- | --- | --- | --- | --- | --- |
|  | 2 | **Crushed Dolomite Stone** |  | 2026-07-01 | 2026-07-09 |  |  |  |  |  |  |  |  |  |  |  |  |  |  |
| CP09-TR3-HD-1450 |  | Furnish & Install Crushed Dolomite stone , w./ mixed colors | 6.56d | 2026-07-01 | 2026-07-09 | CP09-TR3-HD-1180 FF, CP09-TR3-HD-1360, CP09-TR3-HD-1050, CP09-EN-TR3-A-1200, CP09-PR-HD-DY-1040, CP09-TR3-HD-1180 SS |  |  |  | -174.12d | 0d | Cost [14766]; Mason [37 h]; Labor [48 h]; Crushed Dolomite stone [13.25] | 14,766 | CRST | TR03 | HS | MS#02 | CON | HD |
|  | 6 | **Loose Gravel** |  | 2026-06-24 | 2026-07-01 |  |  |  |  |  |  |  |  |  |  |  |  |  |  |
|  | 2 | **Loose Gravel 50mm** |  | 2026-06-24 | 2026-07-01 |  |  |  |  |  |  |  |  |  |  |  |  |  |  |
| CP09-TR3-HD-1460 |  | Furnish & Install loose gravel w./earth colors. | 6.56d | 2026-06-24 | 2026-07-01 | CP09-TR3-HD-1160, CP09-TR3-HD-1050, CP09-TR3-IR-1030, CP09-TR3-EL-1020, CP09-EN-TR3-A-1210, CP09-PR-HD-DY-1050 |  |  |  | -167.56d | 6.56d | Cost [8429.21]; Mason [19 h]; Labor [48 h]; Loose gravel [31.38] | 8,429 | LGRV | TR03 | HS | MS#02 | CON | HD |
|  | 7 | **Clean Sand Layer** |  | 2026-03-09 | 2026-04-28 |  |  |  |  |  |  |  |  |  |  |  |  |  |  |
|  | 1 | **Kids & Fitness Area** |  | 2026-03-09 | 2026-04-28 |  |  |  |  |  |  |  |  |  |  |  |  |  |  |
| CP09-TR3-HD-1110 |  | Geotextile Sheets | 5d | 2026-03-09 A | 2026-04-28 A | CP09-TR3-HD-1160, CP09-TR3-EW-1000, CP09-TR3-EW-1010, CP09-TR3-HD-1050, CP09-TR3-IR-1030, CP09-TR3-EL-1020, CP09-EN-TR3-A-1220 | 100% | 2026-03-31 | 2026-04-06 |  |  | Cost [65290.1]; Geotextile Sheets [1227.62] | 65,290 | SND | TR03 | HS | MS#02 | CON | HD |
| CP09-TR3-HD-1540 |  | Install Clean sand layer | 9.38d | 2026-03-09 A | 2026-04-28 A | CP09-TR3-HD-1110, CP09-TR3-HD-1460, CP09-TR3-HD-1050, CP09-EN-TR3-A-1220, CP09-PR-HD-DY-1070 | 100% | 2026-04-08 | 2026-04-19 |  |  | Cost [261160]; Clean sand [1227.62] | 261,160 | SND | TR03 | HS | MS#02 | CON | HD |
|  | 2 | **Site Improvments** |  | 2026-04-06 | 2026-07-20 |  |  |  |  |  |  |  |  |  |  |  |  |  |  |
|  | 1 | **Marble Steps** |  | 2026-06-07 | 2026-07-13 |  |  |  |  |  |  |  |  |  |  |  |  |  |  |
| CP09-TR3-HD-1130 |  | Reinforecd Concrete Step. | 7d | 2026-06-07 | 2026-06-14 | CP09-TR3-RW-1180, CP09-TR3-RW-1170, CP09-TR3-EW-1000, CP09-TR3-EW-1010, CP09-EN-TR3-A-1250, CP09-TR3-IR-1030, CP09-TR3-EL-1020 |  |  |  | -164.44d | 0d | Cost [255883]; Mason [48 h]; Steel Fixer [48 h]; Shutter [48 h]; Labor [48 h]; Reinforced Concrete | 255,883 | STP | TR03 | HS | MS#02 | CON | HD |
| CP09-TR3-HD-1190 |  | Install Marble Blocks | 10d | 2026-06-09 | 2026-06-21 | CP09-TR3-HD-1130 SS+2.81d, CP09-TR3-HD-1130 FF+2.81d, CP09-PR-HD-DY-1100 |  |  |  | -164.44d | 13.88d | Cost [162834]; Marble Step [6.38] | 162,834 | STP | TR03 | HS | MS#02 | CON | HD |
| CP09-TR3-HD-1340 |  | Finishing Marble Surface | 5d | 2026-07-07 | 2026-07-13 | CP09-TR3-HD-1190, CP09-TR3-RW-1200, CP09-TR3-RW-1220, CP09-TR3-RW-1190, CP09-TR3-RW-1210 |  |  |  | -162.69d | 6.75d | Cost [46524.1] | 46,524 | STP | TR03 | HS | MS#02 | CON | HD |
|  | 2 | **Curvelinear Block Seat** |  | 2026-04-06 | 2026-07-14 |  |  |  |  |  |  |  |  |  |  |  |  |  |  |
| CP09-TR3-HD-1140 |  | Excavation | 2.81d | 2026-04-06 A | 2026-04-28 A | CP09-TR3-EW-1000, CP09-TR3-EW-1010, CP09-EN-TR3-A-1260, CP09-TR3-EL-1020 | 100% | 2026-03-31 | 2026-04-02 |  |  | Cost [9988.94]; EXCAVATOR [48 h]; LOADER [56 h]; TRUCK [56 h]; Excavation [59.96 M3] | 9,989 | SEAT | TR03 | HS | MS#02 | CON | HD |
| CP09-TR3-HD-1200 |  | Plaing Concrete with HPDE | 3.75d | 2026-04-06 A | 2026-04-28 A | CP09-TR3-HD-1140 | 100% | 2026-04-02 | 2026-04-07 |  |  | Cost [12486.2]; Mason [24 h]; Labor [48 h]; Plain Concrete [34.59 M3]; HDPE | 12,486 | SEAT | TR03 | HS | MS#02 | CON | HD |
| CP09-TR3-HD-1270 |  | Reinforced Concrete for Footing | 5.62d | 2026-04-06 A | 2026-04-28 A | CP09-TR3-HD-1200 | 100% | 2026-04-07 | 2026-04-14 |  |  | Cost [74917.1]; Mason [48 h]; Steel Fixer [31 h]; Shutter [48 h]; Labor [48 h]; Reinforced Concrete [8.84 M3] | 74,917 | SEAT | TR03 | HS | MS#02 | CON | HD |
| CP09-TR3-HD-1380 |  | Reinforced Concrete for beam | 5d | 2026-04-06 A | 2026-04-28 A | CP09-TR3-HD-1270 | 100% | 2026-04-14 | 2026-04-20 |  |  | Cost [24972.4]; Mason [5 h]; Steel Fixer [77 h]; Shutter [6 h]; Labor [48 h]; Reinforced Concrete [1.54 M3] | 24,972 | SEAT | TR03 | HS | MS#02 | CON | HD |
| CP09-TR3-HD-1470 |  | Waterproofing & Protection | 3.75d | 2026-04-06 A | 2026-04-28 A | CP09-TR3-HD-1380 | 100% | 2026-04-20 | 2026-04-23 |  |  | Cost [24972.4]; Waterproofing [9.22 M2] | 24,972 | SEAT | TR03 | HS | MS#02 | CON | HD |
| CP09-TR3-HD-1500 |  | Backfilling | 2.81d | 2026-04-06 A | 2026-04-28 A | CP09-TR3-HD-1470 | 100% | 2026-04-23 | 2026-04-27 |  |  | Cost [14983.4]; Backfilling [40.74 M3] | 14,983 | SEAT | TR03 | HS | MS#02 | CON | HD |
| CP09-TR3-HD-1550 |  | Marble Capping | 5.62d | 2026-07-07 | 2026-07-14 | CP09-TR3-RW-1190, CP09-TR3-RW-1210, CP09-TR3-RW-1200, CP09-TR3-RW-1220, CP09-TR3-HD-1500, CP09-PR-HD-DY-1110 |  |  |  | -183.94d | 0d | Cost [87403.2]; Mason [160 h]; Labor [48 h]; Marble Coping [25.62] | 87,403 | SEAT | TR03 | HS | MS#02 | CON | HD |
|  | 3 | **Pools Shower-01** |  | 2026-06-10 | 2026-07-20 |  |  |  |  |  |  |  |  |  |  |  |  |  |  |
| CP09-TR3-HD-1150 |  | Plain Concrete Basin | 2d | 2026-06-10 | 2026-06-11 | CP09-TR3-HD-1050, CP09-EN-TR3-A-1270, CP09-TR3-EL-1020 |  |  |  | -168.62d | 0d | Cost [5183.94]; Mason [5 h]; Labor [48 h]; Plain Concrete [7 M3] | 5,184 | PLSHW | TR03 | HS | MS#02 | CON | HD |
| CP09-TR3-HD-1210 |  | R.Concrete Basin | 3.75d | 2026-06-13 | 2026-06-16 | CP09-TR3-HD-1150 |  |  |  | -168.62d | 0d | Cost [20735.8]; Mason [48 h]; Steel Fixer [5 h]; Shutter [48 h]; Labor [48 h]; Reinforced Concrete [1.5 M3] | 20,736 | PLSHW | TR03 | HS | MS#02 | CON | HD |
| CP09-TR3-HD-1280 |  | Solid Block Work | 4d | 2026-06-16 | 2026-06-21 | CP09-TR3-HD-1210 |  |  |  | -168.62d | 0d | Cost [2073.57]; Mason [48 h]; Labor [48 h]; Blocks [0.25] | 2,074 | PLSHW | TR03 | HS | MS#02 | CON | HD |
| CP09-TR3-HD-1370 |  | Water Proofing | 2d | 2026-06-21 | 2026-06-23 | CP09-TR3-HD-1280 |  |  |  | -168.62d | 0d | Cost [2591.97]; Mason [5.04 h]; Labor [48 h] | 2,592 | PLSHW | TR03 | HS | MS#02 | CON | HD |
| CP09-TR3-HD-1400 |  | Backfilling | 2.81d | 2026-06-23 | 2026-06-27 | CP09-TR3-HD-1370 |  |  |  | -168.62d | 0d | Cost [1555.18]; Labor [24 h] | 1,555 | PLSHW | TR03 | HS | MS#02 | CON | HD |
| CP09-TR3-HD-1430 |  | Mica Stone Cladding | 2.81d | 2026-06-27 | 2026-06-30 | CP09-TR3-HD-1400, CP09-PR-HD-DY-1120 |  |  |  | -168.62d | 0d | Cost [20735.8]; Mason [11 h]; Labor [48 h] | 20,736 | PLSHW | TR03 | HS | MS#02 | CON | HD |
| CP09-TR3-HD-1490 |  | Mica Stone Capping | 1.88d | 2026-06-30 | 2026-07-02 | CP09-TR3-HD-1430, CP09-PR-HD-DY-1120 |  |  |  | -168.62d | 0d | Cost [2073.57]; Mason [1 h]; Labor [48 h] | 2,074 | PLSHW | TR03 | HS | MS#02 | CON | HD |
| CP09-TR3-HD-1510 |  | Drainage Cover with Geotextile | 2.81d | 2026-07-02 | 2026-07-06 | CP09-TR3-HD-1490, CP09-PR-HD-DY-1060 |  |  |  | -168.62d | 0d | Cost [12441.5] | 12,441 | PLSHW | TR03 | HS | MS#02 | CON | HD |
| CP09-TR3-HD-1570 |  | Blast stone blocks for Flooring | 3d | 2026-07-06 | 2026-07-09 | CP09-TR3-HD-1510, CP09-PR-HD-DY-1130 |  |  |  | -168.62d | 0d | Cost [15551.8]; Mason [9 h]; Labor [48 h] | 15,552 | PLSHW | TR03 | HS | MS#02 | CON | HD |
| CP09-TR3-HD-1590 |  | Blast Stone Blocks Capping | 3d | 2026-07-09 | 2026-07-13 | CP09-TR3-HD-1570, CP09-PR-HD-DY-1130 |  |  |  | -168.62d | 0d | Cost [5183.94]; Mason [16 h]; Labor [48 h] | 5,184 | PLSHW | TR03 | HS | MS#02 | CON | HD |
| CP09-TR3-HD-1690 |  | Loose Rounded Pebbles | 3.75d | 2026-07-13 | 2026-07-16 | CP09-TR3-HD-1590, CP09-PR-HD-DY-1140 |  |  |  | -168.62d | 0d | Cost [5183.94]; Mason [48 h]; Labor [48 h] | 5,184 | PLSHW | TR03 | HS | MS#02 | CON | HD |
| CP09-TR3-HD-1810 |  | Shower Head Fixation | 2.81d | 2026-07-16 | 2026-07-20 | CP09-TR3-HD-1690, CP09-TR3-HD-1570, CP09-TR3-HD-1590, CP09-PR-HD-DY-1150 |  |  |  | -168.62d | 0.81d | Cost [10367.9] | 10,368 | PLSHW | TR03 | HS | MS#02 | CON | HD |

| ID | WBS | Activity | Duration | Start | Finish | Predecessors | Complete | Planned start | Planned finish | Total float | Free float | Resources | Cost | Actual cost | Hardscape | CP09_Terrace-7 | CP09-Trade | CP09_Milestone-7 | CP09_Discipline-7 | DES | Softscape |
| --- | --- | --- | --- | --- | --- | --- | --- | --- | --- | --- | --- | --- | --- | --- | --- | --- | --- | --- | --- | --- | --- |
|  | 4 | **Handrails** |  | 2026-07-14 | 2026-07-20 |  |  |  |  |  |  |  |  |  |  |  |  |  |  |  |  |
| CP09-TR3-HD-1610 |  | Install & Fix Stainless Handrail (500 mm height) | 5.62d | 2026-07-14 | 2026-07-20 | CP09-TR3-HD-1190, CP09-TR3-HD-1550, CP09-EN-TR3-A-1280, CP09-PR-HD-DY-1160 |  |  |  | -183.94d | 0d | Cost [131128]; Labor [51 h]; Stanless Steel Handrial [32] | 131,128 |  | HND | TR03 | HS | MS#02 | CON | HD |  |
| CP09-TR3-HD-1620 |  | Install & Fix Glass Handrail (900mm height) | 5.62d | 2026-07-14 | 2026-07-20 | CP09-TR3-HD-1190, CP09-TR3-HD-1550, CP09-EN-TR3-A-1280, CP09-PR-HD-DY-1170 |  |  |  | -183.94d | 0d | Cost [44178.5]; Glass Handrail [3.5]; Labor [7 h] | 44,179 |  | HND | TR03 | HS | MS#02 | CON | HD |  |
|  | 7 | **Sinage** |  | 2026-02-16 | 2026-06-17 |  |  |  |  |  |  |  |  |  |  |  |  |  |  |  |  |
| CP09-TR3-SN-1480 |  | Reinforced Concrete | 10d | 2026-02-16 A | 2026-04-28 A | CP09-TR3-SN-1440 SS+2d, CP09-TR3-SN-1440 FF+2d | 100% | 2026-02-15 | 2026-02-26 |  |  | Cost [117534]; Mason [92 h]; Steel Fixer [616 h]; Shutter [123 h]; Labor [48 h]; Reinforced Concrete [30.69 M3] | 117,534 |  | SING | TR03 | SIN | MS#02 | CON | HD |  |
| CP09-TR3-SN-1560 |  | Waterproofing | 5d | 2026-02-16 A | 2026-04-28 A | CP09-TR3-SN-1480 SS+3d, CP09-TR3-SN-1480 FF+3d | 100% | 2026-02-24 | 2026-03-02 |  |  | Cost [21369.8]; Mason [128.8 h]; Labor [48 h]; Waterproofing [184.12 M2] | 21,370 |  | SING | TR03 | SIN | MS#02 | CON | HD |  |
| CP09-TR3-SN-1410 |  | Excavation | 7d | 2026-02-22 A | 2026-04-28 A | CP09-TR3-RW-1180, CP09-TR3-RW-1170, CP09-TR3-HD-1260, CP09-EN-TR3-A-1320 | 100% | 2026-02-08 | 2026-02-16 |  |  | Cost [21369.8]; EXCAVATOR [72 h]; LOADER [88 h]; TRUCK [88 h]; Excavation [92.06 M3] | 21,370 |  | SING | TR03 | SIN | MS#02 | CON | HD |  |
| CP09-TR3-SN-1440 |  | Plain Concrete with HDPE | 5d | 2026-02-22 A | 2026-04-28 A | CP09-TR3-SN-1410 SS+2d, CP09-TR3-SN-1410 FF+2d | 100% | 2026-02-12 | 2026-02-18 |  |  | Cost [32054.7]; Mason [4 h]; Labor [48 h]; Plain Concrete [6.14 M3] | 32,055 |  | SING | TR03 | SIN | MS#02 | CON | HD |  |
| CP09-TR3-SN-1580 |  | Grouting | 5d | 2026-02-22 A | 2026-04-28 A | CP09-TR3-SN-1560 SS+2d, CP09-TR3-SN-1560 FF+2d | 100% | 2026-02-26 | 2026-03-04 |  |  | Cost [21369.8] | 21,370 |  | SING | TR03 | SIN | MS#02 | CON | HD |  |
| CP09-TR3-SN-1630 |  | STREET DIRECTIONAL SIGN | 10d | 2026-03-02 A | 2026-04-28 A | CP09-TR3-SN-1580, CP09-PR-SN-DY-1000 | 100% | 2026-03-18 | 2026-03-29 |  |  | Cost [124876]; Sign [41.25] | 124,876 |  | SING | TR03 | SIN | MS#02 | CON | HD |  |
| CP09-TR3-SN-1640 |  | DIRECTIONAL SIGN FOR VEHICULAR | 10d | 2026-03-02 A | 2026-04-28 A | CP09-TR3-SN-1580, CP09-PR-SN-DY-1010 | 100% | 2026-03-18 | 2026-03-29 |  |  | Cost [227367]; Sign [3.88] | 227,367 |  | SING | TR03 | SIN | MS#02 | CON | HD |  |
| CP09-TR3-SN-1670 |  | RULES SIGN | 10d | 2026-03-02 A | 2026-04-28 A | CP09-TR3-SN-1580, CP09-PR-SN-DY-1030 | 100% | 2026-03-18 | 2026-03-29 |  |  | Cost [102164]; Sign [10.38] | 102,164 |  | SING | TR03 | SIN | MS#02 | CON | HD |  |
| CP09-TR3-SN-1680 |  | IDENTIFICATION SIGN | 10d | 2026-03-02 A | 2026-04-28 A | CP09-TR3-SN-1630, CP09-TR3-SN-1640, CP09-TR3-SN-1670, CP09-TR3-SN-1580, CP09-PR-SN-DY-1040 | 100% | 2026-03-30 | 2026-04-09 |  |  | Cost [49962.7]; Sign [60] | 49,963 |  | SING | TR03 | SIN | MS#02 | CON | HD |  |
| CP09-TR3-SN-1650 |  | UNIT ID SIGN (FRONT YARD) | 10d | 2026-06-07 | 2026-06-17 | CP09-TR3-SN-1630, CP09-TR3-SN-1640, CP09-TR3-SN-1670, CP09-TR3-SN-1580, CP09-PR-SN-DY-1020 |  |  |  | -141d | 63.94d | Cost [81022.5]; Sign [2.25] | 81,023 |  | SING | TR03 | SIN | MS#02 | CON | HD |  |
| CP09-TR3-SN-1660 |  | UNIT ID SIGN (BACK YARD) | 10d | 2026-06-07 | 2026-06-17 | CP09-TR3-SN-1630, CP09-TR3-SN-1640, CP09-TR3-SN-1670, CP09-TR3-SN-1580, CP09-PR-SN-DY-1020 |  |  |  | -141d | 63.94d | Cost [55703]; Sign [5] | 55,703 |  | SING | TR03 | SIN | MS#02 | CON | HD |  |
|  | 5 | **Landscape Furntiure** |  | 2026-04-24 | 2026-08-06 |  |  |  |  |  |  |  |  |  |  |  |  |  |  |  |  |
| CP09-TR3-FN-1700 |  | Install & Fix Pitch Pine Picnic Table | 10d | 2026-04-24 A | 2026-04-28 A | CP09-TR3-HD-1610, CP09-TR3-HD-1620, CP09-TR3-HD-1260, CP09-TR3-HD-1460, CP09-TR3-HD-1450, CP09-TR3-HD-1360, CP09-TR3-HD-1600, CP09-TR3-HD-1530, CP09-TR3-HD-1520, CP09-EN-TR3-A-1290, CP09-PR-FN-DY-1000 | 100% | 2026-06-08 | 2026-06-20 |  |  | Cost [93998.3]; Pitch Pine Picnic Table [1] | 93,998 |  |  | TR03 | LA-F | MS#02 | CON | SO | FRNT |
| CP09-TR3-FN-1710 |  | Install & Fix Crcular Cast-iron tree grate | 10d | 2026-04-24 A | 2026-04-28 A | CP09-TR3-HD-1610, CP09-TR3-HD-1620, CP09-TR3-HD-1260, CP09-TR3-HD-1460, CP09-TR3-HD-1450, CP09-TR3-HD-1360, CP09-TR3-HD-1600, CP09-TR3-HD-1530, CP09-TR3-HD-1520, CP09-EN-TR3-A-1290, CP09-PR-FN-DY-1010 | 100% | 2026-06-08 | 2026-06-20 |  |  | Cost [655486]; Crcular Cast-iron tree grate [23.38] | 655,486 |  |  | TR03 | LA-F | MS#02 | CON | SO | FRNT |
| CP09-TR3-FN-1720 |  | Install & Fix Aluminium Cabana for Pool Shading | 10d | 2026-04-24 A | 2026-04-28 A | CP09-TR3-HD-1610, CP09-TR3-HD-1620, CP09-TR3-HD-1260, CP09-TR3-HD-1460, CP09-TR3-HD-1450, CP09-TR3-HD-1360, CP09-TR3-HD-1600, CP09-TR3-HD-1530, CP09-TR3-HD-1520, CP09-EN-TR3-A-1290, CP09-PR-FN-DY-1020 | 100% | 2026-06-08 | 2026-06-20 |  |  | Cost [130450]; Aluminium Cabana [1] | 130,450 | 130,450 |  | TR03 | LA-F | MS#02 | CON | SO | FRNT |
| CP09-TR3-FN-1730 |  | Install & Fix Pitch Pine Benchs | 10d | 2026-04-24 A | 2026-04-28 A | CP09-TR3-HD-1610, CP09-TR3-HD-1620, CP09-TR3-HD-1260, CP09-TR3-HD-1460, CP09-TR3-HD-1450, CP09-TR3-HD-1360, CP09-TR3-HD-1600, CP09-TR3-HD-1530, CP09-TR3-HD-1520, CP09-EN-TR3-A-1290, CP09-PR-FN-DY-1030 | 100% | 2026-06-08 | 2026-06-20 |  |  | Cost [316796]; Pitch Pine Benchs [9.5] | 316,796 |  |  | TR03 | LA-F | MS#02 | CON | SO | FRNT |
| CP09-TR3-FN-1740 |  | Install & Fix Polyester Hammocks | 10d | 2026-04-24 A | 2026-04-28 A | CP09-TR3-HD-1610, CP09-TR3-HD-1620, CP09-TR3-HD-1260, CP09-TR3-HD-1460, CP09-TR3-HD-1450, CP09-TR3-HD-1360, CP09-TR3-HD-1600, CP09-TR3-HD-1530, CP09-TR3-HD-1520, CP09-EN-TR3-A-1290, CP09-PR-FN-DY-1040 | 100% | 2026-06-08 | 2026-06-20 |  |  | Cost [40144.4]; Polyester Hammocks [1] | 40,144 |  |  | TR03 | LA-F | MS#02 | CON | SO | FRNT |
| CP09-TR3-FN-1750 |  | Install & Fix Adult Play Swing | 10d | 2026-04-24 A | 2026-04-28 A | CP09-TR3-HD-1610, CP09-TR3-HD-1620, CP09-TR3-HD-1260, CP09-TR3-HD-1460, CP09-TR3-HD-1450, CP09-TR3-HD-1360, CP09-TR3-HD-1600, CP09-TR3-HD-1530, CP09-TR3-HD-1520, CP09-EN-TR3-A-1290, CP09-PR-FN-DY-1050 | 100% | 2026-06-08 | 2026-06-20 |  |  | Cost [30435]; Adult Play Swing [1] | 30,435 |  |  | TR03 | LA-F | MS#02 | CON | SO | FRNT |
| CP09-TR3-FN-1760 |  | Install & Fix Aluminum Trash Bin | 15d | 2026-04-24 A | 2026-04-28 A | CP09-TR3-HD-1610, CP09-TR3-HD-1620, CP09-TR3-HD-1260, CP09-TR3-HD-1460, CP09-TR3-HD-1450, CP09-TR3-HD-1360, CP09-TR3-HD-1600, CP09-TR3-HD-1530, CP09-TR3-HD-1520, CP09-EN-TR3-A-1290, CP09-PR-FN-DY-1060 | 100% | 2026-06-08 | 2026-06-25 |  |  | Cost [896214]; Aluminum Trash Bin [14] | 896,214 |  |  | TR03 | LA-F | MS#02 | CON | SO | FRNT |
| CP09-TR3-FN-1780 |  | Lanscape Edging ( Rubber) | 12d | 2026-04-24 A | 2026-04-28 A | CP09-TR3-HD-1610, CP09-TR3-HD-1620, CP09-TR3-HD-1260, CP09-TR3-HD-1460, CP09-TR3-HD-1450, CP09-TR3-HD-1360, CP09-TR3-HD-1600, CP09-TR3-HD-1530, CP09-TR3-HD-1520, CP09-EN-TR3-A-1290, CP09-PR-FN-DY-1080 | 100% | 2026-06-08 | 2026-06-22 |  |  | Cost [65739.9]; Lanscape Edging ( Rubber) [236.5] | 65,740 |  |  | TR03 | LA-F | MS#02 | CON | SO | FRNT |
| CP09-TR3-FN-1770 |  | Install & Fix tensile Teflon Tent | 15d | 2026-07-20 | 2026-08-06 | CP09-TR3-HD-1610, CP09-TR3-HD-1620, CP09-TR3-HD-1260, CP09-TR3-HD-1460, CP09-TR3-HD-1450, CP09-TR3-HD-1360, CP09-TR3-HD-1600, CP09-TR3-HD-1530, CP09-TR3-HD-1520, CP09-EN-TR3-A-1290, CP09-PR-FN-DY-1070 |  |  |  | -183.94d | 21d | Cost [555836]; tensile Teflon Tent [2.5] | 555,836 |  |  | TR03 | LA-F | MS#02 | CON | SO | FRNT |

| ID | WBS | Activity | Duration | Start | Finish | Predecessors | Complete | Remaining | Planned start | Planned finish | Total float | Free float | Resources | Cost | Actual cost | Softscape | CP09_Terrace-7 | CP09-Trade | CP09_Milestone-7 | CP09_Discipline-7 | DES |
| --- | --- | --- | --- | --- | --- | --- | --- | --- | --- | --- | --- | --- | --- | --- | --- | --- | --- | --- | --- | --- | --- |
|  | 10 | **Play Field Equipment** |  | 2026-02-16 | 2026-06-23 |  |  |  |  |  |  |  |  |  |  |  |  |  |  |  |  |
| CP09-TR3-PE-1800 |  | Kids playground equipment | 15d | 2026-02-16 A | 2026-04-28 A | CP09-TR3-FN-1700, CP09-TR3-FN-1760, CP09-TR3-HD-1540, CP09-PR-PE-DY-1040, CP09-PR-PE-DY-1050, CP09-PR-PE-DY-1060, CP09-PR-PE-DY-1070, CP09-PR-PE-DY-1080, CP09-PR-PE-DY-1090, CP09-PR-PE-DY-1100 | 100% |  | 2026-03-22 | 2026-04-07 |  |  | Cost [1256494]; Kids equipment [6] | 1,256,493.83 | 251,298.8 | P.EQ | TR03 | PF-E | MS#02 | CON | SO |
| CP09-TR3-PE-1790 |  | Fitness areas equipment | 15d | 2026-06-07 | 2026-06-23 | CP09-TR3-FN-1760, CP09-TR3-HD-1540, CP09-EN-TR3-A-1330, CP09-PR-PE-DY-1000, CP09-PR-PE-DY-1010, CP09-PR-PE-DY-1020, CP09-PR-PE-DY-1030 |  |  |  |  | -146d | 58.94d | Cost [1442780]; Fitness equipment [7] | 1,442,780 |  | P.EQ | TR03 | PF-E | MS#02 | CON | SO |
|  | 11 | **Lighting for Softscape** |  | 2026-06-07 | 2026-07-27 |  |  |  |  |  |  |  |  |  |  |  |  |  |  |  |  |
|  | 1 | **Exterior Lighting** |  | 2026-06-07 | 2026-07-25 |  |  |  |  |  |  |  |  |  |  |  |  |  |  |  |  |
| CP09-TR3-SF-1000 |  | Install Landscape Lighting Pole | 21d | 2026-06-07 | 2026-06-30 | CP09-TR3-HD-1260, CP09-TR3-EL-1010, CP09-EN-TR3-A-1360, CP09-PR-EL-DY-1080 |  |  |  |  | -167d | 7.12d | Cost [97302.1]; Lighting Pole [3]; Electrican [25 h] | 97,302 |  | LHT | TR03 | LFS | MS#02 | CON | HD |
| CP09-TR3-SF-1060 |  | Install Bollard for Walkways | 10d | 2026-07-09 | 2026-07-21 | CP09-TR3-EL-1010, CP09-TR3-HD-1260, CP09-TR3-HD-1520, CP09-TR3-HD-1530, CP09-TR3-HD-1600, CP09-TR3-HD-1360, CP09-TR3-HD-1450, CP09-TR3-HD-1460, CP09-TR3-HD-1540, CP09-EN-TR3-A-1360, CP09-PR-EL-DY-1090, CP09-TR3-SF-1000 |  |  |  |  | -174.12d | 0d | Cost [1108355]; Bollard [258]; Electrican [25 h] | 1,108,355 |  | LHT | TR03 | LFS | MS#02 | CON | HD |
| CP09-TR3-SF-1150 |  | Install Surface Mountaed Down Light for Pool Cabans | 7d | 2026-07-12 | 2026-07-19 | CP09-TR3-FN-1720, CP09-EN-TR3-A-1360, CP09-PR-EL-DY-1100 |  |  |  |  | -168d | 36.94d | Cost [15355]; Surface Mountaed Light [4]; Electrican [25 h] | 15,355 |  | LHT | TR03 | LFS | MS#02 | CON | HD |
| CP09-TR3-SF-1110 |  | Install Diffused Wall Recessed Step | 7d | 2026-07-13 | 2026-07-21 | CP09-TR3-SF-1060 SS+3d, CP09-EN-TR3-A-1360, CP09-PR-EL-DY-1110 |  |  |  |  | -169.12d | 35.81d | Cost [194419]; Diffused Wall [47]; Electrican [25 h] | 194,419 |  | LHT | TR03 | LFS | MS#02 | CON | HD |
| CP09-TR3-SF-1130 |  | Install Inground Uplight For Palms | 6d | 2026-07-19 | 2026-07-25 | CP09-TR3-SF-1140 SS, CP09-TR3-SF-1060 SS, CP09-EN-TR3-A-1360, CP09-PR-EL-DY-1120 |  |  |  |  | -173d | 31.94d | Cost [393484]; Inground Uplight [86]; Electrican [25 h] | 393,484 |  | LHT | TR03 | LFS | MS#02 | CON | HD |
| CP09-TR3-SF-1140 |  | Install Projectors for Trees | 4d | 2026-07-19 | 2026-07-22 | CP09-TR3-SF-1030, CP09-TR3-SF-1080, CP09-TR3-SF-1090, CP09-TR3-SF-1100, CP09-TR3-SF-1040, CP09-TR3-SF-1070, CP09-TR3-SF-1050, CP09-EN-TR3-A-1360, CP09-PR-EL-DY-1130 |  |  |  |  | -173d | 0d | Cost [484837]; Projectors For Trees [118]; Electrican [25 h] | 484,837 |  | LHT | TR03 | LFS | MS#02 | CON | HD |
|  | 2 | **Outlet Lighting Fixtures** |  | 2026-07-21 | 2026-07-27 |  |  |  |  |  |  |  |  |  |  |  |  |  |  |  |  |
| CP09-TR3-SF-1120 |  | Install outlet lighting fixtures | 5d | 2026-07-21 | 2026-07-27 | CP09-TR3-SF-1060, CP09-EN-TR3-A-1360, CP09-PR-EL-DY-1150 |  |  |  |  | -174.12d | 30.81d | Cost [357578]; Outlet Lighting Fixtiure [519]; Electrican [25 h] | 357,578 |  | LHT | TR03 | LFS | MS#02 | CON | HD |
|  | 2 | **Softscape** |  | 2026-02-16 | 2026-07-18 |  |  |  |  |  |  |  |  |  |  |  |  |  |  |  |  |
|  | 1 | **Planting** |  | 2026-02-16 | 2026-07-18 |  |  |  |  |  |  |  |  |  |  |  |  |  |  |  |  |
| CP09-TR3-SF-1020 |  | Organic Manure | 8d | 2026-02-16 A | 2026-06-15 | CP09-TR3-SF-1010 SS+5d, CP09-EN-TR3-A-1350, CP09-PR-PN-DY-1010 | 95% | 8d | 2026-01-20 | 2026-01-29 | -155d | 0d | Cost [841200]; Organic Manure [843.3] | 841,200.18 | 168,240 | PLNT | TR03 | SS | MS#02 | CON | SO |
| CP09-TR3-SF-1010 |  | Sweet sand for all plants | 10d | 2026-02-22 A | 2026-06-17 | CP09-TR3-EW-1020, CP09-TR3-HD-1050, CP09-TR3-HD-1260, CP09-EN-TR3-A-1350, CP09-PR-PN-DY-1000 | 95% | 10d | 2026-01-14 | 2026-01-26 | -157d | 0d | Cost [1296918]; Sweet sand [3702.2] | 1,296,917.68 | 259,383.6 | PLNT | TR03 | SS | MS#02 | CON | SO |
| CP09-TR3-SF-1030 |  | Large Trees | 7d | 2026-04-13 A | 2026-06-14 | CP09-TR3-IR-1040, CP09-TR3-IR-1050, CP09-TR3-IR-1060, CP09-TR3-IR-1070, CP09-TR3-IR-1080, CP09-TR3-IR-1090, CP09-TR3-IR-1100, CP09-TR3-SF-1020, CP09-TR3-SF-1010, CP09-PR-PN-DY-1020 | 70% | 7d | 2026-05-30 | 2026-06-06 | -147d | 0d | Cost [1933001]; Large Trees [706] | 1,933,001 |  | PLNT | TR03 | SS | MS#02 | CON | SO |
| CP09-TR3-SF-1080 |  | Shrubs | 10d | 2026-04-13 A | 2026-06-17 | CP09-TR3-SF-1020, CP09-TR3-SF-1010, CP09-TR3-SF-1030 SS+3d, CP09-TR3-SF-1030 FF+3d, CP09-PR-PN-DY-1060 | 80% | 10d | 2026-06-02 | 2026-06-13 | -147d | 26d | Cost [758721]; Shrubs [5056] | 758,721 |  | PLNT | TR03 | SS | MS#02 | CON | SO |
| CP09-TR3-SF-1090 |  | Ground Covers | 10d | 2026-04-13 A | 2026-06-17 | CP09-TR3-SF-1020, CP09-TR3-SF-1010, CP09-TR3-SF-1030 SS+3d, CP09-TR3-SF-1030 FF+3d, CP09-PR-PN-DY-1070 | 80% | 10d | 2026-06-02 | 2026-06-13 | -147d | 26d | Cost [840914]; Ground Covers [41638] | 840,914 |  | PLNT | TR03 | SS | MS#02 | CON | SO |
| CP09-TR3-SF-1050 |  | Lawn | 10d | 2026-04-24 A | 2026-06-17 | CP09-TR3-SF-1020, CP09-TR3-SF-1010, CP09-TR3-SF-1030 SS+3d, CP09-TR3-SF-1030 FF+3d, CP09-PR-PN-DY-1040 | 80% | 10d | 2026-05-07 | 2026-05-18 | -147d | 26d | Cost [83925.4]; Lawn [1476] | 83,925 |  | PLNT | TR03 | SS | MS#02 | CON | SO |
| CP09-TR3-SF-1100 |  | Succulents | 10d | 2026-05-04 A | 2026-06-17 | CP09-TR3-SF-1020, CP09-TR3-SF-1010, CP09-TR3-SF-1030 SS+3d, CP09-TR3-SF-1030 FF+3d, CP09-PR-PN-DY-1080 | 80% | 10d | 2026-05-12 | 2026-05-23 | -147d | 26d | Cost [363438]; Succulents [1300] | 363,438 |  | PLNT | TR03 | SS | MS#02 | CON | SO |
| CP09-TR3-SF-1040 |  | Vines & Climbers | 10d | 2026-06-18 | 2026-06-29 | CP09-TR3-SF-1020, CP09-TR3-SF-1010, CP09-TR3-SF-1030 SS+3d, CP09-TR3-SF-1030 FF+3d, CP09-PR-PN-DY-1030 |  |  |  |  | -157d | 16d | Cost [26566.1]; Vines & Climbers [241] | 26,566 |  | PLNT | TR03 | SS | MS#02 | CON | SO |
| CP09-TR3-SF-1070 |  | Ornamental grass | 10d | 2026-07-07 | 2026-07-18 | CP09-TR3-SF-1020, CP09-TR3-SF-1010, CP09-TR3-SF-1030 SS+3d, CP09-TR3-SF-1030 FF+3d, CP09-PR-PN-DY-1050 |  |  |  |  | -173d | 0d | Cost [502971]; Ornamental grass [13594] | 502,971 |  | PLNT | TR03 | SS | MS#02 | CON | SO |

| ID | WBS | Activity | Duration | Start | Finish | Predecessors | Complete | Remaining | Planned start | Planned finish | Total float | Free float | Resources | Cost | Actual cost | Swimming Pool | CP09_Terrace-7 | CP09-Trade | CP09_Milestone-7 | CP09_Discipline-7 | DES |
| --- | --- | --- | --- | --- | --- | --- | --- | --- | --- | --- | --- | --- | --- | --- | --- | --- | --- | --- | --- | --- | --- |
|  | 4 | **Terrace # 04** |  | 2024-02-14 | 2026-08-31 |  |  |  |  |  |  |  |  |  |  |  |  |  |  |  |  |
|  | 8 | **Swimming Pool-SP02 & Mechnical Room-MR-02** |  | 2024-02-14 | 2026-07-20 |  |  |  |  |  |  |  |  |  |  |  |  |  |  |  |  |
|  | 1 | **Structure Works for Swimming Pool** |  | 2024-02-14 | 2026-04-24 |  |  |  |  |  |  |  |  |  |  |  |  |  |  |  |  |
| CP09-TR4-SW-1370 |  | Excvation up to Formation Level | 4d | 2024-02-14 A | 2024-05-18 A | CP09-MS-1010, CP09-CLD-1000, CP09-TR3-SW-1000 | 100% |  | 2024-02-14 | 2024-02-18 |  |  | Cost [89708.8]; EXCAVATOR [520 h]; LOADER [624 h]; TRUCK [624 h]; Labor [325 h]; Excavation [650 M3] | 89,708.81 | 89,709 | SP02 | TR04 | SP&MR | MS#02 | CON | HD |
| CP09-TR4-SW-1380 |  | Plain Concret for For Raft | 2.81d | 2024-09-02 A | 2024-09-05 A | CP09-EN-TR2-A-1740, CP09-TR4-SW-1370, CP09-EN-TR4-A-1380, CP09-PR-CV-DY-1000 SS, CP09-TR3-SW-1050, CP09-PR-CV-DY-1010 SS, CP09-PR-CV-A-1010 SS, CP09-PR-CV-DY-1130, CP09-CLD-1010, CP09-MS-1010, CP09-EN-TR1-A-1470, CP09-CLD-1000 | 100% |  | 2024-10-14 | 2024-10-16 |  |  | Cost [149515]; Mason [294 h]; Labor [48 h]; Plain Concrete [420 M3] | 149,514.69 | 149,515 | SP02 | TR04 | SP&MR | MS#02 | CON | HD |
| CP09-TR4-SW-1390 |  | Water Proofing with screed | 1.88d | 2024-09-05 A | 2024-09-08 A | CP09-TR4-SW-1380, CP09-EN-TR4-A-1400, CP09-PR-CV-DY-1010 SS | 100% |  | 2024-10-16 | 2024-10-19 |  |  | Cost [59805.9]; Mason [77 h]; Labor [48 h]; Waterproofing [420 M2] | 59,805.88 | 59,806 | SP02 | TR04 | SP&MR | MS#02 | CON | HD |
| CP09-TR4-SW-1400 |  | Reinforcement concrete for Raft | 4.69d | 2024-09-16 A | 2024-12-22 A | CP09-TR4-SW-1390, CP09-EN-TR4-A-1380, CP09-EN-TR4-A-1390, CP09-PR-CV-DY-1130 | 100% |  | 2024-10-28 | 2024-11-03 |  |  | Cost [747573]; Mason [48 h]; Steel Fixer [343 h]; Shutter [48 h]; Labor [48 h]; Reinforced Concrete [98 M3] | 747,573.45 | 747,573 | SP02 | TR04 | SP&MR | MS#02 | CON | HD |
| CP09-TR4-SW-1410 |  | Water Proofing for Raft with screed | 3.75d | 2024-12-23 A | 2024-12-28 A | CP09-TR4-SW-1400, CP09-EN-TR4-A-1400, CP09-PR-CV-DY-1010 SS | 100% |  | 2025-02-19 | 2025-02-24 |  |  | Cost [149515]; Mason [329 h]; Labor [48 h]; Waterproofing [470 M2] | 149,514.69 | 149,515 | SP02 | TR04 | SP&MR | MS#02 | CON | HD |
| CP09-TR4-SW-1420 |  | Reinforcement Concrete for Walls | 6.56d | 2025-05-18 A | 2025-06-20 A | CP09-TR4-SW-1410 | 100% |  | 2025-01-20 | 2025-01-29 |  |  | Cost [299029]; Mason [81 h]; Steel Fixer [616 h]; Shutter [108 h]; Labor [48 h]; Reinforced Concrete [27 M3] | 299,029.38 | 299,029 | SP02 | TR04 | SP&MR | MS#02 | CON | HD |
| CP09-TR4-SW-1430 |  | External Waterproofing for Walls | 5d | 2025-11-17 A | 2026-02-06 A | CP09-TR4-SW-1420 | 100% |  | 2025-11-23 | 2025-11-27 |  |  | Cost [149515]; Mason [273 h]; Labor [48 h]; Waterproofing [390 M2] | 149,514.69 | 89,709 | SP02 | TR04 | SP&MR | MS#02 | CON | HD |
| CP09-TR4-SW-1440 |  | Protection Block Works | 5d | 2026-03-02 A | 2026-03-06 A | CP09-TR4-SW-1430, CP09-PR-CV-DY-1020 SS | 100% |  | 2026-02-28 | 2026-03-04 |  |  | Cost [59805.9]; Mason [228 h]; Labor [48 h]; Waterproofing; Blocks [60] | 59,806 |  | SP02 | TR04 | SP&MR | MS#02 | CON | HD |
| CP09-TR4-SW-1450 |  | Backfilling | 5.62d | 2026-03-02 A | 2026-04-24 A | CP09-TR4-SW-1440, CP09-TR4-SW-1600 FF | 100% |  | 2026-03-05 | 2026-03-11 |  |  | Cost [59805.9]; Labor [129 h]; Backfilling [215 M3] | 59,806 |  | SP02 | TR04 | SP&MR | MS#02 | CON | HD |
|  | 3 | **Finishing Works for Swimming Pool** |  | 2026-05-11 | 2026-07-12 |  |  |  |  |  |  |  |  |  |  |  |  |  |  |  |  |
| CP09-TR4-SW-1470 |  | Granite for Pool Edg | 3.75d | 2026-05-11 A | 2026-06-10 | CP09-TR4-SW-1460, CP09-EN-TR4-A-1420, CP09-PR-CV-DY-1040 | 85% | 3.75d | 2026-05-27 | 2026-05-31 | -142.56d | 19.25d | Cost [239224]; Mason [48 h]; Labor [48 h] | 239,224 |  | SP02 | TR04 | SP&MR | MS#02 | CON | HD |
| CP09-TR4-SW-1480 |  | Garnite for Drinage Grate | 3.75d | 2026-05-11 A | 2026-06-10 | CP09-TR4-SW-1470 SS, CP09-EN-TR4-A-1420 | 85% | 3.75d | 2026-05-27 | 2026-05-31 | -142.56d | 19.25d | Cost [119612]; Mason [48 h]; Labor [48 h] | 119,612 |  | SP02 | TR04 | SP&MR | MS#02 | CON | HD |
| CP09-TR4-SW-1490 |  | Granite for Pool Coping | 3.75d | 2026-05-11 A | 2026-06-10 | CP09-TR4-SW-1470, CP09-EN-TR4-A-1420 | 85% | 3.75d | 2026-05-31 | 2026-06-04 | -142.56d | 19.25d | Cost [149515]; Mason [160 h]; Labor [48 h]; Granit-Coping [24] | 149,515 |  | SP02 | TR04 | SP&MR | MS#02 | CON | HD |
| CP09-TR4-SW-1460 |  | Mosaics Tiles | 8d | 2026-06-24 | 2026-07-02 | CP09-TR4-SW-1440, CP09-TR4-SW-1450, CP09-EN-TR4-A-1410, CP09-PR-CV-DY-1030 |  |  |  |  | -161.81d | 0d | Cost [598059]; Mason [588 h]; Labor [48 h]; Mosaic [470] | 598,059 |  | SP02 | TR04 | SP&MR | MS#02 | CON | HD |
| CP09-TR4-SW-1500 |  | Stanless Steel Ladders | 2.81d | 2026-07-04 | 2026-07-06 | CP09-TR4-SW-1460, CP09-TR4-SW-1470, CP09-TR4-SW-1480, CP09-TR4-SW-1490, CP09-EN-TR4-A-1440, CP09-EN-TR4-A-1430, CP09-PR-CV-DY-1050 |  |  |  |  | -161.81d | 0d | Cost [59805.9]; Labor [4 h]; Stanless Steel Ladders [2] | 59,806 |  | SP02 | TR04 | SP&MR | MS#02 | CON | HD |
| CP09-TR4-SW-1510 |  | Stanless Steel Handrial | 5d | 2026-07-06 | 2026-07-12 | CP09-TR4-SW-1500, CP09-EN-TR4-A-1440, CP09-PR-CV-DY-1060 |  |  |  |  | -161.81d | 6.25d | Cost [59805.9]; Labor [2 h]; Stanless Steel Handrial [1] | 59,806 |  | SP02 | TR04 | SP&MR | MS#02 | CON | HD |
|  | 4 | **Machine Room_MR02** |  | 2024-08-18 | 2026-06-28 |  |  |  |  |  |  |  |  |  |  |  |  |  |  |  |  |
| CP09-TR4-SW-1520 |  | Excvation up to Formation Level | 3.75d | 2024-08-18 A | 2024-08-21 A | CP09-TR4-SW-1370 SS | 100% |  |  |  |  |  | Cost [51156.2]; EXCAVATOR [320 h]; LOADER [384 h]; TRUCK [384 h]; Labor [200 h]; Excavation [400 M3] | 51,156.18 | 51,156 | SP02 | TR04 | SP&MR | MS#02 | CON | HD |
| CP09-TR4-SW-1530 |  | Plain Concret for For Raft | 2.81d | 2024-11-02 A | 2024-11-04 A | CP09-TR4-SW-1520, CP09-EN-TR4-A-1380 | 100% |  | 2024-11-18 | 2024-11-20 |  |  | Cost [25578.1]; Mason [63 h]; Labor [48 h]; Plain Concrete [90 M3] | 25,578.09 | 25,578 | SP02 | TR04 | SP&MR | MS#02 | CON | HD |
| CP09-TR4-SW-1540 |  | Water Proofing with screed | 1.88d | 2024-11-05 A | 2024-11-06 A | CP09-TR4-SW-1530, CP09-EN-TR4-A-1400, CP09-PR-CV-DY-1010 | 100% |  | 2024-11-20 | 2024-11-23 |  |  | Cost [25578.1]; Mason [77 h]; Labor [48 h]; Waterproofing [90 M2] | 25,578.09 | 25,578 | SP02 | TR04 | SP&MR | MS#02 | CON | HD |
| CP09-TR4-SW-1550 |  | Reinforcement concrete for Raft | 5.62d | 2024-11-07 A | 2025-04-02 A | CP09-TR4-SW-1540, CP09-EN-TR4-A-1380, CP09-EN-TR4-A-1390 | 100% |  | 2024-11-23 | 2024-11-30 |  |  | Cost [153469]; Mason [48 h]; Steel Fixer [77 h]; Shutter [48 h]; Labor [48 h]; Reinforced Concrete [22 M3] | 153,468.55 | 153,469 | SP02 | TR04 | SP&MR | MS#02 | CON | HD |
| CP09-TR4-SW-1570 |  | Reinforcement Concrete for Walls & Columns | 9.38d | 2025-05-11 A | 2025-06-20 A | CP09-TR4-SW-1560 | 100% |  | 2025-06-19 | 2025-07-01 |  |  | Cost [281359]; Mason [84 h]; Steel Fixer [616 h]; Shutter [112 h]; Labor [48 h]; Reinforced Concrete [28 M3] | 281,359.01 | 281,359 | SP02 | TR04 | SP&MR | MS#02 | CON | HD |
| CP09-TR4-SW-1560 |  | Water Proofing for Raft with screed | 3.75d | 2025-09-30 A | 2025-12-12 A | CP09-TR4-SW-1550 | 100% |  | 2025-04-24 | 2025-04-29 |  |  | Cost [63945.2]; Mason [140 h]; Labor [48 h]; Waterproofing [200 M2] | 63,945.23 | 63,945 | SP02 | TR04 | SP&MR | MS#02 | CON | HD |
| CP09-TR4-SW-1580 |  | Reinforcement Concrete for Slab | 11.25d | 2025-10-13 A | 2025-10-17 A | CP09-TR4-SW-1570 | 100% |  | 2025-10-19 | 2025-11-01 |  |  | Cost [127890]; Mason [48 h]; Steel Fixer [616 h]; Shutter [64 h]; Labor [48 h]; Reinforced Concrete [16 M3] | 127,890.46 | 127,890 | SP02 | TR04 | SP&MR | MS#02 | CON | HD |
| CP09-TR4-SW-1590 |  | External Waterproofing with Protection | 5d | 2026-01-12 A | 2026-02-06 A | CP09-TR4-SW-1580 | 100% |  | 2026-01-18 | 2026-01-22 |  |  | Cost [230203]; Mason [105 h]; Labor [48 h]; Waterproofing [150 M2] | 230,202.82 | 207,182.7 | SP02 | TR04 | SP&MR | MS#02 | CON | HD |
| CP09-TR4-SW-1690 |  | Plaster for Internal Walls | 6d | 2026-02-02 A | 2026-02-06 A | CP09-TR4-SW-1590, CP09-EN-TR4-A-1740, CP09-PR-CV-DY-1070 | 100% |  | 2026-02-05 | 2026-02-11 |  |  | Cost [38367.1]; Mason [144 h]; Labor [48 h]; Plaster [150] | 38,367 |  | SP02 | TR04 | SP&MR | MS#02 | CON | HD |
| CP09-TR4-SW-1700 |  | Emulsion Paint for Internal Wall | 6d | 2026-02-02 A | 2026-02-06 A | CP09-TR4-SW-1690, CP09-TR4-SW-1640, CP09-PR-CV-DY-1080 | 100% |  | 2026-02-23 | 2026-03-02 |  |  | Cost [25578.1]; Paint [159.2]; Labor [48 h]; Painter [382 h]; Epoxy for flooring | 25,578 |  | SP02 | TR04 | SP&MR | MS#02 | CON | HD |
| CP09-TR4-SW-1710 |  | Epoxy for flooring | 3d | 2026-02-16 A | 2026-06-09 | CP09-TR4-SW-1700, CP09-TR4-SW-1720, CP09-TR4-SW-1610, CP09-TR4-SW-1630, CP09-TR4-SW-1670, CP09-TR4-SW-1680, CP09-PR-CV-DY-1110 | 80% | 3d | 2026-03-22 | 2026-03-25 | -134d | 34.06d | Cost [63945.2]; Mason [48 h]; Labor [48 h]; Epoxy for flooring [3.07] | 63,945 |  | SP02 | TR04 | SP&MR | MS#02 | CON | HD |
| CP09-TR4-SW-1600 |  | Backfilling | 5d | 2026-04-24 A | 2026-04-28 A | CP09-TR4-SW-1590 | 100% |  | 2026-04-26 | 2026-04-30 |  |  | Cost [38367.1]; Labor [87 h]; Backfilling [145 M3] | 38,367 |  | SP02 | TR04 | SP&MR | MS#02 | CON | HD |
| CP09-TR4-SW-1720 |  | Metal Works | 5d | 2026-06-07 | 2026-06-11 | CP09-TR4-SW-1700 |  |  |  |  | -113d | 136.06d | Cost [102312]; Metals for MR | 102,312 |  | SP02 | TR04 | SP&MR | MS#02 | CON | HD |
| CP09-TR4-SW-1610 |  | Drainage Gravel including Geotextile & Geocomposit | 3.75d | 2026-06-24 | 2026-06-28 | CP09-TR4-SW-1700, CP09-PR-CV-DY-1090, CP09-PR-CV-DY-1100 |  |  |  |  | -126.75d | 122.31d | Cost [51156.2]; Drainage Gravel | 51,156 |  | SP02 | TR04 | SP&MR | MS#02 | CON | HD |

| ID | WBS | Activity | Duration | Start | Finish | Predecessors | Complete | Remaining | Planned start | Planned finish | Total float | Free float | Resources | Cost | Actual cost | Swimming Pool | CP09_Terrace-7 | CP09-Trade | CP09_Milestone-7 | CP09_Discipline-7 | DES | Walls |
| --- | --- | --- | --- | --- | --- | --- | --- | --- | --- | --- | --- | --- | --- | --- | --- | --- | --- | --- | --- | --- | --- | --- |
|  | 2 | **MEP Works for Swimmimg Pool & Machine Room** |  | 2025-09-30 | 2026-07-20 |  |  |  |  |  |  |  |  |  |  |  |  |  |  |  |  |  |
|  | 1 | **Mechnical Works** |  | 2025-09-30 | 2026-07-05 |  |  |  |  |  |  |  |  |  |  |  |  |  |  |  |  |  |
| CP09-TR4-SW-1620 |  | UPVC pipes, fitting, valves, | 10d | 2025-09-30 A | 2026-06-17 | CP09-TR4-SW-1690, CP09-EN-TR4-A-1450, CP09-PR-ME-DY-1000, CP09-PR-ME-DY-1010 | 60% | 10d | 2025-08-11 | 2025-08-21 | -156d | 0d | Cost [710030]; Labor [48 h] | 710,029.67 | 284,012 | SP02 | TR04 | SP&MR | MS#02 | CON | HD |  |
| CP09-TR4-SW-1630 |  | Mechnical Equipment (Valves, Pumps, Filtters, Controllers ,Dosinng,& Ventilation exahust fan) | 15d | 2026-06-18 | 2026-07-05 | CP09-TR4-SW-1700, CP09-TR4-SW-1620, CP09-EN-TR4-A-1450, CP09-PR-ME-DY-1020, CP09-PR-ME-DY-1030, CP09-PR-ME-DY-1040, CP09-PR-ME-DY-1050, CP09-PR-ME-DY-1060, CP09-PR-ME-DY-1070, CP09-PR-ME-DY-1080 |  |  |  |  | -156d | 12.06d | Cost [2068538]; Labor [48 h] | 2,068,538 |  | SP02 | TR04 | SP&MR | MS#02 | CON | HD |  |
|  | 2 | **Electrical Works-SW** |  | 2026-06-24 | 2026-07-20 |  |  |  |  |  |  |  |  |  |  |  |  |  |  |  |  |  |
| CP09-TR4-SW-1640 |  | Conduits, Cable tray | 5d | 2026-06-24 | 2026-06-30 | CP09-TR4-SW-1690, CP09-EN-TR4-A-1460, CP09-PR-EL-DY-1000, CP09-PR-EL-DY-1010 |  |  |  |  | -168.06d | 0d | Cost [174464]; Labor [48 h] | 174,464 |  | SP02 | TR04 | SP&MR | MS#02 | CON | HD |  |
| CP09-TR4-SW-1650 |  | Panel boards | 5d | 2026-06-30 | 2026-07-06 | CP09-TR4-SW-1640, CP09-TR4-SW-1700, CP09-EN-TR4-A-1460, CP09-PR-EL-DY-1020 |  |  |  |  | -168.06d | 0d | Cost [624381]; Labor [48 h] | 624,381 |  | SP02 | TR04 | SP&MR | MS#02 | CON | HD |  |
| CP09-TR4-SW-1660 |  | Power Cables & Wires | 5d | 2026-07-06 | 2026-07-12 | CP09-TR4-SW-1650, CP09-TR4-SW-1640, CP09-EN-TR4-A-1460, CP09-PR-EL-DY-1030 |  |  |  |  | -168.06d | 0d | Cost [8133]; Labor [48 h] | 8,133 |  | SP02 | TR04 | SP&MR | MS#02 | CON | HD |  |
| CP09-TR4-SW-1680 |  | Earthing System | 5d | 2026-07-06 | 2026-07-12 | CP09-TR4-SW-1660 SS, CP09-PR-EL-DY-1040 |  |  |  |  | -138.06d | 111d | Cost [52517.6]; Labor [48 h] | 52,518 |  | SP02 | TR04 | SP&MR | MS#02 | CON | HD |  |
| CP09-TR4-SW-1670 |  | (Lighting Outlets , Switches, Fixture ) | 7d | 2026-07-12 | 2026-07-20 | CP09-TR4-SW-1640, CP09-TR4-SW-1660, CP09-TR4-SW-1650, CP09-PR-EL-DY-1050, CP09-PR-EL-DY-1140 |  |  |  |  | -168.06d | 0d | Cost [494031]; Labor [48 h] | 494,031 |  | SP02 | TR04 | SP&MR | MS#02 | CON | HD |  |
|  | 6 | **Earth Work** |  | 2025-09-24 | 2026-02-26 |  |  |  |  |  |  |  |  |  |  |  |  |  |  |  |  |  |
|  | 1 | **Grading works** |  | 2025-09-24 | 2026-02-26 |  |  |  |  |  |  |  |  |  |  |  |  |  |  |  |  |  |
| CP09-TR4-EW-1030 |  | Excavation work to Reduce Level | 6d | 2025-09-24 A | 2026-02-26 A | CP09-TR4-SW-1520 SS, CP09-EN-TR4-A-1470, CP09-CLD-1000 | 100% |  | 2025-04-13 | 2025-04-19 |  |  | Cost; EXCAVATOR; LOADER; TRUCK; Labor [48 h]; Excavation |  |  |  | TR04 | E-W | MS#02 | CON | HD |  |
| CP09-TR4-EW-1040 |  | Filling works to make up levels with Compacting | 6d | 2025-09-30 A | 2026-02-26 A | CP09-TR4-SW-1520, CP09-TR4-EW-1030 SS+4.69d, CP09-EN-TR4-A-1470 | 100% |  | 2025-04-17 | 2025-04-26 |  |  | Cost; Labor [48 h]; Filling |  |  |  | TR04 | E-W | MS#02 | CON | HD |  |
|  | 2 | **Planting** |  | 2025-09-30 | 2026-02-26 |  |  |  |  |  |  |  |  |  |  |  |  |  |  |  |  |  |
| CP09-TR4-EW-1050 |  | Excavation works for Planting Beds | 6d | 2025-09-30 A | 2026-02-26 A | CP09-TR4-EW-1030 SS, CP09-TR4-EW-1040 SS, CP09-EN-TR4-A-1470 | 100% |  | 2025-04-17 | 2025-04-26 |  |  | Cost [915350]; EXCAVATOR [4544 h]; LOADER [5456 h]; TRUCK [5456 h]; Labor [280 h]; Excavation [5681.88 M3] | 915,350.06 | 686,512.5 |  | TR04 | E-W | MS#02 | CON | HD |  |
|  | 9 | **Retaining & Cheek Walls** |  | 2025-09-24 | 2026-07-07 |  |  |  |  |  |  |  |  |  |  |  |  |  |  |  |  |  |
|  | 1 | **Soild Block Work Cheek Walls** |  | 2026-02-16 | 2026-07-07 |  |  |  |  |  |  |  |  |  |  |  |  |  |  |  |  |  |
| CP09-TR4-RW-1230 |  | Plaing Concrete with HPDE | 4.69d | 2026-02-16 A | 2026-04-10 A | CP09-TR4-RW-1280 SS+2.81d, CP09-TR4-RW-1280 FF+2.81d, CP09-EN-TR4-A-1480 | 100% |  | 2024-12-19 | 2024-12-24 |  |  | Cost [25885]; Mason [27 h]; Labor [48 h]; Plain Concrete [38.81 M3]; HDPE | 25,884.99 | 22,002.25 |  | TR04 | RE&CW | MS#02 | CON | HD | CHW |
| CP09-TR4-RW-1240 |  | Reinforced Concrete for Footing | 6.56d | 2026-02-16 A | 2026-04-10 A | CP09-TR4-RW-1230 SS+2.81d, CP09-TR4-RW-1230 FF+2.81d, CP09-EN-TR4-A-1490, CP09-EN-TR4-A-1480 | 100% |  | 2024-12-29 | 2025-01-06 |  |  | Cost [194137]; Mason [48 h]; Steel Fixer [45 h]; Shutter [48 h]; Labor [48 h]; Reinforced Concrete [12.94 M3] | 194,137.42 | 126,150.22 |  | TR04 | RE&CW | MS#02 | CON | HD | CHW |
| CP09-TR4-RW-1250 |  | Reinforced Concrete for Tie beam | 4.69d | 2026-02-22 A | 2026-04-10 A | CP09-TR4-RW-1240 SS+2.81d, CP09-TR4-RW-1240 FF+2.81d | 100% |  | 2025-03-13 | 2025-03-20 |  |  | Cost [32356.2]; Mason [48 h]; Steel Fixer [48 h]; Shutter [48 h]; Labor [48 h]; Reinforced Concrete | 32,356.24 | 21,024.93 |  | TR04 | RE&CW | MS#02 | CON | HD | CHW |
| CP09-TR4-RW-1260 |  | Reinforced Concrete for Column | 5.62d | 2026-02-22 A | 2026-04-10 A | CP09-TR4-RW-1250 SS+2.81d, CP09-TR4-RW-1250 FF+2.81d | 100% |  | 2025-03-18 | 2025-03-26 |  |  | Cost [32356.2]; Mason [48 h]; Steel Fixer [48 h]; Shutter [48 h]; Labor [48 h]; Reinforced Concrete | 32,356.24 | 21,031.4 |  | TR04 | RE&CW | MS#02 | CON | HD | CHW |
| CP09-TR4-RW-1270 |  | Soild Block Work | 5.62d | 2026-02-22 A | 2026-04-10 A | CP09-TR4-RW-1260 SS+5.62d, CP09-TR4-RW-1260 FF+5.62d, CP09-EN-TR4-A-1510, CP09-PR-CV-DY-1020 | 100% |  | 2025-05-05 | 2025-05-12 |  |  | Cost [64712.5]; Mason [38 h]; Labor [48 h]; Blocks [10.35] | 64,712.47 | 25,884.8 |  | TR04 | RE&CW | MS#02 | CON | HD | CHW |
| CP09-TR4-RW-1280 |  | Excavation | 7d | 2026-02-22 A | 2026-04-10 A | CP09-TR4-EW-1030, CP09-TR4-EW-1040 | 100% |  | 2024-11-19 | 2024-11-27 |  |  | Cost [19413.7]; EXCAVATOR [48 h]; LOADER [56 h]; TRUCK [56 h]; Labor [31 h]; Excavation [60.55 M3] | 19,413.74 | 16,501.9 |  | TR04 | RE&CW | MS#02 | CON | HD | CHW |
| CP09-TR4-RW-1290 |  | Reinforced Concrete for beam | 7.5d | 2026-02-22 A | 2026-04-10 A | CP09-TR4-RW-1270 SS+3.75d, CP09-TR4-RW-1270 FF+3.75d | 100% |  | 2025-05-10 | 2025-05-18 |  |  | Cost [64712.5]; Mason [48 h]; Steel Fixer [207 h]; Shutter [17 h]; Labor [48 h]; Reinforced Concrete [4.14 M3] | 64,712.47 | 25,884.8 |  | TR04 | RE&CW | MS#02 | CON | HD | CHW |
| CP09-TR4-RW-1300 |  | Waterproofing & Protection | 6.56d | 2026-04-06 A | 2026-04-10 A | CP09-TR4-RW-1290 SS+7.5d, CP09-TR4-RW-1290 FF+7.5d, CP09-EN-TR4-A-1500 | 100% |  | 2026-04-26 | 2026-05-04 |  |  | Cost [25885]; Mason [10.08 h]; Labor [48 h]; Waterproofing [14.49 M2] | 25,885 |  |  | TR04 | RE&CW | MS#02 | CON | HD | CHW |
| CP09-TR4-RW-1310 |  | Backfilling | 5.62d | 2026-04-06 A | 2026-04-10 A | CP09-TR4-RW-1300 SS+2.81d, CP09-TR4-RW-1300 FF+2.81d | 100% |  | 2026-04-30 | 2026-05-06 |  |  | Cost [25885]; Labor [25 h]; Backfilling [41.14 M3] | 25,885 |  |  | TR04 | RE&CW | MS#02 | CON | HD | CHW |
| CP09-TR4-RW-1320 |  | Marble Cladding | 10d | 2026-06-21 | 2026-07-01 | CP09-TR4-RW-1310 SS+5.62d, CP09-TR4-RW-1310 FF+5.62d, CP09-EN-TR4-A-1520, CP09-PR-CV-DY-1120 |  |  |  |  | -204.94d | 0d | Cost [129425]; Mason [88 h]; Labor [48 h]; Marble [31.05] | 129,425 |  |  | TR04 | RE&CW | MS#02 | CON | HD | CHW |
| CP09-TR4-RW-1330 |  | Marble Copping | 10d | 2026-06-25 | 2026-07-07 | CP09-TR4-RW-1320 SS+4.69d, CP09-TR4-RW-1320 FF+4.69d, CP09-EN-TR4-A-1520, CP09-PR-CV-DY-1120 |  |  |  |  | -204.94d | 0d | Cost [32356.2]; Mason [160 h]; Labor [48 h]; Marble Coping [25.88] | 32,356 |  |  | TR04 | RE&CW | MS#02 | CON | HD | CHW |

| ID | WBS | Activity | Duration | Start | Finish | Predecessors | Complete | Remaining | Planned start | Planned finish | Total float | Free float | Resources | Cost | Actual cost | Walls | CP09_Terrace-7 | CP09-Trade | CP09_Milestone-7 | CP09_Discipline-7 | DES | Networks |
| --- | --- | --- | --- | --- | --- | --- | --- | --- | --- | --- | --- | --- | --- | --- | --- | --- | --- | --- | --- | --- | --- | --- |
|  | 2 | **Solid Block Retaining Walls** |  | 2025-09-24 | 2026-07-07 |  |  |  |  |  |  |  |  |  |  |  |  |  |  |  |  |  |
| CP09-TR4-RW-1350 |  | Reinforced Concrete for Footing | 6d | 2025-09-24 A | 2026-01-09 A | CP09-TR4-RW-1340 SS+2.81d, CP09-TR4-RW-1340 FF+2.81d, CP09-EN-TR4-A-1480, CP09-EN-TR4-A-1490 | 100% |  | 2024-12-29 | 2025-01-05 |  |  | Cost [59932.2]; Mason [48 h]; Steel Fixer [45 h]; Shutter [48 h]; Labor [48 h]; Reinforced Concrete [12.94 M3] | 59,932.18 | 59,932 | RW | TR04 | RE&CW | MS#02 | CON | HD |  |
| CP09-TR4-RW-1340 |  | Plaing Concrete with HPDE | 5d | 2025-09-30 A | 2025-10-04 A | CP09-TR4-RW-1390 SS+2.81d, CP09-TR4-RW-1390 FF+2.81d, CP09-EN-TR4-A-1480 | 100% |  | 2024-12-22 | 2024-12-28 |  |  | Cost [7990.96]; Mason [27 h]; Labor [48 h]; Plain Concrete [38.81 M3]; HDPE | 7,990.96 | 7,991 | RW | TR04 | RE&CW | MS#02 | CON | HD |  |
| CP09-TR4-RW-1360 |  | Reinforced Concrete for Tie beam | 5d | 2025-09-30 A | 2026-01-09 A | CP09-TR4-RW-1350 SS+2.81d, CP09-TR4-RW-1350 FF+2.81d | 100% |  | 2025-03-13 | 2025-03-22 |  |  | Cost [9988.7]; Mason [48 h]; Steel Fixer [48 h]; Shutter [48 h]; Labor [48 h]; Reinforced Concrete | 9,988.7 | 9,989 | RW | TR04 | RE&CW | MS#02 | CON | HD |  |
| CP09-TR4-RW-1370 |  | Reinforced Concrete for Column | 5.62d | 2025-09-30 A | 2026-01-09 A | CP09-TR4-RW-1360 SS+2.81d, CP09-TR4-RW-1360 FF+2.81d | 100% |  | 2025-03-18 | 2025-03-26 |  |  | Cost [9988.7]; Mason [48 h]; Steel Fixer [48 h]; Shutter [48 h]; Labor [48 h]; Reinforced Concrete | 9,988.7 | 9,989 | RW | TR04 | RE&CW | MS#02 | CON | HD |  |
| CP09-TR4-RW-1380 |  | Soild Block Work | 5.62d | 2025-09-30 A | 2025-10-04 A | CP09-TR4-RW-1370 SS+5.62d, CP09-TR4-RW-1370 FF+5.62d, CP09-EN-TR4-A-1510 | 100% |  | 2025-05-06 | 2025-05-12 |  |  | Cost [19977.4]; Mason [38 h]; Labor [48 h]; Blocks [10.35] | 19,977.39 | 19,977 | RW | TR04 | RE&CW | MS#02 | CON | HD |  |
| CP09-TR4-RW-1390 |  | Excavation | 3.75d | 2025-09-30 A | 2025-10-17 A | CP09-TR4-RW-1280, CP09-TR4-EW-1030, CP09-TR4-EW-1040 | 100% |  | 2024-11-27 | 2024-12-02 |  |  | Cost [5993.22]; EXCAVATOR [48 h]; LOADER [56 h]; TRUCK [56 h]; Labor [48 h]; Excavation [60.55 M3] | 5,993.22 | 5,993 | RW | TR04 | RE&CW | MS#02 | CON | HD |  |
| CP09-TR4-RW-1400 |  | Reinforced Concrete for Beam | 7d | 2025-09-30 A | 2026-01-09 A | CP09-TR4-RW-1380 SS+3.75d, CP09-TR4-RW-1380 FF+3.75d | 100% |  | 2025-05-10 | 2025-05-18 |  |  | Cost [19977.4]; Mason [280 h]; Steel Fixer [207 h]; Shutter [17 h]; Labor [48 h]; Reinforced Concrete [4.14 M3] | 19,977.39 | 19,977 | RW | TR04 | RE&CW | MS#02 | CON | HD |  |
| CP09-TR4-RW-1410 |  | Waterproofing & Protection | 6.56d | 2026-02-16 A | 2026-04-10 A | CP09-TR4-RW-1400 SS+7.5d, CP09-TR4-RW-1400 FF+7.5d | 100% |  | 2025-10-25 | 2025-11-01 |  |  | Cost [7990.96]; Mason [10.08 h]; Labor [48 h]; Waterproofing [14.49 M2] | 7,990.96 | 5,593.7 | RW | TR04 | RE&CW | MS#02 | CON | HD |  |
| CP09-TR4-RW-1420 |  | Backfilling | 5.62d | 2026-04-06 A | 2026-04-10 A | CP09-TR4-RW-1410 SS+2.81d, CP09-TR4-RW-1410 FF+2.81d | 100% |  | 2026-04-04 | 2026-04-11 |  |  | Cost [7990.96]; Labor [25 h]; Backfilling [41.14 M3] | 7,991 |  | RW | TR04 | RE&CW | MS#02 | CON | HD |  |
| CP09-TR4-RW-1430 |  | Marble Cladding | 10d | 2026-06-21 | 2026-07-01 | CP09-TR4-RW-1420 SS+4.69d, CP09-TR4-RW-1420 FF+4.69d, CP09-EN-TR4-A-1520, CP09-PR-CV-DY-1120 |  |  |  |  | -204.94d | 0d | Cost [39954.8]; Mason [88 h]; Labor [48 h]; Marble [31.05] | 39,955 |  | RW | TR04 | RE&CW | MS#02 | CON | HD |  |
| CP09-TR4-RW-1440 |  | Marble Copping | 10d | 2026-06-25 | 2026-07-07 | CP09-TR4-RW-1430 SS+4.69d, CP09-TR4-RW-1430 FF+4.69d, CP09-EN-TR4-A-1520, CP09-PR-CV-DY-1120 |  |  |  |  | -204.94d | 0d | Cost [9988.7]; Mason [160 h]; Labor [48 h]; Marble Coping [25.88] | 9,989 |  | RW | TR04 | RE&CW | MS#02 | CON | HD |  |
|  | 1 | **Irrigation Works** |  | 2026-02-22 | 2026-06-21 |  |  |  |  |  |  |  |  |  |  |  |  |  |  |  |  |  |
|  | 1 | **Sub-Main & Lateral** |  | 2026-02-22 | 2026-06-21 |  |  |  |  |  |  |  |  |  |  |  |  |  |  |  |  |  |
| CP09-TR4-IR-1110 |  | Excavation for Sub-main & Lateral Pieps | 4d | 2026-02-22 A | 2026-06-10 | CP09-EN-TR4-A-1710, CP09-TR4-HD-2380 | 90% | 4d | 2025-11-27 | 2025-12-02 | -198.75d | 0d | Cost [484535]; EXCAVATOR [4784 h]; LOADER [5744 h]; TRUCK [5744 h]; Excavation [7977.8 M3] | 484,535.36 | 96,907 |  | TR04 | IRR-W | MS#02 | CON | SO | IRR |
| CP09-TR4-IR-1120 |  | Sub-main & Lateral Pieps laying out and installation | 5d | 2026-02-22 A | 2026-06-16 | CP09-TR4-IR-1110 SS+2d, CP09-TR4-IR-1110 FF+5d, CP09-PR-IR-DY-1000 | 90% | 5d | 2025-12-02 | 2025-12-08 | -198.75d | 0d | Cost [872164]; PipeFitter [280 h]; Labor [48 h]; UPVC Pipes [7977.8 M] | 872,163.65 | 174,432.8 |  | TR04 | IRR-W | MS#02 | CON | SO | IRR |
| CP09-TR4-IR-1130 |  | Sub-main & Lateral Pieps Testing | 3d | 2026-02-22 A | 2026-06-18 | CP09-TR4-IR-1120 SS+2d, CP09-TR4-IR-1120 FF+2d | 90% | 3d | 2025-12-07 | 2025-12-10 | -198.75d | 0d | Cost [96907.1] | 96,907.07 | 19,381.4 |  | TR04 | IRR-W | MS#02 | CON | SO | IRR |
| CP09-TR4-IR-1140 |  | Backfilling forSub-main & Lateral Pieps | 4d | 2026-02-22 A | 2026-06-21 | CP09-TR4-IR-1130 SS+2d, CP09-TR4-IR-1130 FF+2d | 90% | 4d | 2025-12-09 | 2025-12-14 | -198.75d | 0d | Cost [484535]; Labor [48 h]; Backfilling [7977.8 M3] | 484,535.36 | 96,907 |  | TR04 | IRR-W | MS#02 | CON | SO | IRR |
|  | 2 | **Fittings & Accessories** |  | 2026-05-18 | 2026-06-20 |  |  |  |  |  |  |  |  |  |  |  |  |  |  |  |  |  |
| CP09-TR4-IR-1150 |  | Installation of Dripline | 6d | 2026-05-18 A | 2026-06-13 | CP09-TR4-IR-1130, CP09-TR4-SF-1170, CP09-PR-IR-DY-1010 | 15% | 6d | 2026-05-30 | 2026-06-04 | -143d | 67.94d | Cost [789420]; Labor [280 h]; Dripline [29500 Nos_] | 789,420 |  |  | TR04 | IRR-W | MS#02 | CON | SO | IRR |
| CP09-TR4-IR-1200 |  | Installation of Controller decoder cables | 6d | 2026-05-18 A | 2026-06-13 | CP09-TR4-IR-1190, CP09-PR-IR-DY-1070 | 40% | 6d | 2026-06-13 | 2026-06-18 | -140d | 0d | Cost [198024]; Controller Cable [1850]; Labor [48 h] | 198,024 |  |  | TR04 | IRR-W | MS#02 | CON | SO | IRR |
| CP09-TR4-IR-1160 |  | Installation of Sprinklers | 5d | 2026-06-07 | 2026-06-11 | CP09-TR4-IR-1150 SS, CP09-PR-IR-DY-1040 |  |  |  |  | -143d | 0d | Cost [57038.3]; Labor [48 h]; Sprinkle [84.1 Nos_] | 57,038 |  |  | TR04 | IRR-W | MS#02 | CON | SO | IRR |
| CP09-TR4-IR-1170 |  | Installation Valves & Rings | 6d | 2026-06-07 | 2026-06-13 | CP09-TR4-IR-1160 SS, CP09-PR-IR-DY-1030, CP09-PR-IR-DY-1020 |  |  |  |  | -143d | 0d | Cost [208328]; Valves [715.1]; Labor [48 h] | 208,328 |  |  | TR04 | IRR-W | MS#02 | CON | SO | IRR |
| CP09-TR4-IR-1180 |  | Installation of Electrical solenoid valve | 6d | 2026-06-07 | 2026-06-13 | CP09-TR4-IR-1170 SS, CP09-PR-IR-DY-1050 |  |  |  |  | -143d | 0d | Cost [439801]; Solenoid valve [22.4]; Labor [48 h] | 439,801 |  |  | TR04 | IRR-W | MS#02 | CON | SO | IRR |
| CP09-TR4-IR-1190 |  | Installation of Controller (decoder system plastic pedestal) | 6d | 2026-06-14 | 2026-06-20 | CP09-TR4-IR-1170, CP09-TR4-IR-1180, CP09-PR-IR-DY-1060 |  |  |  |  | -143d | 61.94d | Cost [262719]; Controller [1]; Labor [48 h] | 262,719 |  |  | TR04 | IRR-W | MS#02 | CON | SO | IRR |
| CP09-TR4-IR-1210 |  | Installation of Decoder one station | 3d | 2026-06-14 | 2026-06-16 | CP09-TR4-IR-1200, CP09-PR-IR-DY-1080 |  |  |  |  | -140d | 64.94d | Cost [212404]; Decoder station [28.4]; Labor [48 h] | 212,404 |  |  | TR04 | IRR-W | MS#02 | CON | SO | IRR |

| ID | WBS | Activity | Duration | Start | Finish | Predecessors | Complete | Remaining | Planned start | Planned finish | Total float | Free float | Resources | Cost | Actual cost | Networks | CP09_Terrace-7 | CP09-Trade | CP09_Milestone-7 | CP09_Discipline-7 | DES | Hardscape |
| --- | --- | --- | --- | --- | --- | --- | --- | --- | --- | --- | --- | --- | --- | --- | --- | --- | --- | --- | --- | --- | --- | --- |
|  | 4 | **Electrical Works** |  | 2026-02-16 | 2026-07-14 |  |  |  |  |  |  |  |  |  |  |  |  |  |  |  |  |  |
|  | 1 | **Power Cable & Pillars** |  | 2026-02-16 | 2026-07-14 |  |  |  |  |  |  |  |  |  |  |  |  |  |  |  |  |  |
| CP09-TR4-EL-1040 |  | Excavation | 5d | 2026-02-16 A | 2026-04-28 A | CP09-TR4-EW-1030, CP09-TR4-EW-1040, CP09-TR4-IR-1140, CP09-EN-TR4-A-1670 | 100% |  | 2026-02-23 | 2026-02-28 |  |  | Cost [374565]; EXCAVATOR [3344 h]; LOADER [4016 h]; TRUCK [4016 h]; Excavation [6974.38 M3] | 374,565 |  | ELEC | TR04 | EL-W | MS#02 | CON | HD |  |
| CP09-TR4-EL-1050 |  | Installation of Power Cables | 4d | 2026-02-16 A | 2026-04-28 A | CP09-TR4-EL-1040 SS+2d, CP09-TR4-EL-1040 FF+2d, CP09-EN-TR4-A-1670, CP09-EN-TR4-A-1680, CP09-PR-EL-DY-1060 | 100% |  | 2026-02-26 | 2026-03-02 |  |  | Cost [898956]; Electrical Cable [6974.38]; Electrican [280 h]; Labor [48 h] | 898,956 |  | ELEC | TR04 | EL-W | MS#02 | CON | HD |  |
| CP09-TR4-EL-1060 |  | Backfilling for Power Cables | 4d | 2026-02-22 A | 2026-04-28 A | CP09-TR4-EL-1050 SS+2d, CP09-TR4-EL-1050 FF+2d | 100% |  | 2026-03-01 | 2026-03-04 |  |  | Cost [224739]; Backfilling [6974.38 M3] | 224,739 |  | ELEC | TR04 | EL-W | MS#02 | CON | HD |  |
| CP09-TR4-EL-1070 |  | Installation of Connecting Pillars | 3d | 2026-07-12 | 2026-07-14 | CP09-TR4-HD-2130, CP09-PR-EL-DY-1070 |  |  |  |  | -164d | 5.44d | Cost [428687]; Pillars [3]; Electrican [48 h]; Labor [48 h] | 428,687 |  | ELEC | TR04 | EL-W | MS#02 | CON | HD |  |
|  | 3 | **Hardscape** |  | 2026-01-05 | 2026-07-21 |  |  |  |  |  |  |  |  |  |  |  |  |  |  |  |  |  |
|  | 6 | **Concrete Curb** |  | 2026-01-05 | 2026-06-09 |  |  |  |  |  |  |  |  |  |  |  |  |  |  |  |  |  |
| CP09-TR4-HD-2080 |  | Excavation | 2d | 2026-01-05 A | 2026-01-29 A | CP09-TR4-EW-1030, CP09-TR4-EW-1040, CP09-TR4-EW-1050 | 100% |  | 2026-01-03 | 2026-01-05 |  |  | Cost [158617]; EXCAVATOR [312 h]; LOADER [368 h]; TRUCK [368 h]; Excavation [384.51 M3] | 158,616.78 | 126,893.6 |  | TR04 | HS | MS#02 | CON | HD | CURB |
| CP09-TR4-HD-2090 |  | Plains Concrete with HDPE waterproofing | 2d | 2026-01-05 A | 2026-01-29 A | CP09-TR4-HD-2080, CP09-EN-TR4-A-1600 | 100% |  | 2026-01-05 | 2026-01-07 |  |  | Cost [475850]; Plain Concrete [1121.49 M3]; HDPE | 475,850.35 | 380,680 |  | TR04 | HS | MS#02 | CON | HD | CURB |
| CP09-TR4-HD-2360 |  | Under Paving Reinforced Concrete Curb | 4d | 2026-01-05 A | 2026-01-29 A | CP09-TR4-HD-2090 SS+1.88d, CP09-TR4-HD-2090 FF+1.88d | 100% |  | 2026-01-06 | 2026-01-11 |  |  | Cost [951701]; Mason [144 h]; Steel Fixer [269 h]; Shutter [513 h]; Labor [48 h]; Reinforced Concrete [128.17 M3] | 951,700.7 | 761,360.8 |  | TR04 | HS | MS#02 | CON | HD | CURB |
| CP09-TR4-HD-2380 |  | Instal Flush Curb | 3d | 2026-06-07 | 2026-06-09 | CP09-EN-TR4-A-1600, CP09-PR-HD-DY-1080, CP09-TR4-HD-2360 SS+3d, CP09-TR4-HD-2360 FF+3d |  |  |  |  | -219.44d | 0d | Cost [116047]; Mason [160 h]; Labor [48 h]; Flush Curb [360.25] | 116,047 |  |  | TR04 | HS | MS#02 | CON | HD | CURB |
|  | 1 | **Side wake & Plazes** |  | 2026-01-12 | 2026-07-13 |  |  |  |  |  |  |  |  |  |  |  |  |  |  |  |  |  |
|  | 8 | **Interlocking Paving** |  | 2026-01-12 | 2026-02-20 |  |  |  |  |  |  |  |  |  |  |  |  |  |  |  |  |  |
| CP09-TR4-HD-2100 |  | Crush Stone for Interlock Types IL-(01,02,06,07) | 6.56d | 2026-01-12 A | 2026-02-20 A | CP09-EN-TR4-A-1610, CP09-TR4-EW-1030, CP09-TR4-EW-1040, CP09-TR4-IR-1140, CP09-TR4-EL-1060, CP09-PR-HD-DY-1090 | 100% |  | 2026-02-12 | 2026-02-19 |  |  | Cost [410521]; Mason [280 h]; Labor [48 h]; Crushed Stone [2325.12] | 410,520.86 | 205,260.5 |  | TR04 | HS | MS#02 | CON | HD | INTK |
| CP09-TR4-HD-2110 |  | Sand Layer for Interlock Types IL-(01,02,06,07) | 5.62d | 2026-01-12 A | 2026-02-20 A | CP09-TR4-HD-2100 SS+2.81d, CP09-TR4-HD-2100 FF+2.81d, CP09-EN-TR4-A-1610 | 100% |  | 2026-02-16 | 2026-02-23 |  |  | Cost [279178]; Mason [48 h]; Labor [280 h]; Clean sand [2321.5] | 279,178.42 | 139,589 |  | TR04 | HS | MS#02 | CON | HD | INTK |
| CP09-TR4-HD-2120 |  | Motar Bed Interlock Types IL-(03,04,08,09,10) | 5.62d | 2026-01-12 A | 2026-02-20 A | CP09-TR4-HD-2110 SS, CP09-EN-TR4-A-1610 | 100% |  | 2026-02-16 | 2026-02-23 |  |  | Cost [68357.3]; Mason [48 h]; Labor [48 h] | 68,357.32 | 68,357.32 |  | TR04 | HS | MS#02 | CON | HD | INTK |
| CP09-TR4-HD-2130 |  | Interlocking Paving | 7.5d | 2026-01-12 A | 2026-02-20 A | CP09-TR4-HD-2110 SS+2.81d, CP09-TR4-HD-2120 SS+2.81d, CP09-TR4-HD-2110 FF+2.81d, CP09-TR4-HD-2120 FF+2.81d, CP09-EN-TR4-A-1610, CP09-PR-HD-DY-1180 | 100% |  | 2026-02-19 | 2026-03-01 |  |  | Cost [521304]; Mason [280 h]; Labor [48 h]; Interlock [2966] | 521,303.61 | 260,652 |  | TR04 | HS | MS#02 | CON | HD | INTK |
|  | 2 | **Concrete in Situ** |  | 2026-02-16 | 2026-06-17 |  |  |  |  |  |  |  |  |  |  |  |  |  |  |  |  |  |
|  | 1 | **Slab on Garde** |  | 2026-02-16 | 2026-06-13 |  |  |  |  |  |  |  |  |  |  |  |  |  |  |  |  |  |
| CP09-TR4-HD-1870 |  | Plain Concrete with HDPE | 3.75d | 2026-02-16 A | 2026-06-10 | CP09-TR4-EW-1030, CP09-TR4-EW-1040, CP09-TR4-IR-1140, CP09-TR4-EL-1060, CP09-EN-TR4-A-1530 | 80% | 3.75d | 2026-03-02 | 2026-03-05 | -111.75d | 137.31d | Cost [577969]; Mason [280 h]; Labor [48 h]; Plain Concrete [3339.88 M3]; HDPE | 577,969 |  |  | TR04 | HS | MS#02 | CON | HD | CON |
| CP09-TR4-HD-1880 |  | Reinfored Concrete slab on grade | 5.62d | 2026-04-06 A | 2026-06-13 | CP09-TR4-HD-1870 | 80% | 5.62d | 2026-04-04 | 2026-04-11 | -113.62d | 135.44d | Cost [1444922]; Mason [48 h]; Steel Fixer [192 h]; Shutter [48 h]; Labor [48 h]; Reinforced Concrete [333.99 M3] | 1,444,922 |  |  | TR04 | HS | MS#02 | CON | HD | CON |
| CP09-TR4-HD-1890 |  | Waterproofing & Screed | 3.75d | 2026-04-06 A | 2026-06-10 | CP09-TR4-HD-1880 | 80% | 3.75d | 2026-04-11 | 2026-04-15 | -111.75d | 137.31d | Cost [288984]; Mason [280 h]; Labor [48 h]; Waterproofing [3339.88 M2] | 288,984 |  |  | TR04 | HS | MS#02 | CON | HD | CON |
|  | 2 | **Concrete In-situ w./Exposed Aggregate Finish** |  | 2026-04-13 | 2026-06-17 |  |  |  |  |  |  |  |  |  |  |  |  |  |  |  |  |  |
| CP09-TR4-HD-1900 |  | Concrete casting (including Joints & Wire Mish) | 9.38d | 2026-04-13 A | 2026-06-17 | CP09-TR4-HD-1890, CP09-TR4-HD-2380, CP09-EN-TR4-A-1530, CP09-PR-HD-DY-1000 | 80% | 9.38d | 2026-04-15 | 2026-04-27 | -117.38d | 131.69d | Cost [2600859]; Mason [280 h]; Labor [48 h]; Concrete /Exposed Aggregate [3339.88] | 2,600,859 |  |  | TR04 | HS | MS#02 | CON | HD | CON |
| CP09-TR4-HD-1910 |  | Finishing Concrete Surface | 5d | 2026-04-13 A | 2026-06-11 | CP09-TR4-HD-1900, CP09-TR4-RW-1320, CP09-TR4-RW-1330, CP09-TR4-RW-1430, CP09-TR4-RW-1440 | 80% | 5d | 2026-05-12 | 2026-05-18 | -175.75d | 4.56d | Cost [866953]; Mason [48 h]; Labor [48 h] | 866,953 |  |  | TR04 | HS | MS#02 | CON | HD | CON |

| ID | WBS | Activity | Duration | Start | Finish | Predecessors | Complete | Planned start | Planned finish | Total float | Free float | Resources | Cost | Hardscape | CP09_Terrace-7 | CP09-Trade | CP09_Milestone-7 | CP09_Discipline-7 | DES |
| --- | --- | --- | --- | --- | --- | --- | --- | --- | --- | --- | --- | --- | --- | --- | --- | --- | --- | --- | --- |
|  | 1 | **Marble Paving** |  | 2026-04-20 | 2026-04-28 |  |  |  |  |  |  |  |  |  |  |  |  |  |  |
|  | 1 | **Slab on Garde** |  | 2026-04-20 | 2026-04-28 |  |  |  |  |  |  |  |  |  |  |  |  |  |  |
| CP09-TR4-HD-1820 |  | Plain Concrete with HDPE | 3.75d | 2026-04-20 A | 2026-04-28 A | CP09-TR4-EW-1030, CP09-TR4-EW-1050, CP09-TR4-IR-1140, CP09-TR4-EL-1060, CP09-EN-TR4-A-1540 | 100% | 2026-05-04 | 2026-05-07 |  |  | Cost [173552]; Mason [160 h]; Labor [48 h]; Plain Concrete [808.88 M3]; HDPE | 173,552 | MRB | TR04 | HS | MS#02 | CON | HD |
| CP09-TR4-HD-1830 |  | Reinfored Concrete slab on grade | 5.62d | 2026-04-20 A | 2026-04-28 A | CP09-TR4-HD-1820 | 100% | 2026-05-07 | 2026-05-14 |  |  | Cost [416525]; Mason [48 h]; Steel Fixer [170 h]; Shutter [48 h]; Labor [48 h]; Reinforced Concrete [80.89 M3] | 416,525 | MRB | TR04 | HS | MS#02 | CON | HD |
| CP09-TR4-HD-1840 |  | Waterproofing & Screed | 5d | 2026-04-20 A | 2026-04-28 A | CP09-TR4-HD-1830 | 100% | 2026-05-14 | 2026-05-20 |  |  | Cost [104131]; Mason [160 h]; Labor [48 h]; Waterproofing [808.88 M2] | 104,131 | MRB | TR04 | HS | MS#02 | CON | HD |
|  | 2 | **Marble Tiles** |  | 2026-04-20 | 2026-04-28 |  |  |  |  |  |  |  |  |  |  |  |  |  |  |
| CP09-TR4-HD-1850 |  | Marble Fixiation | 7d | 2026-04-20 A | 2026-04-28 A | CP09-TR4-HD-1840, CP09-TR4-HD-2380, CP09-EN-TR4-A-1540, CP09-PR-HD-DY-1010 | 100% | 2026-05-20 | 2026-05-28 |  |  | Cost [2283133]; Mason [280 h]; Labor [48 h]; Marble [1120.38] | 2,283,133 | MRB | TR04 | HS | MS#02 | CON | HD |
| CP09-TR4-HD-1860 |  | Marble Surfcae Finishing | 4d | 2026-04-20 A | 2026-04-28 A | CP09-TR4-HD-1850, CP09-TR4-HD-1910 SS | 100% | 2026-05-28 | 2026-06-02 |  |  | Cost [402906]; Mason [48 h]; Labor [48 h] | 402,906 | MRB | TR04 | HS | MS#02 | CON | HD |
|  | 3 | **Wooden Floor Boards** |  | 2026-04-24 | 2026-06-22 |  |  |  |  |  |  |  |  |  |  |  |  |  |  |
|  | 1 | **Slab on Garde** |  | 2026-04-24 | 2026-05-15 |  |  |  |  |  |  |  |  |  |  |  |  |  |  |
| CP09-TR4-HD-1920 |  | Plain Concrete with HDPE | 2.81d | 2026-04-24 A | 2026-04-28 A | CP09-TR4-HD-1830, CP09-TR4-EW-1030, CP09-TR4-EW-1040, CP09-TR4-IR-1140, CP09-TR4-EL-1060, CP09-EN-TR4-A-1550 | 100% | 2026-05-11 | 2026-05-13 |  |  | Cost [116181]; Mason [160 h]; Labor [48 h]; Plain Concrete [395.25 M3]; HDPE | 116,181 | WPC | TR04 | HS | MS#02 | CON | HD |
| CP09-TR4-HD-1930 |  | Reinfored Concrete slab on grade | 5d | 2026-04-24 A | 2026-05-15 A | CP09-TR4-HD-1920 | 100% | 2026-05-13 | 2026-05-19 |  |  | Cost [278834]; Mason [48 h]; Steel Fixer [83 h]; Shutter [48 h]; Labor [48 h]; Reinforced Concrete [39.52 M3] | 278,834 | WPC | TR04 | HS | MS#02 | CON | HD |
| CP09-TR4-HD-1940 |  | Waterproofing & Screed | 2.81d | 2026-04-24 A | 2026-04-28 A | CP09-TR4-HD-1930 | 100% | 2026-05-19 | 2026-05-23 |  |  | Cost [69708.4]; Mason [160 h]; Labor [48 h]; Waterproofing [395.25 M2] | 69,708 | WPC | TR04 | HS | MS#02 | CON | HD |
|  | 2 | **Wood- Plastic Composit** |  | 2026-06-10 | 2026-06-22 |  |  |  |  |  |  |  |  |  |  |  |  |  |  |
| CP09-TR4-HD-1950 |  | WPC Installation | 6.56d | 2026-06-10 | 2026-06-17 | CP09-TR4-HD-1940, CP09-TR4-HD-2380, CP09-EN-TR4-A-1550, CP09-PR-HD-DY-1020 |  |  |  | -180.31d | 0d | Cost [1816040]; WPC [528] | 1,816,040 | WPC | TR04 | HS | MS#02 | CON | HD |
| CP09-TR4-HD-1960 |  | WPC surface finishing & Accessories | 3.75d | 2026-06-17 | 2026-06-22 | CP09-TR4-HD-1950, CP09-TR4-HD-1860, CP09-TR4-HD-1910 |  |  |  | -180.31d | 18.44d | Cost [454010] | 454,010 | WPC | TR04 | HS | MS#02 | CON | HD |
|  | 4 | **Gravel layer** |  | 2026-06-22 | 2026-07-06 |  |  |  |  |  |  |  |  |  |  |  |  |  |  |
|  | 1 | **Slab on Garde** |  | 2026-06-22 | 2026-06-28 |  |  |  |  |  |  |  |  |  |  |  |  |  |  |
| CP09-TR4-HD-1970 |  | Plain Concrete with HDPE | 2.81d | 2026-06-22 | 2026-06-24 | CP09-TR4-HD-1920, CP09-TR4-EW-1030, CP09-TR4-EW-1040, CP09-TR4-IR-1140, CP09-TR4-EL-1060, CP09-EN-TR4-A-1560 |  |  |  | -198.75d | 0d | Cost [7507.48]; Mason [90 h]; Labor [48 h]; Plain Concrete [128.88 M3]; HDPE | 7,507 | GRV | TR04 | HS | MS#02 | CON | HD |
| CP09-TR4-HD-1990 |  | Mortar bed | 2.81d | 2026-06-24 | 2026-06-28 | CP09-TR4-HD-1970 |  |  |  | -198.75d | 0d | Cost [7507.48]; Mason [48 h]; Labor [48 h] | 7,507 | GRV | TR04 | HS | MS#02 | CON | HD |
|  | 2 | **Gravel Layer, w./Earth Colors** |  | 2026-06-28 | 2026-07-06 |  |  |  |  |  |  |  |  |  |  |  |  |  |  |
| CP09-TR4-HD-2000 |  | Furnish & install Garvel Layer | 6.56d | 2026-06-28 | 2026-07-06 | CP09-TR4-HD-1990, CP09-TR4-HD-2380, CP09-EN-TR4-A-1560, CP09-PR-HD-DY-1030 |  |  |  | -198.75d | 0d | Cost [35034.9]; Mason [77 h]; Labor [48 h]; Gravel Layer [128.88] | 35,035 | GRV | TR04 | HS | MS#02 | CON | HD |
|  | 5 | **Crushed Stone** |  | 2026-06-22 | 2026-07-13 |  |  |  |  |  |  |  |  |  |  |  |  |  |  |
|  | 1 | **Slab on Garde** |  | 2026-06-22 | 2026-07-05 |  |  |  |  |  |  |  |  |  |  |  |  |  |  |
| CP09-TR4-HD-2010 |  | Geotextile membrane | 5d | 2026-06-22 | 2026-06-27 | CP09-TR4-HD-1920, CP09-TR4-EW-1030, CP09-TR4-EW-1040, CP09-TR4-IR-1140, CP09-TR4-EL-1060, CP09-EN-TR4-A-1570 |  |  |  | -192d | 0d | Cost [3164.14]; Mason [48 h]; Labor [4 h]; Geotextile Sheets [13.25] | 3,164 | CRST | TR04 | HS | MS#02 | CON | HD |
| CP09-TR4-HD-2030 |  | Gravel fix sheets | 7d | 2026-06-28 | 2026-07-05 | CP09-TR4-HD-2010 |  |  |  | -192d | 6.75d | Cost [3164.14]; Waterproofing | 3,164 | CRST | TR04 | HS | MS#02 | CON | HD |

| ID | WBS | Activity | Duration | Start | Finish | Predecessors | Complete | Remaining | Planned start | Planned finish | Total float | Free float | Resources | Cost | Hardscape | CP09_Terrace-7 | CP09-Trade | CP09_Milestone-7 | CP09_Discipline-7 | DES |
| --- | --- | --- | --- | --- | --- | --- | --- | --- | --- | --- | --- | --- | --- | --- | --- | --- | --- | --- | --- | --- |
|  | 2 | **Crushed Dolomite Stone** |  | 2026-07-06 | 2026-07-13 |  |  |  |  |  |  |  |  |  |  |  |  |  |  |  |
| CP09-TR4-HD-2040 |  | Furnish & Install Crushed Dolomite stone , w./ mixed colors | 6.56d | 2026-07-06 | 2026-07-13 | CP09-TR4-HD-2030 FF, CP09-TR4-HD-2030 SS, CP09-TR4-HD-2000, CP09-TR4-HD-2380, CP09-EN-TR4-A-1570, CP09-PR-HD-DY-1040 |  |  |  |  | -198.75d | 0d | Cost [14766]; Mason [37 h]; Labor [48 h]; Crushed Dolomite stone [13.25] | 14,766 | CRST | TR04 | HS | MS#02 | CON | HD |
|  | 6 | **Loose Gravel** |  | 2026-06-24 | 2026-07-01 |  |  |  |  |  |  |  |  |  |  |  |  |  |  |  |
|  | 2 | **Loose Gravel 50mm** |  | 2026-06-24 | 2026-07-01 |  |  |  |  |  |  |  |  |  |  |  |  |  |  |  |
| CP09-TR4-HD-2050 |  | Furnish & Install loose gravel w./earth colors. | 6.56d | 2026-06-24 | 2026-07-01 | CP09-TR4-HD-1930, CP09-TR4-HD-2380, CP09-TR4-IR-1140, CP09-TR4-EL-1060, CP09-EN-TR4-A-1580, CP09-PR-HD-DY-1050 |  |  |  |  | -188.56d | 10.19d | Cost [8429.21]; Mason [19 h]; Labor [48 h]; Loose gravel [31.38] | 8,429 | LGRV | TR04 | HS | MS#02 | CON | HD |
|  | 7 | **Clean Sand Layer** |  | 2026-04-24 | 2026-06-17 |  |  |  |  |  |  |  |  |  |  |  |  |  |  |  |
|  | 1 | **Kids & Fitness Area** |  | 2026-04-24 | 2026-06-17 |  |  |  |  |  |  |  |  |  |  |  |  |  |  |  |
| CP09-TR4-HD-2060 |  | Geotextile Sheets | 5d | 2026-04-24 A | 2026-06-11 | CP09-TR4-HD-1930, CP09-TR4-EW-1030, CP09-TR4-EW-1040, CP09-TR4-HD-2380, CP09-TR4-IR-1140, CP09-TR4-EL-1060, CP09-EN-TR4-A-1590 | 90% | 5d | 2026-05-19 | 2026-05-25 | -113d | 136.06d | Cost [65290.1]; Geotextile Sheets [1227.62] | 65,290 | SND | TR04 | HS | MS#02 | CON | HD |
| CP09-TR4-HD-2070 |  | Install Clean sand layer | 9.38d | 2026-04-24 A | 2026-06-17 | CP09-TR4-HD-2060, CP09-TR4-HD-2050, CP09-TR4-HD-2380, CP09-EN-TR4-A-1590, CP09-PR-HD-DY-1070 | 90% | 9.38d | 2026-05-27 | 2026-06-07 | -162.38d | 22.38d | Cost [261160]; Clean sand [1227.62] | 261,160 | SND | TR04 | HS | MS#02 | CON | HD |
|  | 2 | **Site Improvments** |  | 2026-04-20 | 2026-07-21 |  |  |  |  |  |  |  |  |  |  |  |  |  |  |  |
|  | 1 | **Marble Steps** |  | 2026-04-24 | 2026-07-13 |  |  |  |  |  |  |  |  |  |  |  |  |  |  |  |
| CP09-TR4-HD-2140 |  | Reinforecd Concrete Step. | 10d | 2026-04-24 A | 2026-04-28 A | CP09-TR4-RW-1310, CP09-TR4-RW-1420, CP09-TR4-EW-1030, CP09-TR4-EW-1040, CP09-EN-TR4-A-1620, CP09-TR4-IR-1140, CP09-TR4-EL-1060 | 100% |  | 2026-05-11 | 2026-05-21 |  |  | Cost [255883]; Mason [48 h]; Steel Fixer [48 h]; Shutter [48 h]; Labor [48 h]; Reinforced Concrete | 255,883 | STP | TR04 | HS | MS#02 | CON | HD |
| CP09-TR4-HD-2150 |  | Install Marble Blocks | 6.56d | 2026-06-07 | 2026-06-14 | CP09-TR4-HD-2140 SS+2.81d, CP09-TR4-HD-2140 FF+2.81d, CP09-PR-HD-DY-1100 |  |  |  |  | -179.19d | 20.12d | Cost [162834]; Marble Step [6.38] | 162,834 | STP | TR04 | HS | MS#02 | CON | HD |
| CP09-TR4-HD-2160 |  | Finishing Marble Surface | 5d | 2026-07-07 | 2026-07-13 | CP09-TR4-HD-2150, CP09-TR4-RW-1320, CP09-TR4-RW-1330, CP09-TR4-RW-1430, CP09-TR4-RW-1440 |  |  |  |  | -162.69d | 6.75d | Cost [46524.1] | 46,524 | STP | TR04 | HS | MS#02 | CON | HD |
|  | 2 | **Curvelinear Block Seat** |  | 2026-04-20 | 2026-07-14 |  |  |  |  |  |  |  |  |  |  |  |  |  |  |  |
| CP09-TR4-HD-2170 |  | Excavation | 5d | 2026-04-20 A | 2026-04-28 A | CP09-TR4-EW-1030, CP09-TR4-EW-1040, CP09-EN-TR4-A-1630, CP09-TR4-EL-1060 | 100% |  | 2026-04-29 | 2026-05-04 |  |  | Cost [9988.94]; EXCAVATOR [48 h]; LOADER [56 h]; TRUCK [56 h]; Excavation [59.96 M3] | 9,989 | SEAT | TR04 | HS | MS#02 | CON | HD |
| CP09-TR4-HD-2180 |  | Plaing Concrete with HPDE | 3.75d | 2026-04-20 A | 2026-04-28 A | CP09-TR4-HD-2170 | 100% |  | 2026-05-05 | 2026-05-09 |  |  | Cost [12486.2]; Mason [24 h]; Labor [48 h]; Plain Concrete [34.59 M3]; HDPE | 12,486 | SEAT | TR04 | HS | MS#02 | CON | HD |
| CP09-TR4-HD-2190 |  | Reinforced Concrete for Footing | 5.62d | 2026-04-20 A | 2026-04-28 A | CP09-TR4-HD-2180 | 100% |  | 2026-05-09 | 2026-05-16 |  |  | Cost [74917.1]; Mason [48 h]; Steel Fixer [31 h]; Shutter [48 h]; Labor [48 h]; Reinforced Concrete [8.84 M3] | 74,917 | SEAT | TR04 | HS | MS#02 | CON | HD |
| CP09-TR4-HD-2200 |  | Reinforced Concrete for beam | 5d | 2026-04-20 A | 2026-04-28 A | CP09-TR4-HD-2190 | 100% |  | 2026-05-16 | 2026-05-21 |  |  | Cost [24972.4]; Mason [5 h]; Steel Fixer [77 h]; Shutter [6 h]; Labor [48 h]; Reinforced Concrete [1.54 M3] | 24,972 | SEAT | TR04 | HS | MS#02 | CON | HD |
| CP09-TR4-HD-2210 |  | Waterproofing & Protection | 3.75d | 2026-04-20 A | 2026-04-28 A | CP09-TR4-HD-2200 | 100% |  | 2026-05-21 | 2026-05-26 |  |  | Cost [24972.4]; Waterproofing [9.22 M2] | 24,972 | SEAT | TR04 | HS | MS#02 | CON | HD |
| CP09-TR4-HD-2220 |  | Backfilling | 2.81d | 2026-04-20 A | 2026-04-28 A | CP09-TR4-HD-2210 | 100% |  | 2026-05-26 | 2026-05-28 |  |  | Cost [14983.4]; Backfilling [40.74 M3] | 14,983 | SEAT | TR04 | HS | MS#02 | CON | HD |
| CP09-TR4-HD-2230 |  | Marble Capping | 5.62d | 2026-07-07 | 2026-07-14 | CP09-TR4-RW-1430, CP09-TR4-RW-1440, CP09-TR4-RW-1320, CP09-TR4-RW-1330, CP09-TR4-HD-2220, CP09-PR-HD-DY-1110 |  |  |  |  | -204.94d | 0d | Cost [87403.2]; Mason [160 h]; Labor [48 h]; Marble Coping [25.62] | 87,403 | SEAT | TR04 | HS | MS#02 | CON | HD |
|  | 3 | **Pools Shower-02** |  | 2026-06-10 | 2026-07-21 |  |  |  |  |  |  |  |  |  |  |  |  |  |  |  |
| CP09-TR4-HD-2240 |  | Plain Concrete Basin | 2d | 2026-06-10 | 2026-06-11 | CP09-TR4-HD-2380, CP09-EN-TR4-A-1640, CP09-TR4-EL-1060 |  |  |  |  | -169.44d | 0d | Cost [5183.94]; Mason [5 h]; Labor [48 h]; Plain Concrete [7 M3] | 5,184 | PLSHW | TR04 | HS | MS#02 | CON | HD |
| CP09-TR4-HD-2250 |  | R.Concrete Basin | 3.75d | 2026-06-13 | 2026-06-16 | CP09-TR4-HD-2240 |  |  |  |  | -169.44d | 0d | Cost [20735.8]; Mason [48 h]; Steel Fixer [5 h]; Shutter [48 h]; Labor [48 h]; Reinforced Concrete [1.5 M3] | 20,736 | PLSHW | TR04 | HS | MS#02 | CON | HD |
| CP09-TR4-HD-2260 |  | Solid Block Work | 4d | 2026-06-16 | 2026-06-21 | CP09-TR4-HD-2250 |  |  |  |  | -169.44d | 0d | Cost [2073.57]; Mason [48 h]; Labor [48 h]; Blocks [0.25] | 2,074 | PLSHW | TR04 | HS | MS#02 | CON | HD |
| CP09-TR4-HD-2270 |  | Water Proofing | 2.81d | 2026-06-21 | 2026-06-24 | CP09-TR4-HD-2260 |  |  |  |  | -169.44d | 0d | Cost [2591.97]; Mason [5.04 h]; Labor [48 h] | 2,592 | PLSHW | TR04 | HS | MS#02 | CON | HD |
| CP09-TR4-HD-2280 |  | Backfilling | 2.81d | 2026-06-24 | 2026-06-28 | CP09-TR4-HD-2270 |  |  |  |  | -169.44d | 0d | Cost [1555.18]; Labor [2 h] | 1,555 | PLSHW | TR04 | HS | MS#02 | CON | HD |
| CP09-TR4-HD-2290 |  | Mica Stone Cladding | 2.81d | 2026-06-28 | 2026-07-01 | CP09-TR4-HD-2280, CP09-PR-HD-DY-1120 |  |  |  |  | -169.44d | 0d | Cost [20735.8]; Mason [11 h]; Labor [48 h] | 20,736 | PLSHW | TR04 | HS | MS#02 | CON | HD |
| CP09-TR4-HD-2300 |  | Mica Stone Capping | 1.88d | 2026-07-01 | 2026-07-04 | CP09-TR4-HD-2290, CP09-PR-HD-DY-1120 |  |  |  |  | -169.44d | 0d | Cost [2073.57]; Mason [1 h]; Labor [48 h] | 2,074 | PLSHW | TR04 | HS | MS#02 | CON | HD |
| CP09-TR4-HD-2310 |  | Drainage Cover with Geotextile | 2.81d | 2026-07-04 | 2026-07-06 | CP09-TR4-HD-2300, CP09-PR-HD-DY-1060 |  |  |  |  | -169.44d | 0d | Cost [12441.5] | 12,441 | PLSHW | TR04 | HS | MS#02 | CON | HD |
| CP09-TR4-HD-2320 |  | Blast stone blocks for Flooring | 3d | 2026-07-06 | 2026-07-09 | CP09-TR4-HD-2310, CP09-PR-HD-DY-1130 |  |  |  |  | -169.44d | 0d | Cost [15551.8]; Mason [9 h]; Labor [48 h] | 15,552 | PLSHW | TR04 | HS | MS#02 | CON | HD |
| CP09-TR4-HD-2330 |  | Blast Stone Blocks Capping | 3d | 2026-07-09 | 2026-07-13 | CP09-TR4-HD-2320, CP09-PR-HD-DY-1130 |  |  |  |  | -169.44d | 0d | Cost [5183.94]; Mason [16 h]; Labor [48 h] | 5,184 | PLSHW | TR04 | HS | MS#02 | CON | HD |
| CP09-TR4-HD-2340 |  | Loose Rounded Pebbles | 3.75d | 2026-07-13 | 2026-07-18 | CP09-TR4-HD-2330, CP09-PR-HD-DY-1140 |  |  |  |  | -169.44d | 0d | Cost [5183.94]; Mason [48 h]; Labor [48 h] | 5,184 | PLSHW | TR04 | HS | MS#02 | CON | HD |
| CP09-TR4-HD-2350 |  | Shower Head Fixation | 2.81d | 2026-07-18 | 2026-07-21 | CP09-TR4-HD-2340, CP09-TR4-HD-2320, CP09-TR4-HD-2330, CP09-PR-HD-DY-1150 |  |  |  |  | -169.44d | 0d | Cost [10367.9] | 10,368 | PLSHW | TR04 | HS | MS#02 | CON | HD |

| ID | WBS | Activity | Duration | Start | Finish | Predecessors | Complete | Planned start | Planned finish | Total float | Free float | Resources | Cost | Hardscape | CP09_Terrace-7 | CP09-Trade | CP09_Milestone-7 | CP09_Discipline-7 | DES | Softscape |
| --- | --- | --- | --- | --- | --- | --- | --- | --- | --- | --- | --- | --- | --- | --- | --- | --- | --- | --- | --- | --- |
|  | 4 | **Handrails** |  | 2026-07-14 | 2026-07-20 |  |  |  |  |  |  |  |  |  |  |  |  |  |  |  |
| CP09-TR4-HD-2390 |  | Install & Fix Stainless Handrail (500 mm height) | 5.62d | 2026-07-14 | 2026-07-20 | CP09-TR4-HD-2150, CP09-TR4-HD-2230, CP09-EN-TR4-A-1650, CP09-PR-HD-DY-1160 |  |  |  | -204.94d | 0d | Cost [131128]; Labor [51 h]; Stanless Steel Handrial [25.62] | 131,128 | HND | TR04 | HS | MS#02 | CON | HD |  |
| CP09-TR4-HD-2400 |  | Install & Fix Glass Handrail (900mm height) | 5.62d | 2026-07-14 | 2026-07-20 | CP09-TR4-HD-2150, CP09-TR4-HD-2230, CP09-EN-TR4-A-1650, CP09-PR-HD-DY-1170 |  |  |  | -204.94d | 0d | Cost [44178.5]; Glass Handrail [3.5]; Labor [7 h] | 44,179 | HND | TR04 | HS | MS#02 | CON | HD |  |
|  | 7 | **Sinage** |  | 2026-03-02 | 2026-06-17 |  |  |  |  |  |  |  |  |  |  |  |  |  |  |  |
| CP09-TR4-SN-2520 |  | Excavation | 10d | 2026-03-02 A | 2026-04-28 A | CP09-TR4-HD-2130, CP09-EN-TR4-A-1690 | 100% | 2026-02-28 | 2026-03-10 |  |  | Cost [21369.8]; EXCAVATOR [72 h]; LOADER [88 h]; TRUCK [88 h]; Excavation [92.06 M3] | 21,370 | SING | TR04 | SIN | MS#02 | CON | HD |  |
| CP09-TR4-SN-2530 |  | Plain Concrete with HDPE | 7d | 2026-03-02 A | 2026-04-28 A | CP09-TR4-SN-2520 SS+2d, CP09-TR4-SN-2520 FF+2d | 100% | 2026-03-05 | 2026-03-12 |  |  | Cost [32054.7]; Mason [4 h]; Labor [48 h]; Plain Concrete [6.14 M3] | 32,055 | SING | TR04 | SIN | MS#02 | CON | HD |  |
| CP09-TR4-SN-2540 |  | Reinforced Concrete | 12d | 2026-03-02 A | 2026-04-28 A | CP09-TR4-SN-2530 SS+2d, CP09-TR4-SN-2530 FF+2d | 100% | 2026-03-08 | 2026-03-21 |  |  | Cost [117534]; Mason [92 h]; Steel Fixer [616 h]; Shutter [123 h]; Labor [48 h]; Reinforced Concrete [30.69 M3] | 117,534 | SING | TR04 | SIN | MS#02 | CON | HD |  |
| CP09-TR4-SN-2550 |  | Waterproofing | 6d | 2026-03-02 A | 2026-04-28 A | CP09-TR4-SN-2540 SS+3d, CP09-TR4-SN-2540 FF+3d | 100% | 2026-03-18 | 2026-03-24 |  |  | Cost [21369.8]; Mason [128.8 h]; Labor [48 h]; Waterproofing [184.12 M2] | 21,370 | SING | TR04 | SIN | MS#02 | CON | HD |  |
| CP09-TR4-SN-2560 |  | Grouting | 5d | 2026-03-02 A | 2026-04-28 A | CP09-TR4-SN-2550 SS+2d, CP09-TR4-SN-2550 FF+2d | 100% | 2026-03-22 | 2026-03-26 |  |  | Cost [21369.8] | 21,370 | SING | TR04 | SIN | MS#02 | CON | HD |  |
| CP09-TR4-SN-2570 |  | STREET DIRECTIONAL SIGN | 7d | 2026-03-02 A | 2026-04-28 A | CP09-TR4-SN-2560, CP09-PR-SN-DY-1000 | 100% | 2026-03-28 | 2026-04-04 |  |  | Cost [124876]; Sign [41.25] | 124,876 | SING | TR04 | SIN | MS#02 | CON | HD |  |
| CP09-TR4-SN-2580 |  | DIRECTIONAL SIGN FOR VEHICULAR | 7d | 2026-03-02 A | 2026-04-28 A | CP09-TR4-SN-2560, CP09-PR-SN-DY-1010 | 100% | 2026-03-28 | 2026-04-04 |  |  | Cost [227367]; Sign [3.88] | 227,367 | SING | TR04 | SIN | MS#02 | CON | HD |  |
| CP09-TR4-SN-2610 |  | RULES SIGN | 6d | 2026-03-02 A | 2026-04-28 A | CP09-TR4-SN-2560, CP09-PR-SN-DY-1030 | 100% | 2026-03-28 | 2026-04-02 |  |  | Cost [102164]; Sign [10.38] | 102,164 | SING | TR04 | SIN | MS#02 | CON | HD |  |
| CP09-TR4-SN-2620 |  | IDENTIFICATION SIGN | 10d | 2026-03-02 A | 2026-04-28 A | CP09-TR4-SN-2570, CP09-TR4-SN-2580, CP09-TR4-SN-2610, CP09-TR4-SN-2560, CP09-PR-SN-DY-1040 | 100% | 2026-04-05 | 2026-04-15 |  |  | Cost [49962.7]; Sign [60] | 49,963 | SING | TR04 | SIN | MS#02 | CON | HD |  |
| CP09-TR4-SN-2590 |  | UNIT ID SIGN (FRONT YARD) | 10d | 2026-06-07 | 2026-06-17 | CP09-TR4-SN-2570, CP09-TR4-SN-2580, CP09-TR4-SN-2610, CP09-TR4-SN-2560, CP09-PR-SN-DY-1020 |  |  |  | -141d | 63.94d | Cost [81022.5]; Sign [2.25] | 81,023 | SING | TR04 | SIN | MS#02 | CON | HD |  |
| CP09-TR4-SN-2600 |  | UNIT ID SIGN (BACK YARD) | 10d | 2026-06-07 | 2026-06-17 | CP09-TR4-SN-2570, CP09-TR4-SN-2580, CP09-TR4-SN-2610, CP09-TR4-SN-2560, CP09-PR-SN-DY-1020 |  |  |  | -141d | 63.94d | Cost [55703]; Sign [5] | 55,703 | SING | TR04 | SIN | MS#02 | CON | HD |  |
|  | 5 | **Landscape Furntiure** |  | 2026-07-20 | 2026-08-06 |  |  |  |  |  |  |  |  |  |  |  |  |  |  |  |
| CP09-TR4-FN-2410 |  | Install & Fix Pitch Pine Picnic Table | 15d | 2026-07-20 | 2026-08-06 | CP09-TR4-HD-2390, CP09-TR4-HD-2400, CP09-TR4-HD-2130, CP09-TR4-HD-2050, CP09-TR4-HD-2040, CP09-TR4-HD-2000, CP09-TR4-HD-1960, CP09-TR4-HD-1860, CP09-TR4-HD-1910, CP09-EN-TR4-A-1660, CP09-PR-FN-DY-1000 |  |  |  | -183.94d | 21d | Cost [93998.3]; Pitch Pine Picnic Table [1] | 93,998 |  | TR04 | LA-F | MS#02 | CON | SO | FRNT |
| CP09-TR4-FN-2420 |  | Install & Fix Crcular Cast-iron tree grate | 15d | 2026-07-20 | 2026-08-06 | CP09-TR4-HD-2390, CP09-TR4-HD-2400, CP09-TR4-HD-2130, CP09-TR4-HD-2050, CP09-TR4-HD-2040, CP09-TR4-HD-2000, CP09-TR4-HD-1960, CP09-TR4-HD-1860, CP09-TR4-HD-1910, CP09-EN-TR4-A-1660, CP09-PR-FN-DY-1010 |  |  |  | -183.94d | 21d | Cost [655486]; Crcular Cast-iron tree grate [23.38] | 655,486 |  | TR04 | LA-F | MS#02 | CON | SO | FRNT |
| CP09-TR4-FN-2430 |  | Install & Fix Aluminium Cabana for Pool Shading | 10d | 2026-07-20 | 2026-08-01 | CP09-TR4-HD-2390, CP09-TR4-HD-2400, CP09-TR4-HD-2130, CP09-TR4-HD-2050, CP09-TR4-HD-2040, CP09-TR4-HD-2000, CP09-TR4-HD-1960, CP09-TR4-HD-1860, CP09-TR4-HD-1910, CP09-EN-TR4-A-1660, CP09-PR-FN-DY-1020 |  |  |  | -182.94d | 0d | Cost [130450]; Aluminium Cabana [1] | 130,450 |  | TR04 | LA-F | MS#02 | CON | SO | FRNT |
| CP09-TR4-FN-2440 |  | Install & Fix Pitch Pine Benchs | 15d | 2026-07-20 | 2026-08-06 | CP09-TR4-HD-2390, CP09-TR4-HD-2400, CP09-TR4-HD-2130, CP09-TR4-HD-2050, CP09-TR4-HD-2040, CP09-TR4-HD-2000, CP09-TR4-HD-1960, CP09-TR4-HD-1860, CP09-TR4-HD-1910, CP09-EN-TR4-A-1660, CP09-PR-FN-DY-1030 |  |  |  | -183.94d | 21d | Cost [316796]; Pitch Pine Benchs [9.5] | 316,796 |  | TR04 | LA-F | MS#02 | CON | SO | FRNT |
| CP09-TR4-FN-2450 |  | Install & Fix Polyester Hammocks | 15d | 2026-07-20 | 2026-08-06 | CP09-TR4-HD-2390, CP09-TR4-HD-2400, CP09-TR4-HD-2130, CP09-TR4-HD-2050, CP09-TR4-HD-2040, CP09-TR4-HD-2000, CP09-TR4-HD-1960, CP09-TR4-HD-1860, CP09-TR4-HD-1910, CP09-EN-TR4-A-1660, CP09-PR-FN-DY-1040 |  |  |  | -183.94d | 21d | Cost [40144.4]; Polyester Hammocks [1] | 40,144 |  | TR04 | LA-F | MS#02 | CON | SO | FRNT |
| CP09-TR4-FN-2460 |  | Install & Fix Adult Play Swing | 15d | 2026-07-20 | 2026-08-06 | CP09-TR4-HD-2390, CP09-TR4-HD-2400, CP09-TR4-HD-2130, CP09-TR4-HD-2050, CP09-TR4-HD-2040, CP09-TR4-HD-2000, CP09-TR4-HD-1960, CP09-TR4-HD-1860, CP09-TR4-HD-1910, CP09-EN-TR4-A-1660, CP09-PR-FN-DY-1050 |  |  |  | -183.94d | 21d | Cost [30435]; Adult Play Swing [1] | 30,435 |  | TR04 | LA-F | MS#02 | CON | SO | FRNT |
| CP09-TR4-FN-2470 |  | Install & Fix Aluminum Trash Bin | 15d | 2026-07-20 | 2026-08-06 | CP09-TR4-HD-2390, CP09-TR4-HD-2400, CP09-TR4-HD-2130, CP09-TR4-HD-2050, CP09-TR4-HD-2040, CP09-TR4-HD-2000, CP09-TR4-HD-1960, CP09-TR4-HD-1860, CP09-TR4-HD-1910, CP09-EN-TR4-A-1660, CP09-PR-FN-DY-1060 |  |  |  | -204.94d | 0d | Cost [896214]; Aluminum Trash Bin [14] | 896,214 |  | TR04 | LA-F | MS#02 | CON | SO | FRNT |
| CP09-TR4-FN-2480 |  | Install & Fix tensile Teflon Tent | 15d | 2026-07-20 | 2026-08-06 | CP09-TR4-HD-2390, CP09-TR4-HD-2400, CP09-TR4-HD-2130, CP09-TR4-HD-2050, CP09-TR4-HD-2040, CP09-TR4-HD-2000, CP09-TR4-HD-1960, CP09-TR4-HD-1860, CP09-TR4-HD-1910, CP09-EN-TR4-A-1660, CP09-PR-FN-DY-1070 |  |  |  | -183.94d | 21d | Cost [555836]; tensile Teflon Tent [2.5] | 555,836 |  | TR04 | LA-F | MS#02 | CON | SO | FRNT |
| CP09-TR4-FN-2490 |  | Lanscape Edging ( Rubber) | 12d | 2026-07-20 | 2026-08-03 | CP09-TR4-HD-2390, CP09-TR4-HD-2400, CP09-TR4-HD-2130, CP09-TR4-HD-2050, CP09-TR4-HD-2040, CP09-TR4-HD-2000, CP09-TR4-HD-1960, CP09-TR4-HD-1860, CP09-TR4-HD-1910, CP09-EN-TR4-A-1660, CP09-PR-FN-DY-1080 |  |  |  | -180.94d | 24d | Cost [65739.9]; Lanscape Edging ( Rubber) [236.5] | 65,740 |  | TR04 | LA-F | MS#02 | CON | SO | FRNT |

| ID | WBS | Activity | Duration | Start | Finish | Predecessors | Complete | Remaining | Planned start | Planned finish | Total float | Free float | Resources | Cost | Softscape | CP09_Terrace-7 | CP09-Trade | CP09_Milestone-7 | CP09_Discipline-7 | DES |
| --- | --- | --- | --- | --- | --- | --- | --- | --- | --- | --- | --- | --- | --- | --- | --- | --- | --- | --- | --- | --- |
|  | 10 | **Play Field Equipment** |  | 2026-08-06 | 2026-08-31 |  |  |  |  |  |  |  |  |  |  |  |  |  |  |  |
| CP09-TR4-PE-2500 |  | Fitness areas equipment | 21d | 2026-08-06 | 2026-08-31 | CP09-TR4-FN-2470, CP09-TR4-HD-2070, CP09-EN-TR4-A-1700, CP09-PR-PE-DY-1000, CP09-PR-PE-DY-1010, CP09-PR-PE-DY-1020, CP09-PR-PE-DY-1030 |  |  |  |  | -204.94d | 0d | Cost [1442780]; Fitness equipment [7] | 1,442,780 | P.EQ | TR04 | PF-E | MS#02 | CON | SO |
| CP09-TR4-PE-2510 |  | Kids playground equipment | 21d | 2026-08-06 | 2026-08-31 | CP09-TR4-FN-2470, CP09-TR4-HD-2070, CP09-PR-PE-DY-1040, CP09-PR-PE-DY-1050, CP09-PR-PE-DY-1060, CP09-PR-PE-DY-1070, CP09-PR-PE-DY-1080, CP09-PR-PE-DY-1090, CP09-PR-PE-DY-1100 |  |  |  |  | -204.94d | 0d | Cost [1256494]; Kids equipment [6] | 1,256,494 | P.EQ | TR04 | PF-E | MS#02 | CON | SO |
|  | 11 | **Lighting for Softscape** |  | 2026-06-07 | 2026-08-08 |  |  |  |  |  |  |  |  |  |  |  |  |  |  |  |
|  | 1 | **Exterior Lighting** |  | 2026-06-07 | 2026-08-08 |  |  |  |  |  |  |  |  |  |  |  |  |  |  |  |
| CP09-TR4-SF-1250 |  | Install Landscape Lighting Pole | 21d | 2026-06-07 | 2026-06-30 | CP09-TR4-HD-2130, CP09-TR4-EL-1050, CP09-EN-TR4-A-1730, CP09-PR-EL-DY-1080 |  |  |  |  | -174d | 10.75d | Cost [97302.1]; Lighting Pole [3]; Electrican [25 h] | 97,302 | LHT | TR04 | LFS | MS#02 | CON | HD |
| CP09-TR4-SF-1290 |  | Install Projectors for Trees | 4d | 2026-07-12 | 2026-07-15 | CP09-TR4-SF-1180, CP09-TR4-SF-1190, CP09-TR4-SF-1200, CP09-TR4-SF-1210, CP09-TR4-SF-1220, CP09-TR4-SF-1230, CP09-TR4-SF-1240, CP09-EN-TR4-A-1730, CP09-PR-EL-DY-1130 |  |  |  |  | -167d | 1.75d | Cost [484837]; Projectors For Trees [118]; Electrican [25 h] | 484,837 | LHT | TR04 | LFS | MS#02 | CON | HD |
| CP09-TR4-SF-1260 |  | Install Bollard for Walkways | 10d | 2026-07-13 | 2026-07-25 | CP09-TR4-EL-1050, CP09-TR4-HD-2130, CP09-TR4-HD-1910, CP09-TR4-HD-1860, CP09-TR4-HD-1960, CP09-TR4-HD-2000, CP09-TR4-HD-2040, CP09-TR4-HD-2050, CP09-TR4-HD-2070, CP09-EN-TR4-A-1730, CP09-PR-EL-DY-1090, CP09-TR4-SF-1250 |  |  |  |  | -184.75d | 0d | Cost [1108355]; Bollard [260]; Electrican [25 h] | 1,108,355 | LHT | TR04 | LFS | MS#02 | CON | HD |
| CP09-TR4-SF-1280 |  | Install Inground Uplight For Palms | 6d | 2026-07-13 | 2026-07-20 | CP09-TR4-SF-1290 SS, CP09-TR4-SF-1260 SS, CP09-EN-TR4-A-1730, CP09-PR-EL-DY-1120 |  |  |  |  | -168.75d | 36.19d | Cost [393484]; Inground Uplight [86]; Electrican [25 h] | 393,484 | LHT | TR04 | LFS | MS#02 | CON | HD |
| CP09-TR4-SF-1270 |  | Install Diffused Wall Recessed Step | 12d | 2026-07-25 | 2026-08-08 | CP09-TR4-SF-1260, CP09-EN-TR4-A-1730, CP09-PR-EL-DY-1110 |  |  |  |  | -184.75d | 20.19d | Cost [194419]; Diffused Wall [47]; Electrican [25 h] | 194,419 | LHT | TR04 | LFS | MS#02 | CON | HD |
| CP09-TR4-SF-1300 |  | Install Surface Mountaed Down Light for Pool Cabans | 4d | 2026-08-01 | 2026-08-05 | CP09-TR4-FN-2430, CP09-EN-TR4-A-1730, CP09-PR-EL-DY-1100 |  |  |  |  | -182.94d | 22d | Cost [15355]; Surface Mountaed Light [4]; Electrican [25 h] | 15,355 | LHT | TR04 | LFS | MS#02 | CON | HD |
|  | 2 | **Outlet Lighting Fixtures** |  | 2026-07-25 | 2026-07-30 |  |  |  |  |  |  |  |  |  |  |  |  |  |  |  |
| CP09-TR4-SF-1310 |  | Install outlet lighting fixtures | 5d | 2026-07-25 | 2026-07-30 | CP09-TR4-SF-1260, CP09-EN-TR4-A-1730, CP09-PR-EL-DY-1150 |  |  |  |  | -177.75d | 27.19d | Cost [357578]; Outlet Lighting Fixtiure [519]; Electrican [25 h] | 357,578 | LHT | TR04 | LFS | MS#02 | CON | HD |
|  | 2 | **Softscape** |  | 2025-09-24 | 2026-06-22 |  |  |  |  |  |  |  |  |  |  |  |  |  |  |  |
|  | 1 | **Planting** |  | 2025-09-24 | 2026-06-22 |  |  |  |  |  |  |  |  |  |  |  |  |  |  |  |
| CP09-TR4-SF-1160 |  | Sweet sand for all plants | 12d | 2025-09-24 A | 2026-06-20 | CP09-TR4-EW-1050, CP09-TR4-HD-2380, CP09-TR4-HD-2130, CP09-EN-TR4-A-1720, CP09-PR-PN-DY-1000 | 90% | 12d | 2026-02-08 | 2026-02-22 | -143d | 61.94d | Cost [1296918]; Sweet sand [3702.2] | 1,296,918 | PLNT | TR04 | SS | MS#02 | CON | SO |
| CP09-TR4-SF-1170 |  | Organic Manure | 10d | 2026-02-22 A | 2026-06-17 | CP09-TR4-SF-1160 SS+5d, CP09-EN-TR4-A-1720, CP09-PR-PN-DY-1010 | 90% | 10d | 2026-02-14 | 2026-02-25 | -118d | 131.06d | Cost [841200]; Organic Manure [843.3] | 841,200 | PLNT | TR04 | SS | MS#02 | CON | SO |
| CP09-TR4-SF-1180 |  | Large Trees | 11d | 2026-04-13 A | 2026-06-18 | CP09-TR4-IR-1150, CP09-TR4-IR-1160, CP09-TR4-IR-1170, CP09-TR4-IR-1180, CP09-TR4-IR-1190, CP09-TR4-IR-1200, CP09-TR4-IR-1210, CP09-TR4-SF-1170, CP09-TR4-SF-1160, CP09-PR-PN-DY-1020 | 60% | 11d | 2026-05-19 | 2026-05-31 | -151d | 0d | Cost [1933001]; Large Trees [706] | 1,933,001 | PLNT | TR04 | SS | MS#02 | CON | SO |
| CP09-TR4-SF-1190 |  | Shrubs | 10d | 2026-04-24 A | 2026-06-22 | CP09-TR4-SF-1170, CP09-TR4-SF-1160, CP09-TR4-SF-1180 SS+3d, CP09-TR4-SF-1180 FF+3d, CP09-PR-PN-DY-1060 | 50% | 10d | 2026-05-10 | 2026-05-20 | -151d | 16d | Cost [758721]; Shrubs [5056] | 758,721 | PLNT | TR04 | SS | MS#02 | CON | SO |
| CP09-TR4-SF-1200 |  | Ground Covers | 10d | 2026-04-24 A | 2026-06-22 | CP09-TR4-SF-1170, CP09-TR4-SF-1160, CP09-TR4-SF-1180 SS+3d, CP09-TR4-SF-1180 FF+3d, CP09-PR-PN-DY-1070 | 50% | 10d | 2026-05-10 | 2026-05-20 | -151d | 16d | Cost [840914]; Ground Covers [41638] | 840,914 | PLNT | TR04 | SS | MS#02 | CON | SO |
| CP09-TR4-SF-1210 |  | Succulents | 10d | 2026-04-24 A | 2026-06-22 | CP09-TR4-SF-1170, CP09-TR4-SF-1160, CP09-TR4-SF-1180 SS+3d, CP09-TR4-SF-1180 FF+3d, CP09-PR-PN-DY-1080 | 50% | 10d | 2026-05-10 | 2026-05-20 | -151d | 16d | Cost [363438]; Succulents [1300] | 363,438 | PLNT | TR04 | SS | MS#02 | CON | SO |
| CP09-TR4-SF-1220 |  | Vines & Climbers | 10d | 2026-04-24 A | 2026-06-22 | CP09-TR4-SF-1170, CP09-TR4-SF-1160, CP09-TR4-SF-1180 SS+3d, CP09-TR4-SF-1180 FF+3d, CP09-PR-PN-DY-1030 | 50% | 10d | 2026-05-10 | 2026-05-20 | -151d | 16d | Cost [26566.1]; Vines & Climbers [241] | 26,566 | PLNT | TR04 | SS | MS#02 | CON | SO |
| CP09-TR4-SF-1230 |  | Ornamental grass | 10d | 2026-04-24 A | 2026-06-22 | CP09-TR4-SF-1170, CP09-TR4-SF-1160, CP09-TR4-SF-1180 SS+3d, CP09-TR4-SF-1180 FF+3d, CP09-PR-PN-DY-1050 | 50% | 10d | 2026-05-26 | 2026-06-06 | -151d | 16d | Cost [502971]; Ornamental grass [13594] | 502,971 | PLNT | TR04 | SS | MS#02 | CON | SO |
| CP09-TR4-SF-1240 |  | Lawn | 10d | 2026-04-24 A | 2026-06-22 | CP09-TR4-SF-1170, CP09-TR4-SF-1160, CP09-TR4-SF-1180 SS+3d, CP09-TR4-SF-1180 FF+3d, CP09-PR-PN-DY-1040 | 50% | 10d | 2026-05-10 | 2026-05-20 | -151d | 16d | Cost [83925.4]; Lawn [1476] | 83,925 | PLNT | TR04 | SS | MS#02 | CON | SO |

| ID | WBS | Activity | Duration | Start | Finish | Predecessors | Complete | Remaining | Planned start | Planned finish | Total float | Free float | Resources | Cost | Actual cost | Swimming Pool | CP09_Terrace-7 | CP09-Trade | CP09_Milestone-7 | CP09_Discipline-7 | DES |
| --- | --- | --- | --- | --- | --- | --- | --- | --- | --- | --- | --- | --- | --- | --- | --- | --- | --- | --- | --- | --- | --- |
|  | 6 | **Terrace # 05** |  | 2024-05-20 | 2026-08-31 |  |  |  |  |  |  |  |  |  |  |  |  |  |  |  |  |
|  | 8 | **Swimming Pool-SP03 & Mechnical Room-MR-03** |  | 2024-05-20 | 2026-08-10 |  |  |  |  |  |  |  |  |  |  |  |  |  |  |  |  |
|  | 1 | **Structure Works for Swimming Pool** |  | 2024-05-20 | 2026-04-28 |  |  |  |  |  |  |  |  |  |  |  |  |  |  |  |  |
| CP09-TR5-SW-1730 |  | Excvation up to Formation Level | 7d | 2024-05-20 A | 2024-10-10 A | CP09-MS-1010, CP09-CLD-1000, CP09-TR4-SW-1370 | 100% |  | 2024-02-19 | 2024-02-26 |  |  | Cost [104878]; EXCAVATOR [592 h]; LOADER [712 h]; TRUCK [712 h]; Labor [370 h]; Excavation [740 M3] | 104,878.32 | 104,878 | SP03 | TR05 | SP&MR | MS#03 | CON | HD |
| CP09-TR5-SW-1740 |  | Plain Concret for For Raft | 5d | 2024-11-04 A | 2024-11-14 A | CP09-TR5-SW-1730, CP09-EN-TR5-A-1750, CP09-PR-CV-DY-1000 SS, CP09-TR4-SW-1420 | 100% |  | 2024-12-19 | 2024-12-25 |  |  | Cost [174797]; Mason [315 h]; Labor [48 h]; Plain Concrete [450 M3] | 174,797.2 | 174,797 | SP03 | TR05 | SP&MR | MS#03 | CON | HD |
| CP09-TR5-SW-1750 |  | Water Proofing with screed | 3d | 2024-11-16 A | 2024-11-23 A | CP09-TR5-SW-1740, CP09-EN-TR5-A-1770, CP09-PR-CV-DY-1010 SS | 100% |  | 2024-12-26 | 2024-12-30 |  |  | Cost [69918.9]; Mason [77 h]; Labor [48 h]; Waterproofing [450 M2] | 69,918.88 | 69,919 | SP03 | TR05 | SP&MR | MS#03 | CON | HD |
| CP09-TR5-SW-1760 |  | Reinforcement concrete for Raft | 10d | 2025-05-18 A | 2025-05-22 A | CP09-TR5-SW-1750, CP09-EN-TR5-A-1750, CP09-EN-TR5-A-1760, CP09-PR-CV-DY-1130 | 100% |  | 2025-01-05 | 2025-01-18 |  |  | Cost [873986]; Mason [48 h]; Steel Fixer [105 h]; Shutter [48 h]; Labor [48 h]; Reinforced Concrete [30 M3] | 873,986.02 | 873,986 | SP03 | TR05 | SP&MR | MS#03 | CON | HD |
| CP09-TR5-SW-1780 |  | Reinforcement Concrete for Walls | 15d | 2025-09-30 A | 2025-10-04 A | CP09-TR5-SW-1770 | 100% |  | 2025-07-13 | 2025-07-31 |  |  | Cost [349594]; Mason [90 h]; Steel Fixer [616 h]; Shutter [120 h]; Labor [48 h]; Reinforced Concrete [30 M3] | 349,594.41 | 349,594 | SP03 | TR05 | SP&MR | MS#03 | CON | HD |
| CP09-TR5-SW-1770 |  | Water Proofing for Raft with screed | 3.75d | 2025-11-24 A | 2025-11-28 A | CP09-TR5-SW-1760, CP09-EN-TR5-A-1770, CP09-PR-CV-DY-1010 SS | 100% |  | 2025-11-23 | 2025-11-26 |  |  | Cost [174797]; Mason [390.6 h]; Labor [48 h]; Waterproofing [558 M2] | 174,797.2 | 174,797 | SP03 | TR05 | SP&MR | MS#03 | CON | HD |
| CP09-TR5-SW-1790 |  | External Waterproofing for Walls | 5d | 2026-03-02 A | 2026-03-06 A | CP09-TR5-SW-1780 | 100% |  | 2026-02-28 | 2026-03-04 |  |  | Cost [174797]; Mason [294 h]; Labor [48 h]; Waterproofing [420 M2] | 174,797 |  | SP03 | TR05 | SP&MR | MS#03 | CON | HD |
| CP09-TR5-SW-1800 |  | Protection Block Works | 5d | 2026-04-24 A | 2026-04-28 A | CP09-TR5-SW-1790, CP09-PR-CV-DY-1020 SS | 100% |  | 2026-04-26 | 2026-04-30 |  |  | Cost [69918.9]; Mason [323 h]; Labor [48 h]; Waterproofing; Blocks [85] | 69,919 |  | SP03 | TR05 | SP&MR | MS#03 | CON | HD |
| CP09-TR5-SW-1810 |  | Backfilling | 5.62d | 2026-04-24 A | 2026-04-28 A | CP09-TR5-SW-1800, CP09-TR5-SW-1960 FF | 100% |  | 2026-05-02 | 2026-05-07 |  |  | Cost [69918.9]; Labor [114 h]; Backfilling [190 M3] | 69,919 |  | SP03 | TR05 | SP&MR | MS#03 | CON | HD |
|  | 3 | **Finishing Works for Swimming Pool** |  | 2026-06-24 | 2026-07-25 |  |  |  |  |  |  |  |  |  |  |  |  |  |  |  |  |
| CP09-TR5-SW-1820 |  | Mosaics Tiles | 11.25d | 2026-06-24 | 2026-07-07 | CP09-TR5-SW-1800, CP09-TR5-SW-1810, CP09-EN-TR5-A-1780, CP09-PR-CV-DY-1030 |  |  |  |  | -187.56d | 0d | Cost [699189]; Mason [280 h]; Labor [48 h]; Mosaic [558] | 699,189 |  | SP03 | TR05 | SP&MR | MS#03 | CON | HD |
| CP09-TR5-SW-1830 |  | Granite for Pool Edg | 3.75d | 2026-07-07 | 2026-07-11 | CP09-TR5-SW-1820, CP09-EN-TR5-A-1790, CP09-PR-CV-DY-1040 |  |  |  |  | -187.56d | 0d | Cost [279676]; Mason [48 h]; Labor [48 h] | 279,676 |  | SP03 | TR05 | SP&MR | MS#03 | CON | HD |
| CP09-TR5-SW-1840 |  | Garnite for Drinage Grate | 3.75d | 2026-07-07 | 2026-07-11 | CP09-TR5-SW-1830 SS, CP09-EN-TR5-A-1790 |  |  |  |  | -183.81d | 3.75d | Cost [139838]; Mason [48 h]; Labor [48 h] | 139,838 |  | SP03 | TR05 | SP&MR | MS#03 | CON | HD |
| CP09-TR5-SW-1850 |  | Granite for Pool Coping | 3.75d | 2026-07-12 | 2026-07-15 | CP09-TR5-SW-1830, CP09-EN-TR5-A-1790 |  |  |  |  | -187.56d | 0d | Cost [174797]; Mason [160 h]; Labor [48 h]; Granit-Coping [80] | 174,797 |  | SP03 | TR05 | SP&MR | MS#03 | CON | HD |
| CP09-TR5-SW-1860 |  | Stanless Steel Ladders | 2.81d | 2026-07-15 | 2026-07-19 | CP09-TR5-SW-1820, CP09-TR5-SW-1830, CP09-TR5-SW-1840, CP09-TR5-SW-1850, CP09-EN-TR5-A-1810, CP09-EN-TR5-A-1800, CP09-PR-CV-DY-1050 |  |  |  |  | -187.56d | 0d | Cost [69918.9]; Labor [4 h]; Stanless Steel Ladders [2] | 69,919 |  | SP03 | TR05 | SP&MR | MS#03 | CON | HD |
| CP09-TR5-SW-1870 |  | Stanless Steel Handrial | 5d | 2026-07-19 | 2026-07-25 | CP09-TR5-SW-1860, CP09-EN-TR5-A-1810, CP09-PR-CV-DY-1060 |  |  |  |  | -187.56d | 13.5d | Cost [69918.9]; Labor [2 h]; Stanless Steel Handrial [1] | 69,919 |  | SP03 | TR05 | SP&MR | MS#03 | CON | HD |
|  | 4 | **Machine Room_MR03** |  | 2024-11-02 | 2026-06-28 |  |  |  |  |  |  |  |  |  |  |  |  |  |  |  |  |
| CP09-TR5-SW-1880 |  | Excvation up to Formation Level | 6d | 2024-11-02 A | 2024-11-07 A | CP09-TR5-SW-1730 | 100% |  |  |  |  |  | Cost [51156.2]; EXCAVATOR [320 h]; LOADER [384 h]; TRUCK [384 h]; Labor [200 h]; Excavation [400 M3] | 51,156.18 | 51,156 | SP03 | TR05 | SP&MR | MS#03 | CON | HD |
| CP09-TR5-SW-1890 |  | Plain Concret for For Raft | 2.81d | 2024-12-08 A | 2024-12-10 A | CP09-TR5-SW-1880, CP09-EN-TR5-A-1750 | 100% |  |  |  |  |  | Cost [25578.1]; Mason [63 h]; Labor [48 h]; Plain Concrete [90 M3] | 25,578.09 | 25,578 | SP03 | TR05 | SP&MR | MS#03 | CON | HD |
| CP09-TR5-SW-1900 |  | Water Proofing with screed | 1.88d | 2024-12-14 A | 2024-12-21 A | CP09-TR5-SW-1890, CP09-EN-TR5-A-1770, CP09-PR-CV-DY-1010 | 100% |  | 2024-12-24 | 2024-12-25 |  |  | Cost [25578.1]; Mason [77 h]; Labor [48 h]; Waterproofing [90 M2] | 25,578.09 | 25,578 | SP03 | TR05 | SP&MR | MS#03 | CON | HD |
| CP09-TR5-SW-1910 |  | Reinforcement concrete for Raft | 10d | 2025-01-02 A | 2025-04-16 A | CP09-TR5-SW-1900, CP09-EN-TR5-A-1750, CP09-EN-TR5-A-1760 | 100% |  | 2025-01-26 | 2025-02-05 |  |  | Cost [153469]; Mason [48 h]; Steel Fixer [77 h]; Shutter [48 h]; Labor [48 h]; Reinforced Concrete [22 M3] | 153,468.55 | 153,469 | SP03 | TR05 | SP&MR | MS#03 | CON | HD |
| CP09-TR5-SW-1920 |  | Water Proofing for Raft with screed | 3.75d | 2025-09-30 A | 2025-12-12 A | CP09-TR5-SW-1910 | 100% |  | 2025-05-15 | 2025-05-19 |  |  | Cost [63945.2]; Mason [140 h]; Labor [48 h]; Waterproofing [200 M2] | 63,945.23 | 63,945 | SP03 | TR05 | SP&MR | MS#03 | CON | HD |
| CP09-TR5-SW-1930 |  | Reinforcement Concrete for Walls & Columns | 15d | 2025-09-30 A | 2025-10-04 A | CP09-TR5-SW-1920 | 100% |  | 2025-07-12 | 2025-07-30 |  |  | Cost [281359]; Mason [84 h]; Steel Fixer [616 h]; Shutter [112 h]; Labor [48 h]; Reinforced Concrete [28 M3] | 281,359.01 | 281,359 | SP03 | TR05 | SP&MR | MS#03 | CON | HD |
| CP09-TR5-SW-1940 |  | Reinforcement Concrete for Slab | 21d | 2025-09-30 A | 2025-10-04 A | CP09-TR5-SW-1930 | 100% |  | 2025-10-05 | 2025-10-30 |  |  | Cost [127890]; Mason [48 h]; Steel Fixer [616 h]; Shutter [64 h]; Labor [48 h]; Reinforced Concrete [16 M3] | 127,890.46 | 127,890 | SP03 | TR05 | SP&MR | MS#03 | CON | HD |
| CP09-TR5-SW-2060 |  | Emulsion Paint for Internal Wall | 6d | 2026-02-22 A | 2026-05-08 A | CP09-TR5-SW-2050, CP09-TR5-SW-2000, CP09-PR-CV-DY-1080 | 100% |  | 2025-12-30 | 2026-01-06 |  |  | Cost [25578.1]; Paint [159.2]; Labor [48 h]; Painter [382 h]; Epoxy for flooring | 25,578.09 | 6,394.5 | SP03 | TR05 | SP&MR | MS#03 | CON | HD |
| CP09-TR5-SW-1950 |  | External Waterproofing with Protection | 5d | 2026-03-02 A | 2026-03-06 A | CP09-TR5-SW-1940 | 100% |  | 2026-02-28 | 2026-03-04 |  |  | Cost [230203]; Mason [105 h]; Labor [48 h]; Waterproofing [150 M2] | 230,203 |  | SP03 | TR05 | SP&MR | MS#03 | CON | HD |
| CP09-TR5-SW-1960 |  | Backfilling | 5d | 2026-04-24 A | 2026-04-28 A | CP09-TR5-SW-1950 | 100% |  | 2026-04-26 | 2026-04-30 |  |  | Cost [38367.1]; Labor [87 h]; Backfilling [145 M3] | 38,367 |  | SP03 | TR05 | SP&MR | MS#03 | CON | HD |
| CP09-TR5-SW-2050 |  | Plaster for Internal Walls | 6d | 2026-05-04 A | 2026-05-08 A | CP09-TR5-SW-1950, CP09-EN-TR5-A-2110, CP09-PR-CV-DY-1070 | 100% |  | 2026-04-30 | 2026-05-06 |  |  | Cost [38367.1]; Mason [144 h]; Labor [48 h]; Plaster [150] | 38,367 |  | SP03 | TR05 | SP&MR | MS#03 | CON | HD |
| CP09-TR5-SW-2070 |  | Epoxy for flooring | 3d | 2026-05-04 A | 2026-06-09 | CP09-TR5-SW-2060, CP09-TR5-SW-2080, CP09-TR5-SW-1970, CP09-TR5-SW-1990, CP09-TR5-SW-2030, CP09-TR5-SW-2040, CP09-PR-CV-DY-1110 | 80% | 3d | 2026-07-04 | 2026-07-07 | -149d | 52.06d | Cost [63945.2]; Mason [48 h]; Labor [48 h]; Epoxy for flooring [3.07] | 63,945 |  | SP03 | TR05 | SP&MR | MS#03 | CON | HD |
| CP09-TR5-SW-2080 |  | Metal Works | 5d | 2026-06-07 | 2026-06-11 | CP09-TR5-SW-2060 |  |  |  |  | -113d | 136.06d | Cost [102312]; Metals for MR | 102,312 |  | SP03 | TR05 | SP&MR | MS#03 | CON | HD |
| CP09-TR5-SW-1970 |  | Drainage Gravel including Geotextile & Geocomposit | 3.75d | 2026-06-24 | 2026-06-28 | CP09-TR5-SW-2060, CP09-PR-CV-DY-1090, CP09-PR-CV-DY-1100 |  |  |  |  | -126.75d | 122.31d | Cost [51156.2]; Drainage Gravel | 51,156 |  | SP03 | TR05 | SP&MR | MS#03 | CON | HD |

| ID | WBS | Activity | Duration | Start | Finish | Predecessors | Complete | Remaining | Planned start | Planned finish | Total float | Free float | Resources | Cost | Actual cost | Swimming Pool | CP09_Terrace-7 | CP09-Trade | CP09_Milestone-7 | CP09_Discipline-7 | DES | Walls |
| --- | --- | --- | --- | --- | --- | --- | --- | --- | --- | --- | --- | --- | --- | --- | --- | --- | --- | --- | --- | --- | --- | --- |
|  | 2 | **MEP Works for Swimmimg Pool & Machine Room** |  | 2026-02-22 | 2026-08-10 |  |  |  |  |  |  |  |  |  |  |  |  |  |  |  |  |  |
|  | 1 | **Mechnical Works** |  | 2026-02-22 | 2026-07-28 |  |  |  |  |  |  |  |  |  |  |  |  |  |  |  |  |  |
| CP09-TR5-SW-1980 |  | UPVC pipes, fitting, valves, | 15d | 2026-02-22 A | 2026-06-23 | CP09-TR5-SW-2050, CP09-EN-TR5-A-1820, CP09-PR-ME-DY-1000, CP09-PR-ME-DY-1010 | 40% | 15d | 2025-08-19 | 2025-09-06 | -191d | 0d | Cost [710030]; Labor [48 h] | 710,029.67 | 177,507.5 | SP03 | TR05 | SP&MR | MS#03 | CON | HD |  |
| CP09-TR5-SW-1990 |  | Mechnical Equipment (Valves, Pumps, Filtters, Controllers ,Dosinng,& Ventilation exahust fan) | 30d | 2026-06-24 | 2026-07-28 | CP09-TR5-SW-2060, CP09-TR5-SW-1980, CP09-EN-TR5-A-1820, CP09-PR-ME-DY-1020, CP09-PR-ME-DY-1030, CP09-PR-ME-DY-1040, CP09-PR-ME-DY-1050, CP09-PR-ME-DY-1060, CP09-PR-ME-DY-1070, CP09-PR-ME-DY-1080 |  |  |  |  | -191d | 10.06d | Cost [2068538]; Labor [48 h] | 2,068,538 |  | SP03 | TR05 | SP&MR | MS#03 | CON | HD |  |
|  | 2 | **Electrical Works-SW** |  | 2026-06-24 | 2026-08-10 |  |  |  |  |  |  |  |  |  |  |  |  |  |  |  |  |  |
| CP09-TR5-SW-2000 |  | Conduits, Cable tray | 5d | 2026-06-24 | 2026-06-30 | CP09-TR5-SW-2050, CP09-EN-TR5-A-1830, CP09-PR-EL-DY-1000, CP09-PR-EL-DY-1010 |  |  |  |  | -201.06d | 0d | Cost [174464]; Labor [48 h] | 174,464 |  | SP03 | TR05 | SP&MR | MS#03 | CON | HD |  |
| CP09-TR5-SW-2010 |  | Panel boards | 5d | 2026-06-30 | 2026-07-06 | CP09-TR5-SW-2000, CP09-TR5-SW-2060, CP09-EN-TR5-A-1830, CP09-PR-EL-DY-1020 |  |  |  |  | -201.06d | 0d | Cost [624381]; Labor [48 h] | 624,381 |  | SP03 | TR05 | SP&MR | MS#03 | CON | HD |  |
| CP09-TR5-SW-2020 |  | Power Cables & Wires | 10d | 2026-07-06 | 2026-07-18 | CP09-TR5-SW-2010, CP09-TR5-SW-2000, CP09-EN-TR5-A-1830, CP09-PR-EL-DY-1030 |  |  |  |  | -201.06d | 0d | Cost [8133]; Labor [48 h] | 8,133 |  | SP03 | TR05 | SP&MR | MS#03 | CON | HD |  |
| CP09-TR5-SW-2040 |  | Earthing System | 15d | 2026-07-06 | 2026-07-23 | CP09-TR5-SW-2020 SS, CP09-PR-EL-DY-1040 |  |  |  |  | -186.06d | 15d | Cost [52517.6]; Labor [48 h] | 52,518 |  | SP03 | TR05 | SP&MR | MS#03 | CON | HD |  |
| CP09-TR5-SW-2030 |  | (Lighting Outlets , Switches, Fixture ) | 20d | 2026-07-18 | 2026-08-10 | CP09-TR5-SW-2000, CP09-TR5-SW-2020, CP09-TR5-SW-2010, CP09-PR-EL-DY-1050, CP09-PR-EL-DY-1140 |  |  |  |  | -201.06d | 0d | Cost [572541]; Labor [48 h] | 572,541 |  | SP03 | TR05 | SP&MR | MS#03 | CON | HD |  |
|  | 6 | **Earth Work** |  | 2025-11-10 | 2026-04-10 |  |  |  |  |  |  |  |  |  |  |  |  |  |  |  |  |  |
|  | 1 | **Grading works** |  | 2025-11-10 | 2025-12-26 |  |  |  |  |  |  |  |  |  |  |  |  |  |  |  |  |  |
| CP09-TR5-EW-1060 |  | Excavation work to Reduce Level | 15d | 2025-11-10 A | 2025-12-26 A | CP09-TR5-SW-1880, CP09-EN-TR5-A-1840, CP09-CLD-1000 | 100% |  | 2025-11-09 | 2025-11-25 |  |  | Cost; EXCAVATOR; LOADER; TRUCK; Labor [48 h]; Excavation |  |  |  | TR05 | E-W | MS#03 | CON | HD |  |
| CP09-TR5-EW-1070 |  | Filling works to make up levels with Compacting | 15d | 2025-11-10 A | 2025-12-26 A | CP09-TR5-SW-1880, CP09-TR5-EW-1060 SS+4.69d, CP09-EN-TR5-A-1840 | 100% |  | 2025-11-13 | 2025-12-01 |  |  | Cost; Labor [48 h]; Filling |  |  |  | TR05 | E-W | MS#03 | CON | HD |  |
|  | 2 | **Planting** |  | 2026-02-22 | 2026-04-10 |  |  |  |  |  |  |  |  |  |  |  |  |  |  |  |  |  |
| CP09-TR5-EW-1080 |  | Excavation works for Planting Beds | 15d | 2026-02-22 A | 2026-04-10 A | CP09-TR5-EW-1060 SS, CP09-TR5-EW-1070 SS, CP09-EN-TR5-A-1840 | 100% |  | 2025-11-13 | 2025-12-01 |  |  | Cost [915350]; EXCAVATOR [4544 h]; LOADER [5456 h]; TRUCK [5456 h]; Labor [280 h]; Excavation [5681.88 M3] | 915,350.06 | 869,582.5 |  | TR05 | E-W | MS#03 | CON | HD |  |
|  | 9 | **Retaining & Cheek Walls** |  | 2026-02-16 | 2026-07-07 |  |  |  |  |  |  |  |  |  |  |  |  |  |  |  |  |  |
|  | 1 | **Soild Block Work Cheek Walls** |  | 2026-02-16 | 2026-07-07 |  |  |  |  |  |  |  |  |  |  |  |  |  |  |  |  |  |
| CP09-TR5-RW-1450 |  | Plaing Concrete with HPDE | 4.69d | 2026-02-16 A | 2026-04-10 A | CP09-TR5-RW-1500 SS+2.81d, CP09-TR5-RW-1500 FF+2.81d, CP09-EN-TR5-A-1850 | 100% |  | 2026-01-03 | 2026-01-08 |  |  | Cost [25885]; Mason [27 h]; Labor [48 h]; Plain Concrete [38.81 M3]; HDPE | 25,884.99 | 12,942.5 |  | TR05 | RE&CW | MS#03 | CON | HD | CHW |
| CP09-TR5-RW-1480 |  | Reinforced Concrete for Column | 8d | 2026-02-16 A | 2026-04-10 A | CP09-TR5-RW-1470 SS+2.81d, CP09-TR5-RW-1470 FF+2.81d | 100% |  | 2026-01-13 | 2026-01-22 |  |  | Cost [32356.2]; Mason [48 h]; Steel Fixer [48 h]; Shutter [48 h]; Labor [48 h]; Reinforced Concrete | 32,356.24 | 16,178 |  | TR05 | RE&CW | MS#03 | CON | HD | CHW |
| CP09-TR5-RW-1520 |  | Waterproofing & Protection | 6.56d | 2026-02-16 A | 2026-04-10 A | CP09-TR5-RW-1510 SS+7.5d, CP09-TR5-RW-1510 FF+7.5d, CP09-EN-TR5-A-1870 | 100% |  | 2026-02-08 | 2026-02-16 |  |  | Cost [25885]; Mason [10.08 h]; Labor [48 h]; Waterproofing [14.49 M2] | 25,884.99 | 7,765.5 |  | TR05 | RE&CW | MS#03 | CON | HD | CHW |
| CP09-TR5-RW-1530 |  | Backfilling | 5.62d | 2026-02-16 A | 2026-04-28 A | CP09-TR5-RW-1520 SS+2.81d, CP09-TR5-RW-1520 FF+2.81d | 100% |  | 2026-02-12 | 2026-02-19 |  |  | Cost [25885]; Labor [25 h]; Backfilling [41.14 M3] | 25,884.99 | 7,765.5 |  | TR05 | RE&CW | MS#03 | CON | HD | CHW |
| CP09-TR5-RW-1460 |  | Reinforced Concrete for Footing | 6.56d | 2026-02-22 A | 2026-04-10 A | CP09-TR5-RW-1450 SS+2.81d, CP09-TR5-RW-1450 FF+2.81d, CP09-EN-TR5-A-1860, CP09-EN-TR5-A-1850 | 100% |  | 2026-01-06 | 2026-01-14 |  |  | Cost [194137]; Mason [48 h]; Steel Fixer [45 h]; Shutter [48 h]; Labor [48 h]; Reinforced Concrete [12.94 M3] | 194,137.42 | 97,068.5 |  | TR05 | RE&CW | MS#03 | CON | HD | CHW |
| CP09-TR5-RW-1470 |  | Reinforced Concrete for Tie beam | 8d | 2026-02-22 A | 2026-04-10 A | CP09-TR5-RW-1460 SS+2.81d, CP09-TR5-RW-1460 FF+2.81d | 100% |  | 2026-01-10 | 2026-01-19 |  |  | Cost [32356.2]; Mason [48 h]; Steel Fixer [48 h]; Shutter [48 h]; Labor [48 h]; Reinforced Concrete | 32,356.24 | 16,178 |  | TR05 | RE&CW | MS#03 | CON | HD | CHW |
| CP09-TR5-RW-1490 |  | Soild Block Work | 5.62d | 2026-02-22 A | 2026-04-10 A | CP09-TR5-RW-1480 SS+5.62d, CP09-TR5-RW-1480 FF+5.62d, CP09-EN-TR5-A-1880, CP09-PR-CV-DY-1020 | 100% |  | 2026-01-22 | 2026-01-28 |  |  | Cost [64712.5]; Mason [38 h]; Labor [48 h]; Blocks [10.35] | 64,712.47 | 32,356 |  | TR05 | RE&CW | MS#03 | CON | HD | CHW |
| CP09-TR5-RW-1500 |  | Excavation | 3.75d | 2026-02-22 A | 2026-04-10 A | CP09-TR4-RW-1420, CP09-TR5-EW-1060, CP09-TR5-EW-1070 | 100% |  | 2025-12-31 | 2026-01-04 |  |  | Cost [19413.7]; EXCAVATOR [48 h]; LOADER [56 h]; TRUCK [56 h]; Labor [31 h]; Excavation [60.55 M3] | 19,413.74 | 9,707 |  | TR05 | RE&CW | MS#03 | CON | HD | CHW |
| CP09-TR5-RW-1510 |  | Reinforced Concrete for beam | 10d | 2026-02-22 A | 2026-04-10 A | CP09-TR5-RW-1490 SS+3.75d, CP09-TR5-RW-1490 FF+3.75d | 100% |  | 2026-01-27 | 2026-02-07 |  |  | Cost [64712.5]; Mason [12 h]; Steel Fixer [207 h]; Shutter [17 h]; Labor [48 h]; Reinforced Concrete [4.14 M3] | 64,712.47 | 19,413.6 |  | TR05 | RE&CW | MS#03 | CON | HD | CHW |
| CP09-TR5-RW-1540 |  | Marble Cladding | 10d | 2026-06-21 | 2026-07-01 | CP09-TR5-RW-1530 SS+5.62d, CP09-TR5-RW-1530 FF+5.62d, CP09-EN-TR5-A-1890, CP09-PR-CV-DY-1120 |  |  |  |  | -169.94d | 0d | Cost [129425]; Mason [88 h]; Labor [48 h]; Marble [31.05] | 129,425 |  |  | TR05 | RE&CW | MS#03 | CON | HD | CHW |
| CP09-TR5-RW-1550 |  | Marble Copping | 10d | 2026-06-25 | 2026-07-07 | CP09-TR5-RW-1540 SS+4.69d, CP09-TR5-RW-1540 FF+4.69d, CP09-EN-TR5-A-1890, CP09-PR-CV-DY-1120 |  |  |  |  | -169.94d | 0d | Cost [32356.2]; Mason [160 h]; Labor [48 h]; Marble Coping [25.88] | 32,356 |  |  | TR05 | RE&CW | MS#03 | CON | HD | CHW |

| ID | WBS | Activity | Duration | Start | Finish | Predecessors | Complete | Remaining | Planned start | Planned finish | Total float | Free float | Resources | Cost | Actual cost | Walls | CP09_Terrace-7 | CP09-Trade | CP09_Milestone-7 | CP09_Discipline-7 | DES | Networks |
| --- | --- | --- | --- | --- | --- | --- | --- | --- | --- | --- | --- | --- | --- | --- | --- | --- | --- | --- | --- | --- | --- | --- |
|  | 2 | **Solid Block Retaining Walls** |  | 2026-02-16 | 2026-07-05 |  |  |  |  |  |  |  |  |  |  |  |  |  |  |  |  |  |
| CP09-TR5-RW-1560 |  | Plaing Concrete with HPDE | 5d | 2026-02-16 A | 2026-04-10 A | CP09-TR5-RW-1610 SS+2.81d, CP09-TR5-RW-1610 FF+2.81d, CP09-EN-TR5-A-1850 | 100% |  | 2026-01-18 | 2026-01-22 |  |  | Cost [7990.96]; Mason [27 h]; Labor [48 h]; Plain Concrete [38.81 M3]; HDPE | 7,990.96 | 3,995.5 | RW | TR05 | RE&CW | MS#03 | CON | HD |  |
| CP09-TR5-RW-1580 |  | Reinforced Concrete for Tie beam | 5d | 2026-02-16 A | 2026-04-10 A | CP09-TR5-RW-1570 SS+2.81d, CP09-TR5-RW-1570 FF+2.81d | 100% |  | 2026-01-26 | 2026-02-01 |  |  | Cost [9988.7]; Mason [48 h]; Steel Fixer [48 h]; Shutter [48 h]; Labor [48 h]; Reinforced Concrete | 9,988.7 | 4,994.5 | RW | TR05 | RE&CW | MS#03 | CON | HD |  |
| CP09-TR5-RW-1610 |  | Excavation | 3.75d | 2026-02-16 A | 2026-04-10 A | CP09-TR5-RW-1460, CP09-TR5-EW-1060, CP09-TR5-EW-1070 | 100% |  | 2026-01-14 | 2026-01-18 |  |  | Cost [5993.22]; EXCAVATOR [48 h]; LOADER [56 h]; TRUCK [56 h]; Labor [31 h]; Excavation [60.55 M3] | 5,993.22 | 2,996.5 | RW | TR05 | RE&CW | MS#03 | CON | HD |  |
| CP09-TR5-RW-1620 |  | Reinforced Concrete for beam | 7.5d | 2026-02-16 A | 2026-04-10 A | CP09-TR5-RW-1600 SS+3.75d, CP09-TR5-RW-1600 FF+3.75d | 100% |  | 2026-02-09 | 2026-02-17 |  |  | Cost [19977.4]; Mason [12 h]; Steel Fixer [207 h]; Shutter [17 h]; Labor [48 h]; Reinforced Concrete [4.14 M3] | 19,977.39 | 5,993.1 | RW | TR05 | RE&CW | MS#03 | CON | HD |  |
| CP09-TR5-RW-1640 |  | Backfilling | 5.62d | 2026-02-16 A | 2026-04-28 A | CP09-TR5-RW-1630 SS+2.81d, CP09-TR5-RW-1630 FF+2.81d | 100% |  | 2026-02-23 | 2026-03-02 |  |  | Cost [7990.96]; Labor [25 h]; Backfilling [41.14 M3] | 7,990.96 | 2,397.3 | RW | TR05 | RE&CW | MS#03 | CON | HD |  |
| CP09-TR5-RW-1570 |  | Reinforced Concrete for Footing | 6.56d | 2026-02-22 A | 2026-04-10 A | CP09-TR5-RW-1560 SS+2.81d, CP09-TR5-RW-1560 FF+2.81d, CP09-EN-TR5-A-1850, CP09-EN-TR5-A-1860 | 100% |  | 2026-01-20 | 2026-01-28 |  |  | Cost [59932.2]; Mason [48 h]; Steel Fixer [45 h]; Shutter [48 h]; Labor [48 h]; Reinforced Concrete [12.94 M3] | 59,932.18 | 29,966 | RW | TR05 | RE&CW | MS#03 | CON | HD |  |
| CP09-TR5-RW-1590 |  | Reinforced Concrete for Column | 5.62d | 2026-02-22 A | 2026-04-10 A | CP09-TR5-RW-1580 SS+2.81d, CP09-TR5-RW-1580 FF+2.81d | 100% |  | 2026-01-29 | 2026-02-04 |  |  | Cost [9988.7]; Mason [48 h]; Steel Fixer [48 h]; Shutter [48 h]; Labor [48 h]; Reinforced Concrete | 9,988.7 | 4,994.5 | RW | TR05 | RE&CW | MS#03 | CON | HD |  |
| CP09-TR5-RW-1600 |  | Soild Block Work | 5.62d | 2026-02-22 A | 2026-04-10 A | CP09-TR5-RW-1590 SS+5.62d, CP09-TR5-RW-1590 FF+5.62d, CP09-EN-TR5-A-1880 | 100% |  | 2026-02-04 | 2026-02-11 |  |  | Cost [19977.4]; Mason [38 h]; Labor [48 h]; Blocks [10.35] | 19,977.39 | 9,988.5 | RW | TR05 | RE&CW | MS#03 | CON | HD |  |
| CP09-TR5-RW-1630 |  | Waterproofing & Protection | 6.56d | 2026-02-22 A | 2026-04-10 A | CP09-TR5-RW-1620 SS+7.5d, CP09-TR5-RW-1620 FF+7.5d | 100% |  | 2026-02-18 | 2026-02-26 |  |  | Cost [7990.96]; Mason [10.08 h]; Labor [48 h]; Waterproofing [14.49 M2] | 7,990.96 | 2,397.3 | RW | TR05 | RE&CW | MS#03 | CON | HD |  |
| CP09-TR5-RW-1650 |  | Marble Cladding | 8d | 2026-06-21 | 2026-06-29 | CP09-TR5-RW-1640 SS+4.69d, CP09-TR5-RW-1640 FF+4.69d, CP09-EN-TR5-A-1890, CP09-PR-CV-DY-1120 |  |  |  |  | -167.94d | 0d | Cost [39954.8]; Mason [88 h]; Labor [48 h]; Marble [31.05] | 39,955 |  | RW | TR05 | RE&CW | MS#03 | CON | HD |  |
| CP09-TR5-RW-1660 |  | Marble Copping | 8d | 2026-06-25 | 2026-07-05 | CP09-TR5-RW-1650 SS+4.69d, CP09-TR5-RW-1650 FF+4.69d, CP09-EN-TR5-A-1890, CP09-PR-CV-DY-1120 |  |  |  |  | -167.94d | 2d | Cost [9988.7]; Mason [160 h]; Labor [48 h]; Marble Coping [25.88] | 9,989 |  | RW | TR05 | RE&CW | MS#03 | CON | HD |  |
|  | 1 | **Irrigation Works** |  | 2026-02-16 | 2026-06-30 |  |  |  |  |  |  |  |  |  |  |  |  |  |  |  |  |  |
|  | 1 | **Sub-Main & Lateral** |  | 2026-02-16 | 2026-06-21 |  |  |  |  |  |  |  |  |  |  |  |  |  |  |  |  |  |
| CP09-TR5-IR-1240 |  | Sub-main & Lateral Pieps Testing | 3d | 2026-02-16 A | 2026-06-18 | CP09-TR5-IR-1230 SS+2d, CP09-TR5-IR-1230 FF+2d | 90% | 3d | 2025-12-31 | 2026-01-04 | -189.75d | 0d | Cost [96907.1] | 96,907.07 | 77,525.6 |  | TR05 | IRR-W | MS#03 | CON | SO | IRR |
| CP09-TR5-IR-1250 |  | Backfilling forSub-main & Lateral Pieps | 4d | 2026-02-16 A | 2026-06-21 | CP09-TR5-IR-1240 SS+2d, CP09-TR5-IR-1240 FF+2d | 90% | 4d | 2026-01-03 | 2026-01-07 | -189.75d | 0d | Cost [484535]; Labor [48 h]; Backfilling [7977.8 M3] | 484,535.36 | 387,628 |  | TR05 | IRR-W | MS#03 | CON | SO | IRR |
| CP09-TR5-IR-1220 |  | Excavation for Sub-main & Lateral Pieps | 4d | 2026-02-22 A | 2026-06-10 | CP09-EN-TR5-A-2080, CP09-TR5-HD-3190, CP09-TR4-IR-1140 | 90% | 4d | 2025-12-22 | 2025-12-27 | -189.75d | 0d | Cost [484535]; EXCAVATOR [4784 h]; LOADER [5744 h]; TRUCK [5744 h]; Excavation [7977.8 M3] | 484,535.36 | 387,628 |  | TR05 | IRR-W | MS#03 | CON | SO | IRR |
| CP09-TR5-IR-1230 |  | Sub-main & Lateral Pieps laying out and installation | 5d | 2026-02-22 A | 2026-06-16 | CP09-TR5-IR-1220 SS+2d, CP09-TR5-IR-1220 FF+5d, CP09-PR-IR-DY-1000 | 90% | 5d | 2025-12-27 | 2026-01-01 | -189.75d | 0d | Cost [872164]; PipeFitter [280 h]; Labor [48 h]; UPVC Pipes [7977.8 M] | 872,163.65 | 697,731.2 |  | TR05 | IRR-W | MS#03 | CON | SO | IRR |
|  | 2 | **Fittings & Accessories** |  | 2026-06-20 | 2026-06-30 |  |  |  |  |  |  |  |  |  |  |  |  |  |  |  |  |  |
| CP09-TR5-IR-1260 |  | Installation of Dripline | 10d | 2026-06-20 | 2026-06-30 | CP09-TR5-IR-1240, CP09-TR5-SF-1330 SS+2d, CP09-TR5-SF-1320, CP09-PR-IR-DY-1010 |  |  |  |  | -153d | 0d | Cost [789420]; Labor [280 h]; Dripline [29500 Nos_] | 789,420 |  |  | TR05 | IRR-W | MS#03 | CON | SO | IRR |
| CP09-TR5-IR-1270 |  | Installation of Sprinklers | 8d | 2026-06-20 | 2026-06-28 | CP09-TR5-IR-1260 SS, CP09-PR-IR-DY-1040 |  |  |  |  | -153d | 0d | Cost [57038.3]; Labor [48 h]; Sprinkle [84.1 Nos_] | 57,038 |  |  | TR05 | IRR-W | MS#03 | CON | SO | IRR |
| CP09-TR5-IR-1280 |  | Installation Valves & Rings | 4d | 2026-06-20 | 2026-06-23 | CP09-TR5-IR-1270 SS, CP09-PR-IR-DY-1030, CP09-PR-IR-DY-1020 |  |  |  |  | -153d | 0d | Cost [208328]; Valves [715.1]; Labor [48 h] | 208,328 |  |  | TR05 | IRR-W | MS#03 | CON | SO | IRR |
| CP09-TR5-IR-1290 |  | Installation of Electrical solenoid valve | 6d | 2026-06-20 | 2026-06-25 | CP09-TR5-IR-1280 SS, CP09-PR-IR-DY-1050 |  |  |  |  | -153d | 0d | Cost [439801]; Solenoid valve [22.4]; Labor [48 h] | 439,801 |  |  | TR05 | IRR-W | MS#03 | CON | SO | IRR |
| CP09-TR5-IR-1300 |  | Installation of Controller (decoder system plastic pedestal) | 6d | 2026-06-20 | 2026-06-25 | CP09-TR5-IR-1280 SS, CP09-TR5-IR-1290 SS, CP09-PR-IR-DY-1060 |  |  |  |  | -153d | 0d | Cost [262719]; Controller [1]; Labor [48 h] | 262,719 |  |  | TR05 | IRR-W | MS#03 | CON | SO | IRR |
| CP09-TR5-IR-1310 |  | Installation of Controller decoder cables | 6d | 2026-06-20 | 2026-06-25 | CP09-TR5-IR-1300 SS, CP09-PR-IR-DY-1070 |  |  |  |  | -153d | 0d | Cost [198024]; Controller Cable [1850]; Labor [48 h] | 198,024 |  |  | TR05 | IRR-W | MS#03 | CON | SO | IRR |
| CP09-TR5-IR-1320 |  | Installation of Decoder one station | 5d | 2026-06-20 | 2026-06-24 | CP09-TR5-IR-1310 SS, CP09-PR-IR-DY-1080 |  |  |  |  | -152d | 62.69d | Cost [212404]; Decoder station [28.4]; Labor [48 h] | 212,404 |  |  | TR05 | IRR-W | MS#03 | CON | SO | IRR |

| ID | WBS | Activity | Duration | Start | Finish | Predecessors | Complete | Remaining | Planned start | Planned finish | Total float | Free float | Resources | Cost | Actual cost | Networks | CP09_Terrace-7 | CP09-Trade | CP09_Milestone-7 | CP09_Discipline-7 | DES | Hardscape |
| --- | --- | --- | --- | --- | --- | --- | --- | --- | --- | --- | --- | --- | --- | --- | --- | --- | --- | --- | --- | --- | --- | --- |
|  | 4 | **Electrical Works** |  | 2026-02-09 | 2026-07-28 |  |  |  |  |  |  |  |  |  |  |  |  |  |  |  |  |  |
|  | 1 | **Power Cable & Pillars** |  | 2026-02-09 | 2026-07-28 |  |  |  |  |  |  |  |  |  |  |  |  |  |  |  |  |  |
| CP09-TR5-EL-1090 |  | Installation of Power Cables | 4d | 2026-02-09 A | 2026-06-14 | CP09-TR5-EL-1080 SS+2d, CP09-TR5-EL-1080 FF+2d, CP09-EN-TR5-A-2040, CP09-EN-TR5-A-2050, CP09-PR-EL-DY-1060 | 85% | 4d | 2026-01-05 | 2026-01-08 | -205.81d | 0d | Cost [898956]; Electrical Cable [6974.38]; Electrican [280 h]; Labor [48 h] | 898,955.77 | 179,791.2 | ELEC | TR05 | EL-W | MS#03 | CON | HD |  |
| CP09-TR5-EL-1100 |  | Backfilling for Power Cables | 4d | 2026-02-09 A | 2026-06-16 | CP09-TR5-EL-1090 SS+2d, CP09-TR5-EL-1090 FF+2d | 85% | 4d | 2026-01-07 | 2026-01-11 | -205.81d | 0d | Cost [224739]; Backfilling [6974.38 M3] | 224,738.94 | 44,947.8 | ELEC | TR05 | EL-W | MS#03 | CON | HD |  |
| CP09-TR5-EL-1080 |  | Excavation | 5d | 2026-02-16 A | 2026-06-11 | CP09-TR5-EW-1060, CP09-TR5-EW-1070, CP09-TR5-IR-1250, CP09-EN-TR5-A-2040, CP09-TR4-EL-1060 | 85% | 5d | 2026-01-01 | 2026-01-06 | -205.81d | 0d | Cost [374565]; EXCAVATOR [3344 h]; LOADER [4016 h]; TRUCK [4016 h]; Excavation [6974.38 M3] | 374,564.9 | 74,913 | ELEC | TR05 | EL-W | MS#03 | CON | HD |  |
| CP09-TR5-EL-1110 |  | Installation of Connecting Pillars | 15d | 2026-07-12 | 2026-07-28 | CP09-TR5-HD-2940, CP09-PR-EL-DY-1070 |  |  |  |  | -181d | 33.69d | Cost [428687]; Pillars [3]; Electrican [48 h]; Labor [48 h] | 428,687 |  | ELEC | TR05 | EL-W | MS#03 | CON | HD |  |
|  | 3 | **Hardscape** |  | 2024-11-24 | 2026-08-31 |  |  |  |  |  |  |  |  |  |  |  |  |  |  |  |  |  |
|  | 6 | **Concrete Curb** |  | 2026-02-22 | 2026-05-15 |  |  |  |  |  |  |  |  |  |  |  |  |  |  |  |  |  |
| CP09-TR5-HD-2900 |  | Plains Concrete with HDPE waterproofing | 2d | 2026-02-22 A | 2026-04-10 A | CP09-TR5-HD-2890, CP09-EN-TR5-A-1970 | 100% |  | 2026-02-28 | 2026-03-01 |  |  | Cost [475850]; Plain Concrete [1121.49 M3]; HDPE | 475,850 |  |  | TR05 | HS | MS#03 | CON | HD | CURB |
| CP09-TR5-HD-3170 |  | Under Paving Reinforced Concrete Curb | 4d | 2026-02-22 A | 2026-04-10 A | CP09-TR5-HD-2900 SS+1.88d, CP09-TR5-HD-2900 FF+1.88d | 100% |  | 2026-03-01 | 2026-03-05 |  |  | Cost [951701]; Mason [144 h]; Steel Fixer [269 h]; Shutter [513 h]; Labor [48 h]; Reinforced Concrete [128.17 M3] | 951,701 |  |  | TR05 | HS | MS#03 | CON | HD | CURB |
| CP09-TR5-HD-3190 |  | Instal Flush Curb | 3d | 2026-02-22 A | 2026-05-15 A | CP09-EN-TR5-A-1970, CP09-PR-HD-DY-1080, CP09-TR5-HD-3170 SS+3d, CP09-TR5-HD-3170 FF+3d | 100% |  | 2026-03-05 | 2026-03-09 |  |  | Cost [116047]; Mason [160 h]; Labor [48 h]; Flush Curb [360.25] | 116,047 |  |  | TR05 | HS | MS#03 | CON | HD | CURB |
| CP09-TR5-HD-2890 |  | Excavation | 2d | 2026-03-02 A | 2026-04-10 A | CP09-TR5-EW-1060, CP09-TR5-EW-1070, CP09-TR5-EW-1080, CP09-TR4-HD-2380 | 100% |  | 2026-03-17 | 2026-03-18 |  |  | Cost [158617]; EXCAVATOR [312 h]; LOADER [368 h]; TRUCK [368 h]; Excavation [384.51 M3] | 158,617 |  |  | TR05 | HS | MS#03 | CON | HD | CURB |
|  | 1 | **Side wake & Plazes** |  | 2026-02-16 | 2026-07-13 |  |  |  |  |  |  |  |  |  |  |  |  |  |  |  |  |  |
|  | 8 | **Interlocking Paving** |  | 2026-02-22 | 2026-04-28 |  |  |  |  |  |  |  |  |  |  |  |  |  |  |  |  |  |
| CP09-TR5-HD-2910 |  | Crush Stone for Interlock Types IL-(01,02,06,07) | 6.56d | 2026-02-22 A | 2026-04-28 A | CP09-EN-TR5-A-1980, CP09-TR5-EW-1060, CP09-TR5-EW-1070, CP09-TR5-IR-1250, CP09-TR5-EL-1100, CP09-PR-HD-DY-1090, CP09-TR4-HD-2130 | 100% |  | 2026-02-23 | 2026-03-02 |  |  | Cost [410521]; Mason [280 h]; Labor [48 h]; Crushed Stone [2325.12] | 410,521 |  |  | TR05 | HS | MS#03 | CON | HD | INTK |
| CP09-TR5-HD-2920 |  | Sand Layer for Interlock Types IL-(01,02,06,07) | 10d | 2026-02-22 A | 2026-04-28 A | CP09-TR5-HD-2910 SS+5d, CP09-TR5-HD-2910 FF+5d, CP09-EN-TR5-A-1980 | 100% |  | 2026-03-01 | 2026-03-11 |  |  | Cost [279178]; Mason [48 h]; Labor [280 h]; Clean sand [2321.5] | 279,178 |  |  | TR05 | HS | MS#03 | CON | HD | INTK |
| CP09-TR5-HD-2930 |  | Motar Bed Interlock Types IL-(03,04,08,09,10) | 10d | 2026-02-22 A | 2026-04-28 A | CP09-TR5-HD-2920 SS, CP09-EN-TR5-A-1980 | 100% |  | 2026-03-01 | 2026-03-11 |  |  | Cost [68357.3]; Mason [48 h]; Labor [48 h] | 68,357 |  |  | TR05 | HS | MS#03 | CON | HD | INTK |
| CP09-TR5-HD-2940 |  | Interlocking Paving | 15d | 2026-02-22 A | 2026-04-28 A | CP09-TR5-HD-2920 SS+2.81d, CP09-TR5-HD-2930 SS+2.81d, CP09-TR5-HD-2920 FF+2.81d, CP09-TR5-HD-2930 FF+2.81d, CP09-EN-TR5-A-1980, CP09-PR-HD-DY-1180 | 100% |  | 2026-03-03 | 2026-03-21 |  |  | Cost [521304]; Mason [280 h]; Labor [48 h]; Interlock [2966] | 521,304 |  |  | TR05 | HS | MS#03 | CON | HD | INTK |
|  | 2 | **Concrete in Situ** |  | 2026-02-22 | 2026-06-17 |  |  |  |  |  |  |  |  |  |  |  |  |  |  |  |  |  |
|  | 1 | **Slab on Garde** |  | 2026-02-22 | 2026-06-13 |  |  |  |  |  |  |  |  |  |  |  |  |  |  |  |  |  |
| CP09-TR5-HD-2680 |  | Plain Concrete with HDPE | 3.75d | 2026-02-22 A | 2026-06-10 | CP09-TR5-HD-2940, CP09-TR5-EW-1060, CP09-TR5-EW-1070, CP09-TR5-IR-1250, CP09-TR5-EL-1100, CP09-EN-TR5-A-1900 | 85% | 3.75d | 2026-03-05 | 2026-03-10 | -111.75d | 137.31d | Cost [577969]; Mason [280 h]; Labor [48 h]; Plain Concrete [3339.88 M3]; HDPE | 577,968.71 | 404,578.3 |  | TR05 | HS | MS#03 | CON | HD | CON |
| CP09-TR5-HD-2690 |  | Reinfored Concrete slab on grade | 5.62d | 2026-04-13 A | 2026-06-13 | CP09-TR5-HD-2680 | 85% | 5.62d | 2026-04-15 | 2026-04-22 | -113.62d | 135.44d | Cost [1444922]; Mason [48 h]; Steel Fixer [192 h]; Shutter [48 h]; Labor [48 h]; Reinforced Concrete [333.99 M3] | 1,444,922 |  |  | TR05 | HS | MS#03 | CON | HD | CON |
| CP09-TR5-HD-2700 |  | Waterproofing & Screed | 3.75d | 2026-04-13 A | 2026-06-10 | CP09-TR5-HD-2690 | 85% | 3.75d | 2026-04-22 | 2026-04-27 | -111.75d | 137.31d | Cost [288984]; Mason [280 h]; Labor [48 h]; Waterproofing [3339.88 M2] | 288,984 |  |  | TR05 | HS | MS#03 | CON | HD | CON |
|  | 2 | **Concrete In-situ w./Exposed Aggregate Finish** |  | 2026-04-13 | 2026-06-17 |  |  |  |  |  |  |  |  |  |  |  |  |  |  |  |  |  |
| CP09-TR5-HD-2710 |  | Concrete casting (including Joints & Wire Mish) | 9.38d | 2026-04-13 A | 2026-06-17 | CP09-TR5-HD-2700, CP09-TR5-HD-3190, CP09-EN-TR5-A-1900, CP09-PR-HD-DY-1000 | 85% | 9.38d | 2026-04-27 | 2026-05-07 | -117.38d | 131.69d | Cost [2600859]; Mason [280 h]; Labor [48 h]; Concrete /Exposed Aggregate [3339.88] | 2,600,859 |  |  | TR05 | HS | MS#03 | CON | HD | CON |
| CP09-TR5-HD-2720 |  | Finishing Concrete Surface | 5d | 2026-04-13 A | 2026-06-11 | CP09-TR5-HD-2710, CP09-TR5-RW-1540, CP09-TR5-RW-1550, CP09-TR5-RW-1650, CP09-TR5-RW-1660 | 85% | 5d | 2026-05-12 | 2026-05-18 | -166.75d | 1.56d | Cost [866953]; Mason [48 h]; Labor [48 h] | 866,953 |  |  | TR05 | HS | MS#03 | CON | HD | CON |

| ID | WBS | Activity | Duration | Start | Finish | Predecessors | Complete | Remaining | Planned start | Planned finish | Total float | Free float | Resources | Cost | Actual cost | Hardscape | CP09_Terrace-7 | CP09-Trade | CP09_Milestone-7 | CP09_Discipline-7 | DES |
| --- | --- | --- | --- | --- | --- | --- | --- | --- | --- | --- | --- | --- | --- | --- | --- | --- | --- | --- | --- | --- | --- |
|  | 1 | **Marble Paving** |  | 2026-02-16 | 2026-04-28 |  |  |  |  |  |  |  |  |  |  |  |  |  |  |  |  |
|  | 1 | **Slab on Garde** |  | 2026-02-22 | 2026-04-24 |  |  |  |  |  |  |  |  |  |  |  |  |  |  |  |  |
| CP09-TR5-HD-2630 |  | Plain Concrete with HDPE | 3.75d | 2026-02-22 A | 2026-04-24 A | CP09-TR5-HD-2940, CP09-TR5-EW-1060, CP09-TR5-EW-1080, CP09-TR5-IR-1250, CP09-TR5-EL-1100, CP09-EN-TR5-A-1910 | 100% |  | 2026-02-19 | 2026-02-24 |  |  | Cost [173552]; Mason [160 h]; Labor [48 h]; Plain Concrete [808.88 M3]; HDPE | 173,552.22 | 173,552.22 | MRB | TR05 | HS | MS#03 | CON | HD |
| CP09-TR5-HD-2640 |  | Reinfored Concrete slab on grade | 5.62d | 2026-02-22 A | 2026-04-24 A | CP09-TR5-HD-2630 | 100% |  | 2026-02-24 | 2026-03-03 |  |  | Cost [416525]; Mason [48 h]; Steel Fixer [170 h]; Shutter [48 h]; Labor [48 h]; Reinforced Concrete [80.89 M3] | 416,525.33 | 333,220 | MRB | TR05 | HS | MS#03 | CON | HD |
| CP09-TR5-HD-2650 |  | Waterproofing & Screed | 5d | 2026-02-22 A | 2026-04-24 A | CP09-TR5-HD-2640 | 100% |  | 2026-01-03 | 2026-01-08 |  |  | Cost [104131]; Mason [160 h]; Labor [48 h]; Waterproofing [808.88 M2] | 104,131.33 | 83,304.8 | MRB | TR05 | HS | MS#03 | CON | HD |
|  | 2 | **Marble Tiles** |  | 2026-02-16 | 2026-04-28 |  |  |  |  |  |  |  |  |  |  |  |  |  |  |  |  |
| CP09-TR5-HD-2660 |  | Marble Fixiation | 7d | 2026-02-16 A | 2026-04-28 A | CP09-TR5-HD-2650, CP09-TR5-HD-3190, CP09-EN-TR5-A-1910, CP09-PR-HD-DY-1010 | 100% |  | 2026-01-26 | 2026-02-03 |  |  | Cost [2283133]; Mason [280 h]; Labor [48 h]; Marble [1120.38] | 2,283,132.51 | 1,826,506.4 | MRB | TR05 | HS | MS#03 | CON | HD |
| CP09-TR5-HD-2670 |  | Marble Surfcae Finishing | 4d | 2026-02-22 A | 2026-04-28 A | CP09-TR5-HD-2660, CP09-TR5-HD-2720 SS | 100% |  | 2026-04-01 | 2026-04-06 |  |  | Cost [402906]; Mason [48 h]; Labor [48 h]; Marble | 402,905.74 | 181,307.7 | MRB | TR05 | HS | MS#03 | CON | HD |
|  | 3 | **Wooden Floor Boards** |  | 2026-05-11 | 2026-06-18 |  |  |  |  |  |  |  |  |  |  |  |  |  |  |  |  |
|  | 1 | **Slab on Garde** |  | 2026-05-11 | 2026-06-11 |  |  |  |  |  |  |  |  |  |  |  |  |  |  |  |  |
| CP09-TR5-HD-2730 |  | Plain Concrete with HDPE | 2.81d | 2026-05-11 A | 2026-05-15 A | CP09-TR5-HD-2940, CP09-TR5-HD-2640, CP09-TR5-EW-1060, CP09-TR5-EW-1070, CP09-TR5-IR-1250, CP09-TR5-EL-1100, CP09-EN-TR5-A-1920 | 100% |  | 2026-05-16 | 2026-05-18 |  |  | Cost [116181]; Mason [160 h]; Labor [48 h]; Plain Concrete [395.25 M3]; HDPE | 116,181 |  | WPC | TR05 | HS | MS#03 | CON | HD |
| CP09-TR5-HD-2740 |  | Reinfored Concrete slab on grade | 5d | 2026-05-11 A | 2026-06-11 | CP09-TR5-HD-2730 | 20% | 5d | 2026-05-19 | 2026-05-25 | -181.75d | 8d | Cost [278834]; Mason [48 h]; Steel Fixer [83 h]; Shutter [48 h]; Labor [48 h]; Reinforced Concrete [39.52 M3] | 278,834 |  | WPC | TR05 | HS | MS#03 | CON | HD |
| CP09-TR5-HD-2750 |  | Waterproofing & Screed | 2.81d | 2026-05-11 A | 2026-05-15 A | CP09-TR5-HD-2740 | 100% |  | 2026-05-25 | 2026-05-28 |  |  | Cost [69708]; Mason [160 h]; Labor [48 h]; Waterproofing [395.25 M2] | 69,708 | 69,708 | WPC | TR05 | HS | MS#03 | CON | HD |
|  | 2 | **Wood- Plastic Composit** |  | 2026-06-07 | 2026-06-18 |  |  |  |  |  |  |  |  |  |  |  |  |  |  |  |  |
| CP09-TR5-HD-2760 |  | WPC Installation | 6.56d | 2026-06-07 | 2026-06-14 | CP09-TR5-HD-2750, CP09-TR5-HD-3190, CP09-EN-TR5-A-1920, CP09-PR-HD-DY-1020 |  |  |  |  | -168.31d | 0d | Cost [1816040]; WPC [528] | 1,816,040 |  | WPC | TR05 | HS | MS#03 | CON | HD |
| CP09-TR5-HD-2770 |  | WPC surface finishing & Accessories | 3.75d | 2026-06-14 | 2026-06-18 | CP09-TR5-HD-2760, CP09-TR5-HD-2670, CP09-TR5-HD-2720 |  |  |  |  | -168.31d | 21.44d | Cost [454010] | 454,010 |  | WPC | TR05 | HS | MS#03 | CON | HD |
|  | 4 | **Gravel layer** |  | 2026-06-22 | 2026-07-06 |  |  |  |  |  |  |  |  |  |  |  |  |  |  |  |  |
|  | 1 | **Slab on Garde** |  | 2026-06-22 | 2026-06-28 |  |  |  |  |  |  |  |  |  |  |  |  |  |  |  |  |
| CP09-TR5-HD-2780 |  | Plain Concrete with HDPE | 2.81d | 2026-06-22 | 2026-06-24 | CP09-TR5-HD-2940, CP09-TR5-HD-2740, CP09-TR5-EW-1060, CP09-TR5-EW-1070, CP09-TR5-IR-1250, CP09-TR5-EL-1100, CP09-EN-TR5-A-1930 |  |  |  |  | -189.75d | 0d | Cost [7507.48]; Mason [90 h]; Labor [48 h]; Plain Concrete [128.88 M3]; HDPE | 7,507 |  | GRV | TR05 | HS | MS#03 | CON | HD |
| CP09-TR5-HD-2800 |  | Mortar bed | 2.81d | 2026-06-24 | 2026-06-28 | CP09-TR5-HD-2780 |  |  |  |  | -189.75d | 0d | Cost [7507.48]; Mason [48 h]; Labor [48 h] | 7,507 |  | GRV | TR05 | HS | MS#03 | CON | HD |
|  | 2 | **Gravel Layer, w./Earth Colors** |  | 2026-06-28 | 2026-07-06 |  |  |  |  |  |  |  |  |  |  |  |  |  |  |  |  |
| CP09-TR5-HD-2810 |  | Furnish & install Garvel Layer | 6.56d | 2026-06-28 | 2026-07-06 | CP09-TR5-HD-2800, CP09-TR5-HD-3190, CP09-EN-TR5-A-1930, CP09-PR-HD-DY-1030 |  |  |  |  | -189.75d | 0d | Cost [35034.9]; Mason [77 h]; Labor [48 h]; Gravel Layer [128.88] | 35,035 |  | GRV | TR05 | HS | MS#03 | CON | HD |
|  | 5 | **Crushed Stone** |  | 2026-06-24 | 2026-07-13 |  |  |  |  |  |  |  |  |  |  |  |  |  |  |  |  |
|  | 1 | **Slab on Garde** |  | 2026-06-24 | 2026-07-01 |  |  |  |  |  |  |  |  |  |  |  |  |  |  |  |  |
| CP09-TR5-HD-2820 |  | Geotextile membrane | 2.81d | 2026-06-24 | 2026-06-28 | CP09-TR5-HD-2940, CP09-TR5-HD-2780, CP09-TR5-EW-1060, CP09-TR5-EW-1070, CP09-TR5-IR-1250, CP09-TR5-EL-1100, CP09-EN-TR5-A-1940 |  |  |  |  | -183.19d | 0d | Cost [3164.14]; Mason [48 h]; Labor [4 h]; Geotextile Sheets [13.25] | 3,164 |  | CRST | TR05 | HS | MS#03 | CON | HD |
| CP09-TR5-HD-2840 |  | Gravel fix sheets | 3d | 2026-06-28 | 2026-07-01 | CP09-TR5-HD-2820 |  |  |  |  | -183.19d | 6.56d | Cost [3164.14]; Waterproofing | 3,164 |  | CRST | TR05 | HS | MS#03 | CON | HD |

| ID | WBS | Activity | Duration | Start | Finish | Predecessors | Complete | Remaining | Planned start | Planned finish | Total float | Free float | Resources | Cost | Actual cost | Hardscape | CP09_Terrace-7 | CP09-Trade | CP09_Milestone-7 | CP09_Discipline-7 | DES |
| --- | --- | --- | --- | --- | --- | --- | --- | --- | --- | --- | --- | --- | --- | --- | --- | --- | --- | --- | --- | --- | --- |
|  | 2 | **Crushed Dolomite Stone** |  | 2026-07-06 | 2026-07-13 |  |  |  |  |  |  |  |  |  |  |  |  |  |  |  |  |
| CP09-TR5-HD-2850 |  | Furnish & Install Crushed Dolomite stone , w./ mixed colors | 6.56d | 2026-07-06 | 2026-07-13 | CP09-TR5-HD-2840 FF, CP09-TR5-HD-2840 SS, CP09-TR5-HD-2810, CP09-TR5-HD-3190, CP09-EN-TR5-A-1940, CP09-PR-HD-DY-1040 |  |  |  |  | -189.75d | 0d | Cost [14766]; Mason [37 h]; Labor [48 h]; Crushed Dolomite stone [13.25] | 14,766 |  | CRST | TR05 | HS | MS#03 | CON | HD |
|  | 6 | **Loose Gravel** |  | 2026-06-24 | 2026-07-02 |  |  |  |  |  |  |  |  |  |  |  |  |  |  |  |  |
|  | 2 | **Loose Gravel 50mm** |  | 2026-06-24 | 2026-07-02 |  |  |  |  |  |  |  |  |  |  |  |  |  |  |  |  |
| CP09-TR5-HD-2860 |  | Furnish & Install loose gravel w./earth colors. | 6.56d | 2026-06-24 | 2026-07-02 | CP09-TR5-HD-2940, CP09-TR5-HD-2780, CP09-TR5-HD-3190, CP09-TR5-IR-1250, CP09-TR5-EL-1100, CP09-EN-TR5-A-1950, CP09-PR-HD-DY-1050 |  |  |  |  | -180.38d | 9.38d | Cost [8429.21]; Mason [19 h]; Labor [48 h]; Loose gravel [31.38] | 8,429 |  | LGRV | TR05 | HS | MS#03 | CON | HD |
|  | 7 | **Clean Sand Layer** |  | 2026-05-11 | 2026-06-11 |  |  |  |  |  |  |  |  |  |  |  |  |  |  |  |  |
|  | 1 | **Kids & Fitness Area** |  | 2026-05-11 | 2026-06-11 |  |  |  |  |  |  |  |  |  |  |  |  |  |  |  |  |
| CP09-TR5-HD-2870 |  | Geotextile Sheets | 5d | 2026-05-11 A | 2026-06-11 | CP09-TR5-HD-2940, CP09-TR5-HD-2860, CP09-TR5-EW-1060, CP09-TR5-EW-1070, CP09-TR5-HD-3190, CP09-TR5-IR-1250, CP09-TR5-EL-1100, CP09-EN-TR5-A-1960 | 50% | 5d | 2026-06-04 | 2026-06-10 | -113d | 136.06d | Cost [65290.1]; Geotextile Sheets [1227.62] | 65,290 |  | SND | TR05 | HS | MS#03 | CON | HD |
| CP09-TR5-HD-2880 |  | Install Clean sand layer | 5d | 2026-05-11 A | 2026-06-11 | CP09-TR5-HD-2870, CP09-TR5-HD-2860, CP09-TR5-HD-3190, CP09-EN-TR5-A-1960, CP09-PR-HD-DY-1070 | 50% | 5d | 2026-06-10 | 2026-06-16 | -156d | 0d | Cost [261160]; Clean sand [1227.62] | 261,160 |  | SND | TR05 | HS | MS#03 | CON | HD |
|  | 2 | **Site Improvments** |  | 2024-11-24 | 2026-08-31 |  |  |  |  |  |  |  |  |  |  |  |  |  |  |  |  |
|  | 1 | **Marble Steps** |  | 2026-01-25 | 2026-06-16 |  |  |  |  |  |  |  |  |  |  |  |  |  |  |  |  |
| CP09-TR5-HD-2950 |  | Reinforecd Concrete Step. | 5.62d | 2026-01-25 A | 2026-06-13 | CP09-TR5-RW-1640, CP09-TR5-EW-1060, CP09-TR5-EW-1070, CP09-EN-TR5-A-1990, CP09-TR5-IR-1250, CP09-TR5-EL-1100 | 50% | 5.62d | 2026-02-05 | 2026-02-12 | -146.06d | 0d | Cost [255883]; Mason [48 h]; Steel Fixer [48 h]; Shutter [48 h]; Labor [48 h]; Reinforced Concrete | 255,882.62 | 89,559.05 | STP | TR05 | HS | MS#03 | CON | HD |
| CP09-TR5-HD-2960 |  | Install Marble Blocks | 6.56d | 2026-05-11 A | 2026-06-16 | CP09-TR5-HD-2950 SS+2.81d, CP09-TR5-HD-2950 FF+2.81d, CP09-PR-HD-DY-1100 | 50% | 6.56d | 2026-05-18 | 2026-05-26 | -146.06d | 23.88d | Cost [162834]; Marble Step [6.38] | 162,834 |  | STP | TR05 | HS | MS#03 | CON | HD |
| CP09-TR5-HD-2970 |  | Finishing Marble Surface | 5d | 2026-05-11 A | 2026-06-11 | CP09-TR5-HD-2960, CP09-TR5-RW-1540, CP09-TR5-RW-1550, CP09-TR5-RW-1650, CP09-TR5-RW-1660 | 50% | 5d | 2026-06-16 | 2026-06-22 | -137d | 68.81d | Cost [46524.1] | 46,524 |  | STP | TR05 | HS | MS#03 | CON | HD |
|  | 2 | **Curvelinear Block Seat** |  | 2024-11-24 | 2026-07-14 |  |  |  |  |  |  |  |  |  |  |  |  |  |  |  |  |
| CP09-TR5-HD-3020 |  | Waterproofing & Protection | 3.75d | 2024-11-24 A | 2026-04-28 A | CP09-TR5-HD-3010 | 100% |  | 2026-03-14 | 2026-03-18 |  |  | Cost [24972.4]; Waterproofing [9.22 M2] | 24,972 |  | SEAT | TR05 | HS | MS#03 | CON | HD |
| CP09-TR5-HD-2980 |  | Excavation | 2.81d | 2025-05-18 A | 2026-04-28 A | CP09-TR5-RW-1620, CP09-TR5-EW-1060, CP09-TR5-EW-1070, CP09-EN-TR5-A-2000, CP09-TR5-EL-1100 | 100% |  | 2026-02-22 | 2026-02-25 |  |  | Cost [9988.94]; EXCAVATOR [48 h]; LOADER [56 h]; TRUCK [56 h]; Excavation [59.96 M3] | 9,989 |  | SEAT | TR05 | HS | MS#03 | CON | HD |
| CP09-TR5-HD-2990 |  | Plaing Concrete with HPDE | 3.75d | 2025-05-18 A | 2026-04-28 A | CP09-TR5-HD-2980 | 100% |  | 2026-02-25 | 2026-03-01 |  |  | Cost [12486.2]; Mason [24 h]; Labor [48 h]; Plain Concrete [34.59 M3]; HDPE | 12,486 |  | SEAT | TR05 | HS | MS#03 | CON | HD |
| CP09-TR5-HD-3000 |  | Reinforced Concrete for Footing | 5.62d | 2025-12-01 A | 2026-04-28 A | CP09-TR5-HD-2990 | 100% |  | 2026-03-01 | 2026-03-08 |  |  | Cost [74917.1]; Mason [48 h]; Steel Fixer [31 h]; Shutter [48 h]; Labor [48 h]; Reinforced Concrete [8.84 M3] | 74,917 |  | SEAT | TR05 | HS | MS#03 | CON | HD |
| CP09-TR5-HD-3010 |  | Reinforced Concrete for beam | 5d | 2025-12-22 A | 2026-04-28 A | CP09-TR5-HD-3000 | 100% |  | 2026-03-08 | 2026-03-14 |  |  | Cost [24972.4]; Mason [5 h]; Steel Fixer [77 h]; Shutter [6 h]; Labor [48 h]; Reinforced Concrete [1.54 M3] | 24,972 |  | SEAT | TR05 | HS | MS#03 | CON | HD |
| CP09-TR5-HD-3030 |  | Backfilling | 2.81d | 2026-02-16 A | 2026-04-28 A | CP09-TR5-HD-3020 | 100% |  | 2026-03-18 | 2026-03-22 |  |  | Cost [14983.4]; Backfilling [40.74 M3] | 14,983 |  | SEAT | TR05 | HS | MS#03 | CON | HD |
| CP09-TR5-HD-3040 |  | Marble Capping | 5.62d | 2026-07-07 | 2026-07-14 | CP09-TR5-RW-1650, CP09-TR5-RW-1660, CP09-TR5-RW-1540, CP09-TR5-RW-1550, CP09-TR5-HD-3030, CP09-PR-HD-DY-1110 |  |  |  |  | -169.94d | 0d | Cost [87403.2]; Mason [160 h]; Labor [48 h]; Marble Coping [25.62] | 87,403 |  | SEAT | TR05 | HS | MS#03 | CON | HD |
|  | 3 | **Pools Shower-03** |  | 2026-06-17 | 2026-08-31 |  |  |  |  |  |  |  |  |  |  |  |  |  |  |  |  |
| CP09-TR5-HD-3050 |  | Plain Concrete Basin | 5d | 2026-06-17 | 2026-06-22 | CP09-TR5-HD-3190, CP09-EN-TR5-A-2010, CP09-TR5-EL-1100 |  |  |  |  | -205.81d | 0d | Cost [5183.94]; Mason [5 h]; Labor [48 h]; Plain Concrete [7 M3] | 5,184 |  | PLSHW | TR05 | HS | MS#03 | CON | HD |
| CP09-TR5-HD-3060 |  | R.Concrete Basin | 7d | 2026-06-23 | 2026-06-30 | CP09-TR5-HD-3050 |  |  |  |  | -205.81d | 0d | Cost [20735.8]; Mason [48 h]; Steel Fixer [5 h]; Shutter [48 h]; Labor [48 h]; Reinforced Concrete [1.5 M3] | 20,736 |  | PLSHW | TR05 | HS | MS#03 | CON | HD |
| CP09-TR5-HD-3070 |  | Solid Block Work | 7d | 2026-07-01 | 2026-07-08 | CP09-TR5-HD-3060 |  |  |  |  | -205.81d | 0d | Cost [2073.57]; Mason [48 h]; Labor [48 h]; Blocks [0.25] | 2,074 |  | PLSHW | TR05 | HS | MS#03 | CON | HD |
| CP09-TR5-HD-3080 |  | Water Proofing | 5d | 2026-07-09 | 2026-07-14 | CP09-TR5-HD-3070 |  |  |  |  | -205.81d | 0d | Cost [2591.97]; Mason [5.04 h]; Labor [48 h] | 2,592 |  | PLSHW | TR05 | HS | MS#03 | CON | HD |
| CP09-TR5-HD-3090 |  | Backfilling | 5d | 2026-07-15 | 2026-07-20 | CP09-TR5-HD-3080 |  |  |  |  | -205.81d | 0d | Cost [1555.18]; Labor [2 h] | 1,555 |  | PLSHW | TR05 | HS | MS#03 | CON | HD |
| CP09-TR5-HD-3100 |  | Mica Stone Cladding | 5d | 2026-07-21 | 2026-07-26 | CP09-TR5-HD-3090, CP09-PR-HD-DY-1120 |  |  |  |  | -205.81d | 0d | Cost [20735.8]; Mason [11 h]; Labor [48 h] | 20,736 |  | PLSHW | TR05 | HS | MS#03 | CON | HD |
| CP09-TR5-HD-3110 |  | Mica Stone Capping | 5d | 2026-07-27 | 2026-08-01 | CP09-TR5-HD-3100, CP09-PR-HD-DY-1120 |  |  |  |  | -205.81d | 0d | Cost [2073.57]; Mason [1 h]; Labor [48 h] | 2,074 |  | PLSHW | TR05 | HS | MS#03 | CON | HD |
| CP09-TR5-HD-3120 |  | Drainage Cover with Geotextile | 5d | 2026-08-02 | 2026-08-06 | CP09-TR5-HD-3110, CP09-PR-HD-DY-1060 |  |  |  |  | -205.81d | 0d | Cost [12441.5] | 12,441 |  | PLSHW | TR05 | HS | MS#03 | CON | HD |
| CP09-TR5-HD-3130 |  | Blast stone blocks for Flooring | 6d | 2026-08-08 | 2026-08-13 | CP09-TR5-HD-3120, CP09-PR-HD-DY-1130 |  |  |  |  | -205.81d | 0d | Cost [15551.8]; Mason [9 h]; Labor [48 h] | 15,552 |  | PLSHW | TR05 | HS | MS#03 | CON | HD |
| CP09-TR5-HD-3140 |  | Blast Stone Blocks Capping | 6d | 2026-08-15 | 2026-08-20 | CP09-TR5-HD-3130, CP09-PR-HD-DY-1130 |  |  |  |  | -205.81d | 0d | Cost [5183.94]; Mason [16 h]; Labor [48 h] | 5,184 |  | PLSHW | TR05 | HS | MS#03 | CON | HD |
| CP09-TR5-HD-3150 |  | Loose Rounded Pebbles | 6d | 2026-08-22 | 2026-08-27 | CP09-TR5-HD-3140, CP09-PR-HD-DY-1140 |  |  |  |  | -205.81d | 0d | Cost [5183.94]; Mason [48 h]; Labor [48 h] | 5,184 |  | PLSHW | TR05 | HS | MS#03 | CON | HD |
| CP09-TR5-HD-3160 |  | Shower Head Fixation | 2.81d | 2026-08-29 | 2026-08-31 | CP09-TR5-HD-3150, CP09-TR5-HD-3130, CP09-TR5-HD-3140, CP09-PR-HD-DY-1150 |  |  |  |  | -205.81d | 0d | Cost [10367.9] | 10,368 |  | PLSHW | TR05 | HS | MS#03 | CON | HD |

| ID | WBS | Activity | Duration | Start | Finish | Predecessors | Complete | Planned start | Planned finish | Total float | Free float | Resources | Cost | Hardscape | CP09_Terrace-7 | CP09-Trade | CP09_Milestone-7 | CP09_Discipline-7 | DES | Softscape |
| --- | --- | --- | --- | --- | --- | --- | --- | --- | --- | --- | --- | --- | --- | --- | --- | --- | --- | --- | --- | --- |
|  | 4 | **Handrails** |  | 2026-07-14 | 2026-07-20 |  |  |  |  |  |  |  |  |  |  |  |  |  |  |  |
| CP09-TR5-HD-3200 |  | Install & Fix Stainless Handrail (500 mm height) | 5.62d | 2026-07-14 | 2026-07-20 | CP09-TR5-HD-2960, CP09-TR5-HD-3040, CP09-EN-TR5-A-2020, CP09-PR-HD-DY-1160 |  |  |  | -169.94d | 35.88d | Cost [131128]; Labor [51 h]; Stanless Steel Handrial [25.62] | 131,128 | HND | TR05 | HS | MS#03 | CON | HD |  |
| CP09-TR5-HD-3210 |  | Install & Fix Glass Handrail (900mm height) | 5.62d | 2026-07-14 | 2026-07-20 | CP09-TR5-HD-2960, CP09-TR5-HD-3040, CP09-EN-TR5-A-2020, CP09-PR-HD-DY-1170 |  |  |  | -169.94d | 35.88d | Cost [44178.5]; Glass Handrail [36]; Labor [7 h] | 44,179 | HND | TR05 | HS | MS#03 | CON | HD |  |
|  | 7 | **Sinage** |  | 2026-04-24 | 2026-06-29 |  |  |  |  |  |  |  |  |  |  |  |  |  |  |  |
| CP09-TR5-SN-3330 |  | Excavation | 15d | 2026-04-24 A | 2026-04-28 A | CP09-TR5-RW-1640, CP09-TR5-RW-1530, CP09-TR5-HD-2940, CP09-EN-TR5-A-2060 | 100% | 2026-05-13 | 2026-05-30 |  |  | Cost [21369.8]; EXCAVATOR [72 h]; LOADER [88 h]; TRUCK [88 h]; Excavation [92.06 M3] | 21,370 | SING | TR05 | SIN | MS#03 | CON | HD |  |
| CP09-TR5-SN-3340 |  | Plain Concrete with HDPE | 7d | 2026-04-24 A | 2026-04-28 A | CP09-TR5-SN-3330 SS+2d, CP09-TR5-SN-3330 FF+2d | 100% | 2026-05-25 | 2026-06-01 |  |  | Cost [32054.7]; Mason [4 h]; Labor [48 h]; Plain Concrete [6.14 M3] | 32,055 | SING | TR05 | SIN | MS#03 | CON | HD |  |
| CP09-TR5-SN-3350 |  | Reinforced Concrete | 10d | 2026-04-24 A | 2026-04-28 A | CP09-TR5-SN-3340 SS+2d, CP09-TR5-SN-3340 FF+2d | 100% | 2026-05-27 | 2026-06-07 |  |  | Cost [117534]; Mason [92 h]; Steel Fixer [616 h]; Shutter [123 h]; Labor [48 h]; Reinforced Concrete [30.69 M3] | 117,534 | SING | TR05 | SIN | MS#03 | CON | HD |  |
| CP09-TR5-SN-3360 |  | Waterproofing | 5d | 2026-04-24 A | 2026-04-28 A | CP09-TR5-SN-3350 SS+3d, CP09-TR5-SN-3350 FF+3d | 100% | 2026-06-06 | 2026-06-10 |  |  | Cost [21369.8]; Mason [128.8 h]; Labor [48 h]; Waterproofing [184.12 M2] | 21,370 | SING | TR05 | SIN | MS#03 | CON | HD |  |
| CP09-TR5-SN-3370 |  | Grouting | 5d | 2026-04-24 A | 2026-04-28 A | CP09-TR5-SN-3360 SS+2d, CP09-TR5-SN-3360 FF+2d | 100% | 2026-06-08 | 2026-06-13 |  |  | Cost [21369.8] | 21,370 | SING | TR05 | SIN | MS#03 | CON | HD |  |
| CP09-TR5-SN-3380 |  | STREET DIRECTIONAL SIGN | 10d | 2026-06-07 | 2026-06-17 | CP09-TR5-SN-3370, CP09-PR-SN-DY-1000 |  |  |  | -156d | 0d | Cost [124876]; Sign [41.25] | 124,876 | SING | TR05 | SIN | MS#03 | CON | HD |  |
| CP09-TR5-SN-3390 |  | DIRECTIONAL SIGN FOR VEHICULAR | 10d | 2026-06-07 | 2026-06-17 | CP09-TR5-SN-3370, CP09-PR-SN-DY-1010 |  |  |  | -156d | 0d | Cost [227367]; Sign [3.88] | 227,367 | SING | TR05 | SIN | MS#03 | CON | HD |  |
| CP09-TR5-SN-3420 |  | RULES SIGN | 10d | 2026-06-07 | 2026-06-17 | CP09-TR5-SN-3370, CP09-PR-SN-DY-1030 |  |  |  | -146d | 68.69d | Cost [102164]; Sign [10.38] | 102,164 | SING | TR05 | SIN | MS#03 | CON | HD |  |
| CP09-TR5-SN-3400 |  | UNIT ID SIGN (FRONT YARD) | 10d | 2026-06-18 | 2026-06-29 | CP09-TR5-SN-3380, CP09-TR5-SN-3390, CP09-TR5-SN-3370, CP09-PR-SN-DY-1020 |  |  |  | -156d | 58.69d | Cost [81022.5]; Sign [2.25] | 81,023 | SING | TR05 | SIN | MS#03 | CON | HD |  |
| CP09-TR5-SN-3410 |  | UNIT ID SIGN (BACK YARD) | 10d | 2026-06-18 | 2026-06-29 | CP09-TR5-SN-3380, CP09-TR5-SN-3390, CP09-TR5-SN-3370, CP09-PR-SN-DY-1020 |  |  |  | -156d | 58.69d | Cost [55703]; Sign [5] | 55,703 | SING | TR05 | SIN | MS#03 | CON | HD |  |
| CP09-TR5-SN-3430 |  | IDENTIFICATION SIGN | 10d | 2026-06-18 | 2026-06-29 | CP09-TR5-SN-3380, CP09-TR5-SN-3390, CP09-TR5-SN-3370, CP09-PR-SN-DY-1040 |  |  |  | -156d | 58.69d | Cost [49962.7]; Sign [60] | 49,963 | SING | TR05 | SIN | MS#03 | CON | HD |  |
|  | 5 | **Landscape Furntiure** |  | 2026-07-13 | 2026-08-05 |  |  |  |  |  |  |  |  |  |  |  |  |  |  |  |
| CP09-TR5-FN-3220 |  | Install & Fix Pitch Pine Picnic Table | 15d | 2026-07-13 | 2026-07-30 | CP09-TR5-HD-2940, CP09-TR5-HD-2860, CP09-TR5-HD-2850, CP09-TR5-HD-2810, CP09-TR5-HD-2770, CP09-TR5-HD-2670, CP09-TR5-HD-2720, CP09-EN-TR5-A-2030, CP09-PR-FN-DY-1000 |  |  |  | -182.75d | 31.94d | Cost [93998.3]; Pitch Pine Picnic Table [1] | 93,998 |  | TR05 | LA-F | MS#03 | CON | SO | FRNT |
| CP09-TR5-FN-3230 |  | Install & Fix Crcular Cast-iron tree grate | 15d | 2026-07-13 | 2026-07-30 | CP09-TR5-HD-2940, CP09-TR5-HD-2860, CP09-TR5-HD-2850, CP09-TR5-HD-2810, CP09-TR5-HD-2770, CP09-TR5-HD-2670, CP09-TR5-HD-2720, CP09-EN-TR5-A-2030, CP09-PR-FN-DY-1010 |  |  |  | -182.75d | 31.94d | Cost [655486]; Crcular Cast-iron tree grate [23.38] | 655,486 |  | TR05 | LA-F | MS#03 | CON | SO | FRNT |
| CP09-TR5-FN-3240 |  | Install & Fix Aluminium Cabana for Pool Shading | 12d | 2026-07-13 | 2026-07-27 | CP09-TR5-HD-2940, CP09-TR5-HD-2860, CP09-TR5-HD-2850, CP09-TR5-HD-2810, CP09-TR5-HD-2770, CP09-TR5-HD-2670, CP09-TR5-HD-2720, CP09-EN-TR5-A-2030, CP09-PR-FN-DY-1020 |  |  |  | -189.75d | 0d | Cost [195680]; Aluminium Cabana [1] | 195,680 |  | TR05 | LA-F | MS#03 | CON | SO | FRNT |
| CP09-TR5-FN-3250 |  | Install & Fix Pitch Pine Benchs | 20d | 2026-07-13 | 2026-08-05 | CP09-TR5-HD-2940, CP09-TR5-HD-2860, CP09-TR5-HD-2850, CP09-TR5-HD-2810, CP09-TR5-HD-2770, CP09-TR5-HD-2670, CP09-TR5-HD-2720, CP09-EN-TR5-A-2030, CP09-PR-FN-DY-1030 |  |  |  | -187.75d | 26.94d | Cost [316796]; Pitch Pine Benchs [9.5] | 316,796 |  | TR05 | LA-F | MS#03 | CON | SO | FRNT |
| CP09-TR5-FN-3260 |  | Install & Fix Polyester Hammocks | 15d | 2026-07-13 | 2026-07-30 | CP09-TR5-HD-2940, CP09-TR5-HD-2860, CP09-TR5-HD-2850, CP09-TR5-HD-2810, CP09-TR5-HD-2770, CP09-TR5-HD-2670, CP09-TR5-HD-2720, CP09-EN-TR5-A-2030, CP09-PR-FN-DY-1040 |  |  |  | -182.75d | 31.94d | Cost [40144.4]; Polyester Hammocks [1] | 40,144 |  | TR05 | LA-F | MS#03 | CON | SO | FRNT |
| CP09-TR5-FN-3270 |  | Install & Fix Adult Play Swing | 15d | 2026-07-13 | 2026-07-30 | CP09-TR5-HD-2940, CP09-TR5-HD-2860, CP09-TR5-HD-2850, CP09-TR5-HD-2810, CP09-TR5-HD-2770, CP09-TR5-HD-2670, CP09-TR5-HD-2720, CP09-EN-TR5-A-2030, CP09-PR-FN-DY-1050 |  |  |  | -182.75d | 31.94d | Cost [30435]; Adult Play Swing [1] | 30,435 |  | TR05 | LA-F | MS#03 | CON | SO | FRNT |
| CP09-TR5-FN-3280 |  | Install & Fix Aluminum Trash Bin | 20d | 2026-07-13 | 2026-08-05 | CP09-TR5-HD-2940, CP09-TR5-HD-2860, CP09-TR5-HD-2850, CP09-TR5-HD-2810, CP09-TR5-HD-2770, CP09-TR5-HD-2670, CP09-TR5-HD-2720, CP09-EN-TR5-A-2030, CP09-PR-FN-DY-1060 |  |  |  | -187.75d | 26.94d | Cost [896214]; Aluminum Trash Bin [14] | 896,214 |  | TR05 | LA-F | MS#03 | CON | SO | FRNT |
| CP09-TR5-FN-3290 |  | Install & Fix tensile Teflon Tent | 20d | 2026-07-13 | 2026-08-05 | CP09-TR5-HD-2940, CP09-TR5-HD-2860, CP09-TR5-HD-2850, CP09-TR5-HD-2810, CP09-TR5-HD-2770, CP09-TR5-HD-2670, CP09-TR5-HD-2720, CP09-EN-TR5-A-2030, CP09-PR-FN-DY-1070 |  |  |  | -187.75d | 26.94d | Cost [555836]; tensile Teflon Tent [2.5] | 555,836 |  | TR05 | LA-F | MS#03 | CON | SO | FRNT |
| CP09-TR5-FN-3300 |  | Lanscape Edging ( Rubber) | 15d | 2026-07-13 | 2026-07-30 | CP09-TR5-HD-2940, CP09-TR5-HD-2860, CP09-TR5-HD-2850, CP09-TR5-HD-2810, CP09-TR5-HD-2770, CP09-TR5-HD-2670, CP09-TR5-HD-2720, CP09-EN-TR5-A-2030, CP09-PR-FN-DY-1080 |  |  |  | -182.75d | 31.94d | Cost [65739.9]; Lanscape Edging ( Rubber) [236.5] | 65,740 |  | TR05 | LA-F | MS#03 | CON | SO | FRNT |

| ID | WBS | Activity | Duration | Start | Finish | Predecessors | Complete | Remaining | Planned start | Planned finish | Total float | Free float | Resources | Cost | Softscape | CP09_Terrace-7 | CP09-Trade | CP09_Milestone-7 | CP09_Discipline-7 | DES |
| --- | --- | --- | --- | --- | --- | --- | --- | --- | --- | --- | --- | --- | --- | --- | --- | --- | --- | --- | --- | --- |
|  | 10 | **Play Field Equipment** |  | 2026-06-13 | 2026-08-05 |  |  |  |  |  |  |  |  |  |  |  |  |  |  |  |
| CP09-TR5-PE-3310 |  | Fitness areas equipment | 15d | 2026-06-13 | 2026-06-29 | CP09-TR5-HD-2880, CP09-EN-TR5-A-2070, CP09-PR-PE-DY-1000, CP09-PR-PE-DY-1010, CP09-PR-PE-DY-1020, CP09-PR-PE-DY-1030 |  |  |  |  | -156d | 58.69d | Cost [1442780]; Fitness equipment [6] | 1,442,780 | P.EQ | TR05 | PF-E | MS#03 | CON | SO |
| CP09-TR5-PE-3320 |  | Kids playground equipment | 15d | 2026-07-19 | 2026-08-05 | CP09-TR5-HD-2880, CP09-PR-PE-DY-1040, CP09-PR-PE-DY-1050, CP09-PR-PE-DY-1060, CP09-PR-PE-DY-1070, CP09-PR-PE-DY-1080, CP09-PR-PE-DY-1090, CP09-PR-PE-DY-1100 |  |  |  |  | -187.19d | 27.5d | Cost [1256494]; Kids equipment [6] | 1,256,494 | P.EQ | TR05 | PF-E | MS#03 | CON | SO |
|  | 11 | **Lighting for Softscape** |  | 2026-06-15 | 2026-08-08 |  |  |  |  |  |  |  |  |  |  |  |  |  |  |  |
|  | 1 | **Exterior Lighting** |  | 2026-06-15 | 2026-08-08 |  |  |  |  |  |  |  |  |  |  |  |  |  |  |  |
| CP09-TR5-SF-1410 |  | Install Landscape Lighting Pole | 25d | 2026-06-15 | 2026-07-13 | CP09-TR5-HD-2940, CP09-TR5-EL-1090, CP09-EN-TR5-A-2100, CP09-PR-EL-DY-1080 |  |  |  |  | -188d | 0d | Cost [97302.1]; Lighting Pole [3]; Electrican [25 h] | 97,302 | LHT | TR05 | LFS | MS#03 | CON | HD |
| CP09-TR5-SF-1420 |  | Install Bollard for Walkways | 10d | 2026-07-14 | 2026-07-25 | CP09-TR5-EL-1090, CP09-TR5-HD-2940, CP09-TR5-HD-2720, CP09-TR5-HD-2670, CP09-TR5-HD-2770, CP09-TR5-HD-2810, CP09-TR5-HD-2850, CP09-TR5-HD-2860, CP09-EN-TR5-A-2100, CP09-PR-EL-DY-1090, CP09-TR5-SF-1410 |  |  |  |  | -188d | 0d | Cost [1108355]; Bollard [260]; Electrican [25 h] | 1,108,355 | LHT | TR05 | LFS | MS#03 | CON | HD |
| CP09-TR5-SF-1440 |  | Install Inground Uplight For Palms | 10d | 2026-07-19 | 2026-07-29 | CP09-TR5-SF-1450 SS, CP09-TR5-SF-1420 SS, CP09-EN-TR5-A-2100, CP09-PR-EL-DY-1120 |  |  |  |  | -182d | 32.69d | Cost [393484]; Inground Uplight [86]; Electrican [25 h] | 393,484 | LHT | TR05 | LFS | MS#03 | CON | HD |
| CP09-TR5-SF-1450 |  | Install Projectors for Trees | 10d | 2026-07-19 | 2026-07-29 | CP09-TR5-SF-1340, CP09-TR5-SF-1350, CP09-TR5-SF-1360, CP09-TR5-SF-1370, CP09-TR5-SF-1380, CP09-TR5-SF-1390, CP09-TR5-SF-1400, CP09-EN-TR5-A-2100, CP09-PR-EL-DY-1130 |  |  |  |  | -182d | 0d | Cost [484837]; Projectors For Trees [118]; Electrican [25 h] | 484,837 | LHT | TR05 | LFS | MS#03 | CON | HD |
| CP09-TR5-SF-1430 |  | Install Diffused Wall Recessed Step | 10d | 2026-07-26 | 2026-08-05 | CP09-TR5-SF-1420, CP09-EN-TR5-A-2100, CP09-PR-EL-DY-1110 |  |  |  |  | -188d | 26.69d | Cost [194419]; Diffused Wall [47]; Electrican [25 h] | 194,419 | LHT | TR05 | LFS | MS#03 | CON | HD |
| CP09-TR5-SF-1460 |  | Install Surface Mountaed Down Light for Pool Cabans | 10d | 2026-07-27 | 2026-08-08 | CP09-TR5-FN-3240, CP09-EN-TR5-A-2100, CP09-PR-EL-DY-1100 |  |  |  |  | -189.75d | 24.94d | Cost [23033]; Surface Mountaed Light [4]; Electrican [25 h] | 23,033 | LHT | TR05 | LFS | MS#03 | CON | HD |
|  | 2 | **Outlet Lighting Fixtures** |  | 2026-07-26 | 2026-07-30 |  |  |  |  |  |  |  |  |  |  |  |  |  |  |  |
| CP09-TR5-SF-1470 |  | Install outlet lighting fixtures | 5d | 2026-07-26 | 2026-07-30 | CP09-TR5-SF-1420, CP09-EN-TR5-A-2100, CP09-PR-EL-DY-1150 |  |  |  |  | -183d | 31.69d | Cost [357578]; Outlet Lighting Fixtiure [519]; Electrican [25 h] | 357,578 | LHT | TR05 | LFS | MS#03 | CON | HD |
|  | 2 | **Softscape** |  | 2026-01-19 | 2026-07-18 |  |  |  |  |  |  |  |  |  |  |  |  |  |  |  |
|  | 1 | **Planting** |  | 2026-01-19 | 2026-07-18 |  |  |  |  |  |  |  |  |  |  |  |  |  |  |  |
| CP09-TR5-SF-1330 |  | Organic Manure | 10d | 2026-01-19 A | 2026-06-17 | CP09-TR5-SF-1320 SS+6d, CP09-EN-TR5-A-2090, CP09-PR-PN-DY-1010 | 50% | 10d | 2026-03-14 | 2026-03-25 | -166d | 0d | Cost [841200]; Organic Manure [843.3] | 841,200 | PLNT | TR05 | SS | MS#03 | CON | SO |
| CP09-TR5-SF-1320 |  | Sweet sand for all plants | 10d | 2026-02-16 A | 2026-06-17 | CP09-TR5-EW-1080, CP09-TR5-HD-3190, CP09-TR5-HD-2940, CP09-EN-TR5-A-2090, CP09-PR-PN-DY-1000, CP09-TR4-SF-1160, CP09-TR4-SF-1170 | 50% | 10d | 2026-03-07 | 2026-03-18 | -166d | 0d | Cost [1296918]; Sweet sand [3702.2] | 1,296,918 | PLNT | TR05 | SS | MS#03 | CON | SO |
| CP09-TR5-SF-1350 |  | Shrubs | 10d | 2026-05-04 A | 2026-06-21 | CP09-TR5-SF-1330, CP09-TR5-SF-1320, CP09-TR5-SF-1340 SS+3d, CP09-TR5-SF-1340 FF+3d, CP09-PR-PN-DY-1060 | 15% | 10d | 2026-05-28 | 2026-06-08 | -159d | 23d | Cost [758721]; Shrubs [5056] | 758,721 | PLNT | TR05 | SS | MS#03 | CON | SO |
| CP09-TR5-SF-1340 |  | Large Trees | 10d | 2026-05-11 A | 2026-06-17 | CP09-TR5-IR-1260, CP09-TR5-IR-1270, CP09-TR5-IR-1280, CP09-TR5-IR-1290, CP09-TR5-IR-1300, CP09-TR5-IR-1310, CP09-TR5-IR-1320, CP09-TR5-SF-1330, CP09-TR5-SF-1320, CP09-PR-PN-DY-1020 | 30% | 10d | 2026-05-25 | 2026-06-04 | -159d | 0d | Cost [1933001]; Large Trees [706] | 1,933,001 | PLNT | TR05 | SS | MS#03 | CON | SO |
| CP09-TR5-SF-1360 |  | Ground Covers | 10d | 2026-05-11 A | 2026-06-21 | CP09-TR5-SF-1330, CP09-TR5-SF-1320, CP09-TR5-SF-1340 SS+3d, CP09-TR5-SF-1340 FF+3d, CP09-PR-PN-DY-1070 | 20% | 10d | 2026-05-28 | 2026-06-08 | -159d | 23d | Cost [840914]; Ground Covers [41638] | 840,914 | PLNT | TR05 | SS | MS#03 | CON | SO |
| CP09-TR5-SF-1370 |  | Succulents | 10d | 2026-06-18 | 2026-06-29 | CP09-TR5-SF-1330, CP09-TR5-SF-1320, CP09-TR5-SF-1340 SS+3d, CP09-TR5-SF-1340 FF+3d, CP09-PR-PN-DY-1080 |  |  |  |  | -166d | 16d | Cost [363438]; Succulents [1300] | 363,438 | PLNT | TR05 | SS | MS#03 | CON | SO |
| CP09-TR5-SF-1380 |  | Vines & Climbers | 10d | 2026-06-18 | 2026-06-29 | CP09-TR5-SF-1330, CP09-TR5-SF-1320, CP09-TR5-SF-1340 SS+3d, CP09-TR5-SF-1340 FF+3d, CP09-PR-PN-DY-1030 |  |  |  |  | -166d | 16d | Cost [26566.1]; Vines & Climbers [241] | 26,566 | PLNT | TR05 | SS | MS#03 | CON | SO |
| CP09-TR5-SF-1400 |  | Lawn | 10d | 2026-06-18 | 2026-06-29 | CP09-TR5-SF-1330, CP09-TR5-SF-1320, CP09-TR5-SF-1340 SS+3d, CP09-TR5-SF-1340 FF+3d, CP09-PR-PN-DY-1040 |  |  |  |  | -166d | 16d | Cost [83925.4]; Lawn [1476] | 83,925 | PLNT | TR05 | SS | MS#03 | CON | SO |
| CP09-TR5-SF-1390 |  | Ornamental grass | 10d | 2026-07-07 | 2026-07-18 | CP09-TR5-SF-1330, CP09-TR5-SF-1320, CP09-TR5-SF-1340 SS+3d, CP09-TR5-SF-1340 FF+3d, CP09-PR-PN-DY-1050 |  |  |  |  | -182d | 0d | Cost [502971]; Ornamental grass [13594] | 502,971 | PLNT | TR05 | SS | MS#03 | CON | SO |

| ID | WBS | Activity | Duration | Start | Finish | Predecessors | Complete | Remaining | Planned start | Planned finish | Total float | Free float | Resources | Cost | Actual cost | Swimming Pool | CP09_Terrace-7 | CP09-Trade | CP09_Milestone-7 | CP09_Discipline-7 | DES |
| --- | --- | --- | --- | --- | --- | --- | --- | --- | --- | --- | --- | --- | --- | --- | --- | --- | --- | --- | --- | --- | --- |
|  | 9 | **Terrace # 06** |  | 2024-07-15 | 2026-09-06 |  |  |  |  |  |  |  |  |  |  |  |  |  |  |  |  |
|  | 8 | **Swimming Pool-SP04 & Mechnical Room-MR-04** |  | 2024-07-15 | 2026-08-10 |  |  |  |  |  |  |  |  |  |  |  |  |  |  |  |  |
|  | 1 | **Structure Works for Swimming Pool** |  | 2024-07-15 | 2026-04-28 |  |  |  |  |  |  |  |  |  |  |  |  |  |  |  |  |
| CP09-TR6-SW-2090 |  | Excvation up to Formation Level | 7d | 2024-07-15 A | 2024-09-19 A | CP09-MS-1010, CP09-CLD-1000, CP09-TR5-SW-1730 | 100% |  | 2024-02-27 | 2024-03-05 |  |  | Cost [119341]; EXCAVATOR [744 h]; LOADER [896 h]; TRUCK [896 h]; Labor [465 h]; Excavation [930 M3] | 119,340.83 | 119,341 | SP04 | TR06 | SP&MR | MS#03 | CON | HD |
| CP09-TR6-SW-2100 |  | Plain Concret for For Raft | 5d | 2024-11-05 A | 2024-11-20 A | CP09-TR6-SW-2090, CP09-EN-TR6-A-2120, CP09-PR-CV-DY-1000 SS | 100% |  | 2024-12-04 | 2024-12-09 |  |  | Cost [198901]; Mason [406 h]; Labor [48 h]; Plain Concrete [580 M3] | 198,901.38 | 198,901 | SP04 | TR06 | SP&MR | MS#03 | CON | HD |
| CP09-TR6-SW-2110 |  | Water Proofing with screed | 3d | 2024-11-21 A | 2024-11-23 A | CP09-TR6-SW-2100, CP09-EN-TR6-A-2140, CP09-PR-CV-DY-1010 SS | 100% |  | 2024-12-21 | 2024-12-24 |  |  | Cost [79560.6]; Mason [77 h]; Labor [48 h]; Waterproofing [580 M2] | 79,560.55 | 79,561 | SP04 | TR06 | SP&MR | MS#03 | CON | HD |
| CP09-TR6-SW-2120 |  | Reinforcement concrete for Raft | 10d | 2025-05-18 A | 2025-05-22 A | CP09-TR6-SW-2110, CP09-EN-TR6-A-2120, CP09-EN-TR6-A-2130, CP09-PR-CV-DY-1130 | 100% |  | 2024-12-24 | 2025-01-05 |  |  | Cost [994507]; Mason [48 h]; Steel Fixer [508 h]; Shutter [48 h]; Labor [48 h]; Reinforced Concrete [145 M3] | 994,506.91 | 994,507 | SP04 | TR06 | SP&MR | MS#03 | CON | HD |
| CP09-TR6-SW-2140 |  | Reinforcement Concrete for Walls | 15d | 2025-09-30 A | 2025-10-04 A | CP09-TR6-SW-2130 | 100% |  | 2025-07-17 | 2025-08-05 |  |  | Cost [397803]; Mason [111 h]; Steel Fixer [616 h]; Shutter [148 h]; Labor [48 h]; Reinforced Concrete [37 M3] | 397,802.77 | 397,803 | SP04 | TR06 | SP&MR | MS#03 | CON | HD |
| CP09-TR6-SW-2130 |  | Water Proofing for Raft with screed | 3.75d | 2025-12-22 A | 2025-12-26 A | CP09-TR6-SW-2120, CP09-EN-TR6-A-2140, CP09-PR-CV-DY-1010 SS | 100% |  | 2025-12-28 | 2025-12-31 |  |  | Cost [198901]; Mason [469 h]; Labor [48 h]; Waterproofing [670 M2] | 198,901.38 | 198,901 | SP04 | TR06 | SP&MR | MS#03 | CON | HD |
| CP09-TR6-SW-2150 |  | External Waterproofing for Walls | 5d | 2026-04-24 A | 2026-04-28 A | CP09-TR6-SW-2140 | 100% |  | 2026-04-26 | 2026-04-30 |  |  | Cost [198901]; Mason [378 h]; Labor [48 h]; Waterproofing [540 M2] | 198,901 |  | SP04 | TR06 | SP&MR | MS#03 | CON | HD |
| CP09-TR6-SW-2160 |  | Protection Block Works | 5d | 2026-04-24 A | 2026-04-28 A | CP09-TR6-SW-2150, CP09-PR-CV-DY-1020 SS | 100% |  | 2026-05-02 | 2026-05-06 |  |  | Cost [79560.6]; Mason [342 h]; Labor [48 h]; Waterproofing; Blocks [90] | 79,561 |  | SP04 | TR06 | SP&MR | MS#03 | CON | HD |
| CP09-TR6-SW-2170 |  | Backfilling | 5.62d | 2026-04-24 A | 2026-04-28 A | CP09-TR6-SW-2160, CP09-TR6-SW-2320 FF | 100% |  | 2026-05-07 | 2026-05-13 |  |  | Cost [79560.6]; Labor [119 h]; Backfilling [198 M3] | 79,561 |  | SP04 | TR06 | SP&MR | MS#03 | CON | HD |
|  | 3 | **Finishing Works for Swimming Pool** |  | 2026-06-24 | 2026-07-25 |  |  |  |  |  |  |  |  |  |  |  |  |  |  |  |  |
| CP09-TR6-SW-2180 |  | Mosaics Tiles | 11.25d | 2026-06-24 | 2026-07-07 | CP09-TR6-SW-2160, CP09-TR6-SW-2170, CP09-EN-TR6-A-2150, CP09-PR-CV-DY-1030 |  |  |  |  | -187.56d | 0d | Cost [795606]; Mason [280 h]; Labor [48 h]; Mosaic [670] | 795,606 |  | SP04 | TR06 | SP&MR | MS#03 | CON | HD |
| CP09-TR6-SW-2190 |  | Granite for Pool Edg | 3.75d | 2026-07-07 | 2026-07-11 | CP09-TR6-SW-2180, CP09-EN-TR6-A-2160, CP09-PR-CV-DY-1040 |  |  |  |  | -187.56d | 0d | Cost [318242]; Mason [48 h]; Labor [48 h] | 318,242 |  | SP04 | TR06 | SP&MR | MS#03 | CON | HD |
| CP09-TR6-SW-2200 |  | Garnite for Drinage Grate | 3.75d | 2026-07-07 | 2026-07-11 | CP09-TR6-SW-2190 SS, CP09-EN-TR6-A-2160 |  |  |  |  | -183.81d | 3.75d | Cost [159121]; Mason [48 h]; Labor [48 h] | 159,121 |  | SP04 | TR06 | SP&MR | MS#03 | CON | HD |
| CP09-TR6-SW-2210 |  | Granite for Pool Coping | 3.75d | 2026-07-12 | 2026-07-15 | CP09-TR6-SW-2190, CP09-EN-TR6-A-2160 |  |  |  |  | -187.56d | 0d | Cost [198901]; Mason [160 h]; Labor [48 h]; Granit-Coping [24] | 198,901 |  | SP04 | TR06 | SP&MR | MS#03 | CON | HD |
| CP09-TR6-SW-2220 |  | Stanless Steel Ladders | 2.81d | 2026-07-15 | 2026-07-19 | CP09-TR6-SW-2180, CP09-TR6-SW-2190, CP09-TR6-SW-2200, CP09-TR6-SW-2210, CP09-EN-TR6-A-2180, CP09-EN-TR6-A-2170, CP09-PR-CV-DY-1050 |  |  |  |  | -187.56d | 0d | Cost [79560.6]; Labor [4 h]; Stanless Steel Ladders [2] | 79,561 |  | SP04 | TR06 | SP&MR | MS#03 | CON | HD |
| CP09-TR6-SW-2230 |  | Stanless Steel Handrial | 5d | 2026-07-19 | 2026-07-25 | CP09-TR6-SW-2220, CP09-EN-TR6-A-2180, CP09-PR-CV-DY-1060 |  |  |  |  | -187.56d | 13.5d | Cost [79560.6]; Labor [2 h]; Stanless Steel Handrial [1] | 79,561 |  | SP04 | TR06 | SP&MR | MS#03 | CON | HD |
|  | 4 | **Machine Room_MR04** |  | 2024-09-18 | 2026-06-28 |  |  |  |  |  |  |  |  |  |  |  |  |  |  |  |  |
| CP09-TR6-SW-2240 |  | Excvation up to Formation Level | 6d | 2024-09-18 A | 2024-10-12 A | CP09-TR6-SW-2090 SS | 100% |  | 2024-09-21 | 2024-09-26 |  |  | Cost [60173.5]; EXCAVATOR [400 h]; LOADER [480 h]; TRUCK [480 h]; Labor [250 h]; Excavation [500 M3] | 60,173.53 | 60,174 | SP04 | TR06 | SP&MR | MS#03 | CON | HD |
| CP09-TR6-SW-2250 |  | Plain Concret for For Raft | 2.81d | 2024-12-11 A | 2024-12-14 A | CP09-TR6-SW-2240, CP09-EN-TR6-A-2120 | 100% |  | 2025-01-11 | 2025-01-13 |  |  | Cost [30086.8]; Mason [77 h]; Labor [48 h]; Plain Concrete [110 M3] | 30,086.77 | 30,087 | SP04 | TR06 | SP&MR | MS#03 | CON | HD |
| CP09-TR6-SW-2260 |  | Water Proofing with screed | 1.88d | 2024-12-15 A | 2024-12-21 A | CP09-TR6-SW-2250, CP09-EN-TR6-A-2140, CP09-PR-CV-DY-1010 | 100% |  | 2025-01-13 | 2025-01-15 |  |  | Cost [30086.8]; Mason [77 h]; Labor [48 h]; Waterproofing [110 M2] | 30,086.77 | 30,087 | SP04 | TR06 | SP&MR | MS#03 | CON | HD |
| CP09-TR6-SW-2270 |  | Reinforcement concrete for Raft | 10d | 2025-01-02 A | 2025-04-23 A | CP09-TR6-SW-2260, CP09-EN-TR6-A-2120, CP09-EN-TR6-A-2130 | 100% |  | 2025-02-03 | 2025-02-13 |  |  | Cost [180521]; Mason [48 h]; Steel Fixer [95 h]; Shutter [48 h]; Labor [48 h]; Reinforced Concrete [27 M3] | 180,520.59 | 180,521 | SP04 | TR06 | SP&MR | MS#03 | CON | HD |
| CP09-TR6-SW-2280 |  | Water Proofing for Raft with screed | 3.75d | 2025-09-30 A | 2025-12-26 A | CP09-TR6-SW-2270 | 100% |  | 2025-05-27 | 2025-06-01 |  |  | Cost [75216.9]; Mason [161 h]; Labor [48 h]; Waterproofing [230 M2] | 75,216.91 | 75,217 | SP04 | TR06 | SP&MR | MS#03 | CON | HD |
| CP09-TR6-SW-2290 |  | Reinforcement Concrete for Walls & Columns | 15d | 2025-09-30 A | 2025-10-04 A | CP09-TR6-SW-2280 | 100% |  | 2025-07-24 | 2025-08-11 |  |  | Cost [330954]; Mason [105 h]; Steel Fixer [616 h]; Shutter [140 h]; Labor [48 h]; Reinforced Concrete [35 M3] | 330,954.42 | 330,954 | SP04 | TR06 | SP&MR | MS#03 | CON | HD |
| CP09-TR6-SW-2300 |  | Reinforcement Concrete for Slab | 21d | 2026-01-12 A | 2026-01-23 A | CP09-TR6-SW-2290 | 100% |  | 2026-01-18 | 2026-02-10 |  |  | Cost [150434]; Mason [60 h]; Steel Fixer [616 h]; Shutter [80 h]; Labor [48 h]; Reinforced Concrete [20 M3] | 150,433.83 | 135,390.6 | SP04 | TR06 | SP&MR | MS#03 | CON | HD |
| CP09-TR6-SW-2310 |  | External Waterproofing with Protection | 5d | 2026-04-20 A | 2026-04-28 A | CP09-TR6-SW-2300 | 100% |  | 2026-04-19 | 2026-04-23 |  |  | Cost [270781]; Mason [119 h]; Labor [48 h]; Waterproofing [170 M2] | 270,781 |  | SP04 | TR06 | SP&MR | MS#03 | CON | HD |
| CP09-TR6-SW-2320 |  | Backfilling | 5d | 2026-04-24 A | 2026-04-28 A | CP09-TR6-SW-2310 | 100% |  | 2026-05-02 | 2026-05-06 |  |  | Cost [45130.2]; Labor [108 h]; Backfilling [180 M3] | 45,130 |  | SP04 | TR06 | SP&MR | MS#03 | CON | HD |
| CP09-TR6-SW-2410 |  | Plaster for Internal Walls | 6d | 2026-05-04 A | 2026-05-08 A | CP09-TR6-SW-2310, CP09-EN-TR6-A-2480, CP09-PR-CV-DY-1070 | 100% |  | 2026-04-30 | 2026-05-06 |  |  | Cost [45130.2]; Mason [144 h]; Labor [48 h]; Plaster [180] | 45,130 |  | SP04 | TR06 | SP&MR | MS#03 | CON | HD |
| CP09-TR6-SW-2420 |  | Emulsion Paint for Internal Wall | 6d | 2026-05-04 A | 2026-05-08 A | CP09-TR6-SW-2410, CP09-TR6-SW-2360, CP09-PR-CV-DY-1080 | 100% |  | 2026-05-24 | 2026-05-31 |  |  | Cost [30086.8]; Paint [180]; Labor [48 h]; Painter [432 h]; Epoxy for flooring | 30,087 |  | SP04 | TR06 | SP&MR | MS#03 | CON | HD |
| CP09-TR6-SW-2430 |  | Epoxy for flooring | 3d | 2026-05-04 A | 2026-06-09 | CP09-TR6-SW-2420, CP09-TR6-SW-2440, CP09-TR6-SW-2330, CP09-TR6-SW-2350, CP09-TR6-SW-2390, CP09-TR6-SW-2400, CP09-PR-CV-DY-1110 | 80% | 3d | 2026-07-11 | 2026-07-14 | -149d | 52.06d | Cost [75216.9]; Mason [48 h]; Labor [48 h]; Epoxy for flooring [3.82] | 75,217 |  | SP04 | TR06 | SP&MR | MS#03 | CON | HD |
| CP09-TR6-SW-2440 |  | Metal Works | 5d | 2026-06-07 | 2026-06-11 | CP09-TR6-SW-2420 |  |  |  |  | -113d | 136.06d | Cost [120347]; Metals for MR | 120,347 |  | SP04 | TR06 | SP&MR | MS#03 | CON | HD |
| CP09-TR6-SW-2330 |  | Drainage Gravel including Geotextile & Geocomposit | 3.75d | 2026-06-24 | 2026-06-28 | CP09-TR6-SW-2420, CP09-PR-CV-DY-1090, CP09-PR-CV-DY-1100 |  |  |  |  | -126.75d | 122.31d | Cost [60173.5]; Drainage Gravel | 60,174 |  | SP04 | TR06 | SP&MR | MS#03 | CON | HD |

| ID | WBS | Activity | Duration | Start | Finish | Predecessors | Complete | Remaining | Planned start | Planned finish | Total float | Free float | Resources | Cost | Actual cost | Swimming Pool | CP09_Terrace-7 | CP09-Trade | CP09_Milestone-7 | CP09_Discipline-7 | DES | Walls |
| --- | --- | --- | --- | --- | --- | --- | --- | --- | --- | --- | --- | --- | --- | --- | --- | --- | --- | --- | --- | --- | --- | --- |
|  | 2 | **MEP Works for Swimmimg Pool & Machine Room** |  | 2025-09-24 | 2026-08-10 |  |  |  |  |  |  |  |  |  |  |  |  |  |  |  |  |  |
|  | 1 | **Mechnical Works** |  | 2025-09-24 | 2026-07-28 |  |  |  |  |  |  |  |  |  |  |  |  |  |  |  |  |  |
| CP09-TR6-SW-2340 |  | UPVC pipes, fitting, valves, | 15d | 2025-09-24 A | 2026-06-23 | CP09-TR6-SW-2410, CP09-EN-TR6-A-2190, CP09-PR-ME-DY-1000, CP09-PR-ME-DY-1010 | 40% | 15d | 2025-08-20 | 2025-09-08 | -191d | 0d | Cost [710030]; Labor [48 h] | 710,029.67 | 71,003 | SP04 | TR06 | SP&MR | MS#03 | CON | HD |  |
| CP09-TR6-SW-2350 |  | Mechnical Equipment (Valves, Pumps, Filtters, Controllers ,Dosinng,& Ventilation exahust fan) | 30d | 2026-06-24 | 2026-07-28 | CP09-TR6-SW-2420, CP09-TR6-SW-2340, CP09-EN-TR6-A-2190, CP09-PR-ME-DY-1020, CP09-PR-ME-DY-1030, CP09-PR-ME-DY-1040, CP09-PR-ME-DY-1050, CP09-PR-ME-DY-1060, CP09-PR-ME-DY-1070, CP09-PR-ME-DY-1080 |  |  |  |  | -191d | 10.06d | Cost [2370662]; Labor [48 h] | 2,370,662 |  | SP04 | TR06 | SP&MR | MS#03 | CON | HD |  |
|  | 2 | **Electrical Works-SW** |  | 2026-06-24 | 2026-08-10 |  |  |  |  |  |  |  |  |  |  |  |  |  |  |  |  |  |
| CP09-TR6-SW-2360 |  | Conduits, Cable tray | 5d | 2026-06-24 | 2026-06-30 | CP09-TR6-SW-2410, CP09-EN-TR6-A-2200, CP09-PR-EL-DY-1000, CP09-PR-EL-DY-1010 |  |  |  |  | -201.06d | 0d | Cost [174464]; Labor [48 h] | 174,464 |  | SP04 | TR06 | SP&MR | MS#03 | CON | HD |  |
| CP09-TR6-SW-2370 |  | Panel boards | 5d | 2026-06-30 | 2026-07-06 | CP09-TR6-SW-2360, CP09-TR6-SW-2420, CP09-EN-TR6-A-2200, CP09-PR-EL-DY-1020 |  |  |  |  | -201.06d | 0d | Cost [624381]; Labor [48 h] | 624,381 |  | SP04 | TR06 | SP&MR | MS#03 | CON | HD |  |
| CP09-TR6-SW-2380 |  | Power Cables & Wires | 10d | 2026-07-06 | 2026-07-18 | CP09-TR6-SW-2370, CP09-TR6-SW-2360, CP09-EN-TR6-A-2200, CP09-PR-EL-DY-1030 |  |  |  |  | -201.06d | 0d | Cost [8133]; Labor [48 h] | 8,133 |  | SP04 | TR06 | SP&MR | MS#03 | CON | HD |  |
| CP09-TR6-SW-2400 |  | Earthing System | 15d | 2026-07-06 | 2026-07-23 | CP09-TR6-SW-2380 SS, CP09-PR-EL-DY-1040 |  |  |  |  | -186.06d | 15d | Cost [52517.6]; Labor [48 h] | 52,518 |  | SP04 | TR06 | SP&MR | MS#03 | CON | HD |  |
| CP09-TR6-SW-2390 |  | (Lighting Outlets , Switches, Fixture ) | 20d | 2026-07-18 | 2026-08-10 | CP09-TR6-SW-2360, CP09-TR6-SW-2380, CP09-TR6-SW-2370, CP09-PR-EL-DY-1050, CP09-PR-EL-DY-1140 |  |  |  |  | -201.06d | 0d | Cost [572541]; Labor [48 h] | 572,541 |  | SP04 | TR06 | SP&MR | MS#03 | CON | HD |  |
|  | 6 | **Earth Work** |  | 2026-02-16 | 2026-03-29 |  |  |  |  |  |  |  |  |  |  |  |  |  |  |  |  |  |
|  | 1 | **Grading works** |  | 2026-02-16 | 2026-03-29 |  |  |  |  |  |  |  |  |  |  |  |  |  |  |  |  |  |
| CP09-TR6-EW-1090 |  | Excavation work to Reduce Level | 15d | 2026-02-16 A | 2026-03-29 A | CP09-TR6-SW-2240, CP09-EN-TR6-A-2210, CP09-CLD-1000, CP09-TR4-EW-1030 FS+6d, CP09-TR4-EW-1040 FS+6d | 100% |  | 2025-12-23 | 2026-01-10 |  |  | Cost; EXCAVATOR; LOADER; TRUCK; Labor [48 h]; Excavation |  |  |  | TR06 | E-W | MS#03 | CON | HD |  |
| CP09-TR6-EW-1100 |  | Filling works to make up levels with Compacting | 15d | 2026-02-16 A | 2026-03-29 A | CP09-TR6-SW-2240, CP09-TR6-EW-1090 SS+4.69d, CP09-EN-TR6-A-2210 | 100% |  | 2025-12-28 | 2026-01-14 |  |  | Cost; Labor [48 h]; Filling |  |  |  | TR06 | E-W | MS#03 | CON | HD |  |
|  | 2 | **Planting** |  | 2026-02-22 | 2026-03-29 |  |  |  |  |  |  |  |  |  |  |  |  |  |  |  |  |  |
| CP09-TR6-EW-1110 |  | Excavation works for Planting Beds | 15d | 2026-02-22 A | 2026-03-29 A | CP09-TR6-EW-1090 SS, CP09-TR6-EW-1100 SS, CP09-EN-TR6-A-2210 | 100% |  | 2025-12-28 | 2026-01-14 |  |  | Cost [915350]; EXCAVATOR [4544 h]; LOADER [5456 h]; TRUCK [5456 h]; Labor [280 h]; Excavation [5681.88 M3] | 915,350.06 | 732,280 |  | TR06 | E-W | MS#03 | CON | HD |  |
|  | 9 | **Retaining & Cheek Walls** |  | 2026-02-16 | 2026-07-28 |  |  |  |  |  |  |  |  |  |  |  |  |  |  |  |  |  |
|  | 1 | **Soild Block Work Cheek Walls** |  | 2026-02-16 | 2026-07-28 |  |  |  |  |  |  |  |  |  |  |  |  |  |  |  |  |  |
| CP09-TR6-RW-1690 |  | Reinforced Concrete for Tie beam | 4.69d | 2026-02-16 A | 2026-06-21 | CP09-TR6-RW-1680 SS+2.81d, CP09-TR6-RW-1680 FF+2.81d | 98% | 4.69d | 2026-02-02 | 2026-02-08 | -214.69d | 0d | Cost [32356.2]; Mason [48 h]; Steel Fixer [48 h]; Shutter [48 h]; Labor [48 h]; Reinforced Concrete | 32,356 |  |  | TR06 | RE&CW | MS#03 | CON | HD | CHW |
| CP09-TR6-RW-1700 |  | Reinforced Concrete for Column | 5.62d | 2026-02-16 A | 2026-06-23 | CP09-TR6-RW-1690 SS+2.81d, CP09-TR6-RW-1690 FF+2.81d | 98% | 5.62d | 2026-02-05 | 2026-02-11 | -214.69d | 0d | Cost [32356.2]; Mason [48 h]; Steel Fixer [48 h]; Shutter [48 h]; Labor [48 h]; Reinforced Concrete | 32,356 |  |  | TR06 | RE&CW | MS#03 | CON | HD | CHW |
| CP09-TR6-RW-1730 |  | Reinforced Concrete for Beam | 7.5d | 2026-02-16 A | 2026-07-05 | CP09-TR6-RW-1710 SS+3.75d, CP09-TR6-RW-1710 FF+3.75d | 98% | 7.5d | 2026-03-01 | 2026-03-10 | -214.69d | 0d | Cost [64712.5]; Mason [12 h]; Steel Fixer [207 h]; Shutter [17 h]; Labor [48 h]; Reinforced Concrete [4.14 M3] | 64,712 |  |  | TR06 | RE&CW | MS#03 | CON | HD | CHW |
| CP09-TR6-RW-1750 |  | Backfilling | 5.62d | 2026-02-16 A | 2026-07-16 | CP09-TR6-RW-1740 SS+2.81d, CP09-TR6-RW-1740 FF+2.81d | 98% | 5.62d | 2026-03-15 | 2026-03-22 | -214.69d | 0d | Cost [25885]; Labor [25 h]; Backfilling [41.14 M3] | 25,885 |  |  | TR06 | RE&CW | MS#03 | CON | HD | CHW |
| CP09-TR6-RW-1670 |  | Plaing Concrete with HPDE | 4d | 2026-02-22 A | 2026-06-14 | CP09-TR6-RW-1720 SS+2.81d, CP09-TR6-RW-1720 FF+2.81d, CP09-EN-TR6-A-2220 | 98% | 4d | 2026-01-17 | 2026-01-21 | -214.69d | 0d | Cost [25885]; Mason [27 h]; Labor [48 h]; Plain Concrete [38.81 M3]; HDPE | 25,884.99 | 15,531 |  | TR06 | RE&CW | MS#03 | CON | HD | CHW |
| CP09-TR6-RW-1680 |  | Reinforced Concrete for Footing | 6d | 2026-02-22 A | 2026-06-17 | CP09-TR6-RW-1670 SS+2.81d, CP09-TR6-RW-1670 FF+2.81d, CP09-EN-TR6-A-2230, CP09-EN-TR6-A-2220 | 98% | 6d | 2026-01-28 | 2026-02-04 | -214.69d | 0d | Cost [194137]; Mason [48 h]; Steel Fixer [45 h]; Shutter [48 h]; Labor [48 h]; Reinforced Concrete [12.94 M3] | 194,137 |  |  | TR06 | RE&CW | MS#03 | CON | HD | CHW |
| CP09-TR6-RW-1710 |  | Soild Block Work | 5.62d | 2026-02-22 A | 2026-06-30 | CP09-TR6-RW-1700 SS+5.62d, CP09-TR6-RW-1700 FF+5.62d, CP09-EN-TR6-A-2250, CP09-PR-CV-DY-1020 | 98% | 5.62d | 2026-02-25 | 2026-03-03 | -214.69d | 0d | Cost [64712.5]; Mason [38 h]; Labor [48 h]; Blocks [10.35] | 64,712 |  |  | TR06 | RE&CW | MS#03 | CON | HD | CHW |
| CP09-TR6-RW-1720 |  | Excavation | 3.75d | 2026-02-22 A | 2026-06-10 | CP09-TR4-RW-1420, CP09-TR6-EW-1090, CP09-TR6-EW-1100 | 98% | 3.75d | 2026-01-14 | 2026-01-18 | -214.69d | 0d | Cost [19413.7]; EXCAVATOR [48 h]; LOADER [56 h]; TRUCK [56 h]; Labor [31 h]; Excavation [60.55 M3] | 19,413.74 | 11,648.4 |  | TR06 | RE&CW | MS#03 | CON | HD | CHW |
| CP09-TR6-RW-1740 |  | Waterproofing & Protection | 6.56d | 2026-02-22 A | 2026-07-13 | CP09-TR6-RW-1730 SS+7.5d, CP09-TR6-RW-1730 FF+7.5d, CP09-EN-TR6-A-2240 | 98% | 6.56d | 2026-03-11 | 2026-03-18 | -214.69d | 0d | Cost [25885]; Mason [10.08 h]; Labor [48 h]; Waterproofing [14.49 M2] | 25,885 |  |  | TR06 | RE&CW | MS#03 | CON | HD | CHW |
| CP09-TR6-RW-1760 |  | Marble Cladding | 10d | 2026-07-12 | 2026-07-23 | CP09-TR6-RW-1750 SS+5.62d, CP09-TR6-RW-1750 FF+5.62d, CP09-EN-TR6-A-2260, CP09-PR-CV-DY-1120 |  |  |  |  | -204.25d | 0d | Cost [129425]; Mason [88 h]; Labor [48 h]; Marble [31.05] | 129,425 |  |  | TR06 | RE&CW | MS#03 | CON | HD | CHW |
| CP09-TR6-RW-1770 |  | Marble Copping | 10d | 2026-07-18 | 2026-07-28 | CP09-TR6-RW-1760 SS+4.69d, CP09-TR6-RW-1760 FF+4.69d, CP09-EN-TR6-A-2260, CP09-PR-CV-DY-1120 |  |  |  |  | -204.25d | 0d | Cost [32356.2]; Mason [160 h]; Labor [48 h]; Marble Coping [25.88] | 32,356 |  |  | TR06 | RE&CW | MS#03 | CON | HD | CHW |

| ID | WBS | Activity | Duration | Start | Finish | Predecessors | Complete | Remaining | Planned start | Planned finish | Total float | Free float | Resources | Cost | Actual cost | Walls | CP09_Terrace-7 | CP09-Trade | CP09_Milestone-7 | CP09_Discipline-7 | DES | Networks |
| --- | --- | --- | --- | --- | --- | --- | --- | --- | --- | --- | --- | --- | --- | --- | --- | --- | --- | --- | --- | --- | --- | --- |
|  | 2 | **Solid Block Retaining Walls** |  | 2026-02-16 | 2026-07-28 |  |  |  |  |  |  |  |  |  |  |  |  |  |  |  |  |  |
| CP09-TR6-RW-1780 |  | Plaing Concrete with HPDE | 5d | 2026-02-16 A | 2026-06-14 | CP09-TR6-RW-1830 SS+2.81d, CP09-TR6-RW-1830 FF+2.81d, CP09-EN-TR6-A-2220 | 95% | 5d | 2026-01-31 | 2026-02-05 | -214.69d | 0d | Cost [7990.96]; Mason [27 h]; Labor [48 h]; Plain Concrete [38.81 M3]; HDPE | 7,990.96 | 4,794.6 | RW | TR06 | RE&CW | MS#03 | CON | HD |  |
| CP09-TR6-RW-1790 |  | Reinforced Concrete for Footing | 6.56d | 2026-02-16 A | 2026-06-17 | CP09-TR6-RW-1780 SS+2.81d, CP09-TR6-RW-1780 FF+2.81d, CP09-EN-TR6-A-2220, CP09-EN-TR6-A-2230 | 98% | 6.56d | 2026-01-27 | 2026-02-04 | -214.69d | 0d | Cost [59932.2]; Mason [48 h]; Steel Fixer [45 h]; Shutter [48 h]; Labor [48 h]; Reinforced Concrete [12.94 M3] | 59,932 |  | RW | TR06 | RE&CW | MS#03 | CON | HD |  |
| CP09-TR6-RW-1810 |  | Reinforced Concrete for Column | 5.62d | 2026-02-16 A | 2026-06-23 | CP09-TR6-RW-1800 SS+2.81d, CP09-TR6-RW-1800 FF+2.81d | 98% | 5.62d | 2026-02-05 | 2026-02-11 | -214.69d | 0d | Cost [9988.7]; Mason [48 h]; Steel Fixer [48 h]; Shutter [48 h]; Labor [48 h]; Reinforced Concrete | 9,989 |  | RW | TR06 | RE&CW | MS#03 | CON | HD |  |
| CP09-TR6-RW-1840 |  | Reinforced Concrete for Beam | 7.5d | 2026-02-16 A | 2026-07-05 | CP09-TR6-RW-1820 SS+3.75d, CP09-TR6-RW-1820 FF+3.75d | 98% | 7.5d | 2026-03-01 | 2026-03-10 | -214.69d | 0d | Cost [19977.4]; Mason [12 h]; Steel Fixer [207 h]; Shutter [17 h]; Labor [48 h]; Reinforced Concrete [4.14 M3] | 19,977 |  | RW | TR06 | RE&CW | MS#03 | CON | HD |  |
| CP09-TR6-RW-1850 |  | Waterproofing & Protection | 6.56d | 2026-02-16 A | 2026-07-13 | CP09-TR6-RW-1840 SS+7.5d, CP09-TR6-RW-1840 FF+7.5d | 98% | 6.56d | 2026-03-11 | 2026-03-18 | -214.69d | 0d | Cost [7990.96]; Mason [10.08 h]; Labor [48 h]; Waterproofing [14.49 M2] | 7,991 |  | RW | TR06 | RE&CW | MS#03 | CON | HD |  |
| CP09-TR6-RW-1800 |  | Reinforced Concrete for Tie beam | 5d | 2026-02-22 A | 2026-06-21 | CP09-TR6-RW-1790 SS+2.81d, CP09-TR6-RW-1790 FF+2.81d | 98% | 5d | 2026-02-02 | 2026-02-08 | -214.69d | 0d | Cost [9988.7]; Mason [48 h]; Steel Fixer [48 h]; Shutter [48 h]; Labor [48 h]; Reinforced Concrete | 9,989 |  | RW | TR06 | RE&CW | MS#03 | CON | HD |  |
| CP09-TR6-RW-1820 |  | Soild Block Work | 5.62d | 2026-02-22 A | 2026-06-30 | CP09-TR6-RW-1810 SS+5.62d, CP09-TR6-RW-1810 FF+5.62d, CP09-EN-TR6-A-2250 | 98% | 5.62d | 2026-02-25 | 2026-03-03 | -214.69d | 0d | Cost [19977.4]; Mason [38 h]; Labor [48 h]; Blocks [10.35] | 19,977 |  | RW | TR06 | RE&CW | MS#03 | CON | HD |  |
| CP09-TR6-RW-1830 |  | Excavation | 3.75d | 2026-02-22 A | 2026-06-10 | CP09-TR6-RW-1680, CP09-TR6-EW-1090, CP09-TR6-EW-1100 | 98% | 3.75d | 2026-01-27 | 2026-02-01 | -214.69d | 0d | Cost [5993.22]; EXCAVATOR [48 h]; LOADER [56 h]; TRUCK [56 h]; Labor [31 h]; Excavation [60.55 M3] | 5,993.22 | 3,595.8 | RW | TR06 | RE&CW | MS#03 | CON | HD |  |
| CP09-TR6-RW-1860 |  | Backfilling | 5.62d | 2026-02-22 A | 2026-07-16 | CP09-TR6-RW-1850 SS+2.81d, CP09-TR6-RW-1850 FF+2.81d | 98% | 5.62d | 2026-03-15 | 2026-03-22 | -214.69d | 0d | Cost [7990.96]; Labor [25 h]; Backfilling [41.14 M3] | 7,991 |  | RW | TR06 | RE&CW | MS#03 | CON | HD |  |
| CP09-TR6-RW-1870 |  | Marble Cladding | 6.56d | 2026-07-14 | 2026-07-22 | CP09-TR6-RW-1860 SS+4.69d, CP09-TR6-RW-1860 FF+4.69d, CP09-EN-TR6-A-2260, CP09-PR-CV-DY-1120 |  |  |  |  | -203.31d | 0d | Cost [39954.8]; Mason [88 h]; Labor [48 h]; Marble [31.05] | 39,955 |  | RW | TR06 | RE&CW | MS#03 | CON | HD |  |
| CP09-TR6-RW-1880 |  | Marble Copping | 6.56d | 2026-07-20 | 2026-07-28 | CP09-TR6-RW-1870 SS+4.69d, CP09-TR6-RW-1870 FF+4.69d, CP09-EN-TR6-A-2260, CP09-PR-CV-DY-1120 |  |  |  |  | -203.31d | 0.94d | Cost [9988.7]; Mason [160 h]; Labor [48 h]; Marble Coping [25.88] | 9,989 |  | RW | TR06 | RE&CW | MS#03 | CON | HD |  |
|  | 1 | **Irrigation Works** |  | 2026-02-16 | 2026-07-06 |  |  |  |  |  |  |  |  |  |  |  |  |  |  |  |  |  |
|  | 1 | **Sub-Main & Lateral** |  | 2026-02-16 | 2026-06-21 |  |  |  |  |  |  |  |  |  |  |  |  |  |  |  |  |  |
| CP09-TR6-IR-1330 |  | Excavation for Sub-main & Lateral Pieps | 4d | 2026-02-16 A | 2026-06-10 | CP09-EN-TR6-A-2450, CP09-TR6-HD-4000, CP09-TR4-IR-1140 | 90% | 4d | 2026-01-06 | 2026-01-11 | -185.56d | 0d | Cost [484535]; EXCAVATOR [4784 h]; LOADER [5744 h]; TRUCK [5744 h]; Excavation [7977.8 M3] | 484,535.36 | 314,947.75 |  | TR06 | IRR-W | MS#03 | CON | SO | IRR |
| CP09-TR6-IR-1340 |  | Sub-main & Lateral Pieps laying out and installation | 5d | 2026-02-16 A | 2026-06-16 | CP09-TR6-IR-1330 SS+2d, CP09-TR6-IR-1330 FF+5d, CP09-PR-IR-DY-1000 | 90% | 5d | 2026-01-11 | 2026-01-17 | -185.56d | 0d | Cost [872164]; PipeFitter [280 h]; Labor [48 h]; UPVC Pipes [7977.8 M] | 872,163.65 | 566,906.6 |  | TR06 | IRR-W | MS#03 | CON | SO | IRR |
| CP09-TR6-IR-1360 |  | Backfilling forSub-main & Lateral Pieps | 4d | 2026-02-16 A | 2026-06-21 | CP09-TR6-IR-1350 SS+2d, CP09-TR6-IR-1350 FF+2d | 90% | 4d | 2026-01-18 | 2026-01-22 | -185.56d | 0d | Cost [484535]; Labor [48 h]; Backfilling [7977.8 M3] | 484,535.36 | 314,947.75 |  | TR06 | IRR-W | MS#03 | CON | SO | IRR |
| CP09-TR6-IR-1350 |  | Sub-main & Lateral Pieps Testing | 3d | 2026-02-22 A | 2026-06-18 | CP09-TR6-IR-1340 SS+2d, CP09-TR6-IR-1340 FF+2d | 90% | 3d | 2026-01-15 | 2026-01-19 | -185.56d | 0d | Cost [96907.1] | 96,907.07 | 62,989.55 |  | TR06 | IRR-W | MS#03 | CON | SO | IRR |
|  | 2 | **Fittings & Accessories** |  | 2026-06-20 | 2026-07-06 |  |  |  |  |  |  |  |  |  |  |  |  |  |  |  |  |  |
| CP09-TR6-IR-1370 |  | Installation of Dripline | 5d | 2026-06-20 | 2026-06-24 | CP09-TR6-SF-1480, CP09-TR6-SF-1490 SS, CP09-TR6-IR-1350, CP09-PR-IR-DY-1010 |  |  |  |  | -180d | 0d | Cost [789420]; Labor [280 h]; Dripline [29500 Nos_] | 789,420 |  |  | TR06 | IRR-W | MS#03 | CON | SO | IRR |
| CP09-TR6-IR-1380 |  | Installation of Sprinklers | 5d | 2026-06-20 | 2026-06-24 | CP09-TR6-IR-1370 SS, CP09-PR-IR-DY-1040 |  |  |  |  | -180d | 0d | Cost [57038.3]; Labor [48 h]; Sprinkle [84.1 Nos_] | 57,038 |  |  | TR06 | IRR-W | MS#03 | CON | SO | IRR |
| CP09-TR6-IR-1390 |  | Installation Valves & Rings | 5d | 2026-06-25 | 2026-06-30 | CP09-TR6-IR-1380, CP09-PR-IR-DY-1030, CP09-PR-IR-DY-1020 |  |  |  |  | -180d | 0d | Cost [208328]; Valves [715.1]; Labor [48 h] | 208,328 |  |  | TR06 | IRR-W | MS#03 | CON | SO | IRR |
| CP09-TR6-IR-1400 |  | Installation of Electrical solenoid valve | 5d | 2026-06-25 | 2026-06-30 | CP09-TR6-IR-1390 SS, CP09-PR-IR-DY-1050 |  |  |  |  | -175d | 5d | Cost [439801]; Solenoid valve [22.4]; Labor [48 h] | 439,801 |  |  | TR06 | IRR-W | MS#03 | CON | SO | IRR |
| CP09-TR6-IR-1410 |  | Installation of Controller (decoder system plastic pedestal) | 5d | 2026-07-01 | 2026-07-06 | CP09-TR6-IR-1390, CP09-TR6-IR-1400 SS, CP09-PR-IR-DY-1060 |  |  |  |  | -180d | 0d | Cost [262719]; Controller [1]; Labor [48 h] | 262,719 |  |  | TR06 | IRR-W | MS#03 | CON | SO | IRR |
| CP09-TR6-IR-1420 |  | Installation of Controller decoder cables | 5d | 2026-07-01 | 2026-07-06 | CP09-TR6-IR-1410 SS, CP09-PR-IR-DY-1070 |  |  |  |  | -180d | 0d | Cost [198024]; Controller Cable [1850]; Labor [48 h] | 198,024 |  |  | TR06 | IRR-W | MS#03 | CON | SO | IRR |
| CP09-TR6-IR-1430 |  | Installation of Decoder one station | 5d | 2026-07-01 | 2026-07-06 | CP09-TR6-IR-1420 SS, CP09-PR-IR-DY-1080 |  |  |  |  | -180d | 0d | Cost [212404]; Decoder station [28.4]; Labor [48 h] | 212,404 |  |  | TR06 | IRR-W | MS#03 | CON | SO | IRR |

| ID | WBS | Activity | Duration | Start | Finish | Predecessors | Complete | Remaining | Planned start | Planned finish | Total float | Free float | Resources | Cost | Networks | CP09_Terrace-7 | CP09-Trade | CP09_Milestone-7 | CP09_Discipline-7 | DES | Hardscape |
| --- | --- | --- | --- | --- | --- | --- | --- | --- | --- | --- | --- | --- | --- | --- | --- | --- | --- | --- | --- | --- | --- |
|  | 4 | **Electrical Works** |  | 2026-02-22 | 2026-07-14 |  |  |  |  |  |  |  |  |  |  |  |  |  |  |  |  |
|  | 1 | **Power Cable & Pillars** |  | 2026-02-22 | 2026-07-14 |  |  |  |  |  |  |  |  |  |  |  |  |  |  |  |  |
| CP09-TR6-EL-1120 |  | Excavation | 5d | 2026-02-22 A | 2026-06-11 | CP09-TR6-EW-1090, CP09-TR6-EW-1100, CP09-TR6-IR-1360, CP09-EN-TR6-A-2410, CP09-TR4-EL-1060 | 75% | 5d | 2026-03-05 | 2026-03-10 | -205.81d | 0d | Cost [374565]; EXCAVATOR [3344 h]; LOADER [4016 h]; TRUCK [4016 h]; Excavation [6974.38 M3] | 374,565 | ELEC | TR06 | EL-W | MS#03 | CON | HD |  |
| CP09-TR6-EL-1130 |  | Installation of Power Cables | 4d | 2026-02-22 A | 2026-06-14 | CP09-TR6-EL-1120 SS+2d, CP09-TR6-EL-1120 FF+2d, CP09-EN-TR6-A-2410, CP09-EN-TR6-A-2420, CP09-PR-EL-DY-1060 | 75% | 4d | 2026-03-09 | 2026-03-12 | -205.81d | 0d | Cost [898956]; Electrical Cable [6974.38]; Electrican [280 h]; Labor [48 h] | 898,956 | ELEC | TR06 | EL-W | MS#03 | CON | HD |  |
| CP09-TR6-EL-1140 |  | Backfilling for Power Cables | 4d | 2026-02-22 A | 2026-06-16 | CP09-TR6-EL-1130 SS+2d, CP09-TR6-EL-1130 FF+2d | 75% | 4d | 2026-03-11 | 2026-03-15 | -205.81d | 0d | Cost [224739]; Backfilling [6974.38 M3] | 224,739 | ELEC | TR06 | EL-W | MS#03 | CON | HD |  |
| CP09-TR6-EL-1150 |  | Installation of Connecting Pillars | 3d | 2026-07-12 | 2026-07-14 | CP09-TR6-HD-3750, CP09-PR-EL-DY-1070 |  |  |  |  | -169d | 45.69d | Cost [428687]; Pillars [3]; Electrican [48 h]; Labor [48 h] | 428,687 | ELEC | TR06 | EL-W | MS#03 | CON | HD |  |
|  | 3 | **Hardscape** |  | 2026-02-09 | 2026-08-31 |  |  |  |  |  |  |  |  |  |  |  |  |  |  |  |  |
|  | 6 | **Concrete Curb** |  | 2026-04-13 | 2026-06-09 |  |  |  |  |  |  |  |  |  |  |  |  |  |  |  |  |
| CP09-TR6-HD-3700 |  | Excavation | 2d | 2026-04-13 A | 2026-04-24 A | CP09-TR6-EW-1090, CP09-TR6-EW-1100, CP09-TR6-EW-1110, CP09-TR4-HD-2380 | 100% |  | 2026-04-15 | 2026-04-16 |  |  | Cost [158617]; EXCAVATOR [312 h]; LOADER [368 h]; TRUCK [368 h]; Excavation [384.51 M3] | 158,617 |  | TR06 | HS | MS#03 | CON | HD | CURB |
| CP09-TR6-HD-3710 |  | Plains Concrete with HDPE waterproofing | 2d | 2026-04-13 A | 2026-04-24 A | CP09-TR6-HD-3700, CP09-EN-TR6-A-2340 | 100% |  | 2026-04-18 | 2026-04-19 |  |  | Cost [475850]; Plain Concrete [1121.49 M3]; HDPE | 475,850 |  | TR06 | HS | MS#03 | CON | HD | CURB |
| CP09-TR6-HD-3980 |  | Under Paving Reinforced Concrete Curb | 4d | 2026-04-13 A | 2026-04-24 A | CP09-TR6-HD-3710 SS+1.88d, CP09-TR6-HD-3710 FF+1.88d | 100% |  | 2026-04-19 | 2026-04-23 |  |  | Cost [951701]; Mason [144 h]; Steel Fixer [269 h]; Shutter [513 h]; Labor [48 h]; Reinforced Concrete [128.17 M3] | 951,701 |  | TR06 | HS | MS#03 | CON | HD | CURB |
| CP09-TR6-HD-4000 |  | Instal Flush Curb | 3d | 2026-06-07 | 2026-06-09 | CP09-EN-TR6-A-2340, CP09-PR-HD-DY-1080, CP09-TR6-HD-3980 SS+3d, CP09-TR6-HD-3980 FF+3d |  |  |  |  | -199.81d | 6d | Cost [116047]; Mason [160 h]; Labor [48 h]; Flush Curb [360.25] | 116,047 |  | TR06 | HS | MS#03 | CON | HD | CURB |
|  | 1 | **Side wake & Plazes** |  | 2026-02-22 | 2026-07-16 |  |  |  |  |  |  |  |  |  |  |  |  |  |  |  |  |
|  | 8 | **Interlocking Paving** |  | 2026-04-24 | 2026-06-23 |  |  |  |  |  |  |  |  |  |  |  |  |  |  |  |  |
| CP09-TR6-HD-3720 |  | Crush Stone for Interlock Types IL-(01,02,06,07) | 6.56d | 2026-04-24 A | 2026-06-14 | CP09-EN-TR6-A-2350, CP09-TR6-EW-1090, CP09-TR6-EW-1100, CP09-TR6-IR-1360, CP09-TR6-EL-1140, CP09-PR-HD-DY-1090, CP09-TR4-HD-2130 | 95% | 6.56d | 2026-05-11 | 2026-05-18 | -194.38d | 0d | Cost [410521]; Mason [280 h]; Labor [48 h]; Crushed Stone [2325.12] | 410,521 |  | TR06 | HS | MS#03 | CON | HD | INTK |
| CP09-TR6-HD-3730 |  | Sand Layer for Interlock Types IL-(01,02,06,07) | 10d | 2026-04-24 A | 2026-06-20 | CP09-TR6-HD-3720 SS+5d, CP09-TR6-HD-3720 FF+5d, CP09-EN-TR6-A-2350 | 95% | 10d | 2026-05-17 | 2026-05-27 | -194.38d | 0.62d | Cost [279178]; Mason [48 h]; Labor [280 h]; Clean sand [2321.5] | 279,178 |  | TR06 | HS | MS#03 | CON | HD | INTK |
| CP09-TR6-HD-3740 |  | Motar Bed Interlock Types IL-(03,04,08,09,10) | 10d | 2026-04-24 A | 2026-06-17 | CP09-TR6-HD-3730 SS, CP09-EN-TR6-A-2350 | 95% | 10d | 2026-05-17 | 2026-05-27 | -192.81d | 2.19d | Cost [68357.3]; Mason [48 h]; Labor [48 h] | 68,357 |  | TR06 | HS | MS#03 | CON | HD | INTK |
| CP09-TR6-HD-3750 |  | Interlocking Paving | 15d | 2026-04-24 A | 2026-06-23 | CP09-TR6-HD-3730 SS+2.81d, CP09-TR6-HD-3740 SS+2.81d, CP09-TR6-HD-3730 FF+2.81d, CP09-TR6-HD-3740 FF+2.81d, CP09-EN-TR6-A-2350, CP09-PR-HD-DY-1180 | 95% | 15d | 2026-05-19 | 2026-06-06 | -195d | 0d | Cost [521304]; Mason [280 h]; Labor [48 h]; Interlock [2966] | 521,304 |  | TR06 | HS | MS#03 | CON | HD | INTK |
|  | 2 | **Concrete in Situ** |  | 2026-02-22 | 2026-06-17 |  |  |  |  |  |  |  |  |  |  |  |  |  |  |  |  |
|  | 1 | **Slab on Garde** |  | 2026-02-22 | 2026-06-13 |  |  |  |  |  |  |  |  |  |  |  |  |  |  |  |  |
| CP09-TR6-HD-3490 |  | Plain Concrete with HDPE | 3.75d | 2026-02-22 A | 2026-06-10 | CP09-TR6-HD-3750, CP09-TR6-EW-1090, CP09-TR6-EW-1100, CP09-TR6-IR-1360, CP09-TR6-EL-1140, CP09-EN-TR6-A-2270 | 75% | 3.75d | 2026-03-28 | 2026-04-01 | -111.75d | 137.31d | Cost [577969]; Mason [280 h]; Labor [48 h]; Plain Concrete [3339.88 M3]; HDPE | 577,969 |  | TR06 | HS | MS#03 | CON | HD | CON |
| CP09-TR6-HD-3500 |  | Reinfored Concrete slab on grade | 5.62d | 2026-04-20 A | 2026-06-13 | CP09-TR6-HD-3490 | 75% | 5.62d | 2026-04-22 | 2026-04-29 | -113.62d | 135.44d | Cost [1444922]; Mason [48 h]; Steel Fixer [192 h]; Shutter [48 h]; Labor [48 h]; Reinforced Concrete [333.99 M3] | 1,444,922 |  | TR06 | HS | MS#03 | CON | HD | CON |
| CP09-TR6-HD-3510 |  | Waterproofing & Screed | 3.75d | 2026-04-20 A | 2026-06-10 | CP09-TR6-HD-3500 | 75% | 3.75d | 2026-04-29 | 2026-05-04 | -111.75d | 137.31d | Cost [288984]; Mason [280 h]; Labor [48 h]; Waterproofing [3339.88 M2] | 288,984 |  | TR06 | HS | MS#03 | CON | HD | CON |
|  | 2 | **Concrete In-situ w./Exposed Aggregate Finish** |  | 2026-04-20 | 2026-06-17 |  |  |  |  |  |  |  |  |  |  |  |  |  |  |  |  |
| CP09-TR6-HD-3520 |  | Concrete casting (including Joints & Wire Mish) | 9.38d | 2026-04-20 A | 2026-06-17 | CP09-TR6-HD-3510, CP09-TR6-HD-4000, CP09-EN-TR6-A-2270, CP09-PR-HD-DY-1000 | 75% | 9.38d | 2026-05-04 | 2026-05-14 | -117.38d | 131.69d | Cost [2600859]; Mason [280 h]; Labor [48 h]; Concrete /Exposed Aggregate [3339.88] | 2,600,859 |  | TR06 | HS | MS#03 | CON | HD | CON |
| CP09-TR6-HD-3530 |  | Finishing Concrete Surface | 5d | 2026-04-20 A | 2026-06-11 | CP09-TR6-HD-3520, CP09-TR6-RW-1760, CP09-TR6-RW-1770, CP09-TR6-RW-1870, CP09-TR6-RW-1880 | 75% | 5d | 2026-06-10 | 2026-06-15 | -159.75d | 25.19d | Cost [866953]; Mason [48 h]; Labor [48 h] | 866,953 |  | TR06 | HS | MS#03 | CON | HD | CON |

| ID | WBS | Activity | Duration | Start | Finish | Predecessors | Complete | Remaining | Planned start | Planned finish | Total float | Free float | Resources | Cost | Hardscape | CP09_Terrace-7 | CP09-Trade | CP09_Milestone-7 | CP09_Discipline-7 | DES |
| --- | --- | --- | --- | --- | --- | --- | --- | --- | --- | --- | --- | --- | --- | --- | --- | --- | --- | --- | --- | --- |
|  | 1 | **Marble Paving** |  | 2026-02-22 | 2026-06-14 |  |  |  |  |  |  |  |  |  |  |  |  |  |  |  |
|  | 1 | **Slab on Garde** |  | 2026-02-22 | 2026-06-13 |  |  |  |  |  |  |  |  |  |  |  |  |  |  |  |
| CP09-TR6-HD-3440 |  | Plain Concrete with HDPE | 3.75d | 2026-02-22 A | 2026-06-10 | CP09-TR6-HD-3750, CP09-TR6-EW-1090, CP09-TR6-EW-1110, CP09-TR6-IR-1360, CP09-TR6-EL-1140, CP09-EN-TR6-A-2280 | 85% | 3.75d | 2026-04-02 | 2026-04-07 | -111.75d | 137.31d | Cost [173552]; Mason [160 h]; Labor [48 h]; Plain Concrete [808.88 M3]; HDPE | 173,552 | MRB | TR06 | HS | MS#03 | CON | HD |
| CP09-TR6-HD-3450 |  | Reinfored Concrete slab on grade | 5.62d | 2026-02-22 A | 2026-06-13 | CP09-TR6-HD-3440 | 50% | 5.62d | 2026-02-11 | 2026-02-18 | -113.62d | 135.44d | Cost [416525]; Mason [48 h]; Steel Fixer [170 h]; Shutter [48 h]; Labor [48 h]; Reinforced Concrete [80.89 M3] | 416,525 | MRB | TR06 | HS | MS#03 | CON | HD |
| CP09-TR6-HD-3460 |  | Waterproofing & Screed | 5d | 2026-04-20 A | 2026-06-11 | CP09-TR6-HD-3450 | 50% | 5d | 2026-04-25 | 2026-04-30 | -113d | 136.06d | Cost [104131]; Mason [160 h]; Labor [48 h]; Waterproofing [808.88 M2] | 104,131 | MRB | TR06 | HS | MS#03 | CON | HD |
|  | 2 | **Marble Tiles** |  | 2026-04-20 | 2026-06-14 |  |  |  |  |  |  |  |  |  |  |  |  |  |  |  |
| CP09-TR6-HD-3470 |  | Marble Fixiation | 7d | 2026-04-20 A | 2026-06-14 | CP09-TR6-HD-3460, CP09-TR6-HD-4000, CP09-EN-TR6-A-2280, CP09-PR-HD-DY-1010 | 50% | 7d | 2026-04-30 | 2026-05-09 | -115d | 134.06d | Cost [2283133]; Mason [280 h]; Labor [48 h]; Marble [1120.38] | 2,283,133 | MRB | TR06 | HS | MS#03 | CON | HD |
| CP09-TR6-HD-3480 |  | Marble Surfcae Finishing | 4d | 2026-04-20 A | 2026-06-10 | CP09-TR6-HD-3470, CP09-TR6-HD-3530 SS | 50% | 4d | 2026-06-10 | 2026-06-14 | -158.75d | 26.19d | Cost [402906]; Mason [48 h]; Labor [48 h] | 402,906 | MRB | TR06 | HS | MS#03 | CON | HD |
|  | 3 | **Wooden Floor Boards** |  | 2026-06-22 | 2026-07-15 |  |  |  |  |  |  |  |  |  |  |  |  |  |  |  |
|  | 1 | **Slab on Garde** |  | 2026-06-22 | 2026-07-04 |  |  |  |  |  |  |  |  |  |  |  |  |  |  |  |
| CP09-TR6-HD-3540 |  | Plain Concrete with HDPE | 2.81d | 2026-06-22 | 2026-06-24 | CP09-TR6-EW-1090, CP09-TR6-EW-1100, CP09-TR6-IR-1360, CP09-TR6-EL-1140, CP09-EN-TR6-A-2290 |  |  |  |  | -184.94d | 0d | Cost [116181]; Mason [160 h]; Labor [48 h]; Plain Concrete [395.25 M3]; HDPE | 116,181 | WPC | TR06 | HS | MS#03 | CON | HD |
| CP09-TR6-HD-3550 |  | Reinfored Concrete slab on grade | 5d | 2026-06-24 | 2026-06-30 | CP09-TR6-HD-3540 |  |  |  |  | -184.94d | 0d | Cost [278834]; Mason [48 h]; Steel Fixer [83 h]; Shutter [48 h]; Labor [48 h]; Reinforced Concrete [39.52 M3] | 278,834 | WPC | TR06 | HS | MS#03 | CON | HD |
| CP09-TR6-HD-3560 |  | Waterproofing & Screed | 2.81d | 2026-06-30 | 2026-07-04 | CP09-TR6-HD-3550 |  |  |  |  | -184.94d | 0d | Cost [69708.4]; Mason [160 h]; Labor [48 h]; Waterproofing [395.25 M2] | 69,708 | WPC | TR06 | HS | MS#03 | CON | HD |
|  | 2 | **Wood- Plastic Composit** |  | 2026-07-04 | 2026-07-15 |  |  |  |  |  |  |  |  |  |  |  |  |  |  |  |
| CP09-TR6-HD-3570 |  | WPC Installation | 6.56d | 2026-07-04 | 2026-07-12 | CP09-TR6-HD-3560, CP09-TR6-HD-4000, CP09-EN-TR6-A-2290, CP09-PR-HD-DY-1020 |  |  |  |  | -184.94d | 0d | Cost [1816040]; WPC [528] | 1,816,040 | WPC | TR06 | HS | MS#03 | CON | HD |
| CP09-TR6-HD-3580 |  | WPC surface finishing & Accessories | 3.75d | 2026-07-12 | 2026-07-15 | CP09-TR6-HD-3570, CP09-TR6-HD-3480, CP09-TR6-HD-3530 |  |  |  |  | -184.94d | 0.62d | Cost [454010] | 454,010 | WPC | TR06 | HS | MS#03 | CON | HD |
|  | 4 | **Gravel layer** |  | 2026-06-22 | 2026-07-06 |  |  |  |  |  |  |  |  |  |  |  |  |  |  |  |
|  | 1 | **Slab on Garde** |  | 2026-06-22 | 2026-06-28 |  |  |  |  |  |  |  |  |  |  |  |  |  |  |  |
| CP09-TR6-HD-3590 |  | Plain Concrete with HDPE | 2.81d | 2026-06-22 | 2026-06-24 | CP09-TR6-EW-1090, CP09-TR6-EW-1100, CP09-TR6-IR-1360, CP09-TR6-EL-1140, CP09-EN-TR6-A-2300 |  |  |  |  | -185.56d | 0d | Cost [7507.48]; Mason [90 h]; Labor [48 h]; Plain Concrete [128.88 M3]; HDPE | 7,507 | GRV | TR06 | HS | MS#03 | CON | HD |
| CP09-TR6-HD-3610 |  | Mortar bed | 2.81d | 2026-06-24 | 2026-06-28 | CP09-TR6-HD-3590 |  |  |  |  | -185.56d | 0d | Cost [7507.48]; Mason [48 h]; Labor [48 h] | 7,507 | GRV | TR06 | HS | MS#03 | CON | HD |
|  | 2 | **Gravel Layer, w./Earth Colors** |  | 2026-06-28 | 2026-07-06 |  |  |  |  |  |  |  |  |  |  |  |  |  |  |  |
| CP09-TR6-HD-3620 |  | Furnish & install Garvel Layer | 6.56d | 2026-06-28 | 2026-07-06 | CP09-TR6-HD-3610, CP09-TR6-HD-4000, CP09-EN-TR6-A-2300, CP09-PR-HD-DY-1030 |  |  |  |  | -185.56d | 0d | Cost [35034.9]; Mason [77 h]; Labor [48 h]; Gravel Layer [128.88] | 35,035 | GRV | TR06 | HS | MS#03 | CON | HD |
|  | 5 | **Crushed Stone** |  | 2026-07-06 | 2026-07-16 |  |  |  |  |  |  |  |  |  |  |  |  |  |  |  |
|  | 1 | **Slab on Garde** |  | 2026-07-06 | 2026-07-12 |  |  |  |  |  |  |  |  |  |  |  |  |  |  |  |
| CP09-TR6-HD-3630 |  | Geotextile membrane | 2.81d | 2026-07-06 | 2026-07-08 | CP09-TR6-HD-3620, CP09-TR6-EW-1090, CP09-TR6-EW-1100, CP09-TR6-IR-1360, CP09-TR6-EL-1140, CP09-EN-TR6-A-2310 |  |  |  |  | -185.56d | 0d | Cost [3164.14]; Mason [48 h]; Labor [4 h]; Geotextile Sheets [13.25] | 3,164 | CRST | TR06 | HS | MS#03 | CON | HD |
| CP09-TR6-HD-3650 |  | Gravel fix sheets | 3d | 2026-07-09 | 2026-07-12 | CP09-TR6-HD-3630 |  |  |  |  | -185.56d | 0d | Cost [3164.14]; Waterproofing | 3,164 | CRST | TR06 | HS | MS#03 | CON | HD |

| ID | WBS | Activity | Duration | Start | Finish | Predecessors | Complete | Remaining | Planned start | Planned finish | Total float | Free float | Resources | Cost | Hardscape | CP09_Terrace-7 | CP09-Trade | CP09_Milestone-7 | CP09_Discipline-7 | DES |
| --- | --- | --- | --- | --- | --- | --- | --- | --- | --- | --- | --- | --- | --- | --- | --- | --- | --- | --- | --- | --- |
|  | 2 | **Crushed Dolomite Stone** |  | 2026-07-09 | 2026-07-16 |  |  |  |  |  |  |  |  |  |  |  |  |  |  |  |
| CP09-TR6-HD-3660 |  | Furnish & Install Crushed Dolomite stone , w./ mixed colors | 6.56d | 2026-07-09 | 2026-07-16 | CP09-TR6-HD-3650 FF, CP09-TR6-HD-3650 SS, CP09-TR6-HD-3620, CP09-TR6-HD-4000, CP09-EN-TR6-A-2310, CP09-PR-HD-DY-1040 |  |  |  |  | -185.56d | 0d | Cost [14766]; Mason [37 h]; Labor [48 h]; Crushed Dolomite stone [13.25] | 14,766 | CRST | TR06 | HS | MS#03 | CON | HD |
|  | 6 | **Loose Gravel** |  | 2026-06-24 | 2026-07-02 |  |  |  |  |  |  |  |  |  |  |  |  |  |  |  |
|  | 2 | **Loose Gravel 50mm** |  | 2026-06-24 | 2026-07-02 |  |  |  |  |  |  |  |  |  |  |  |  |  |  |  |
| CP09-TR6-HD-3670 |  | Furnish & Install loose gravel w./earth colors. | 6.56d | 2026-06-24 | 2026-07-02 | CP09-TR6-HD-3590, CP09-TR6-HD-4000, CP09-TR6-IR-1360, CP09-TR6-EL-1140, CP09-EN-TR6-A-2320, CP09-PR-HD-DY-1050 |  |  |  |  | -173.38d | 12.19d | Cost [8429.21]; Mason [19 h]; Labor [48 h]; Loose gravel [31.38] | 8,429 | LGRV | TR06 | HS | MS#03 | CON | HD |
|  | 7 | **Clean Sand Layer** |  | 2026-05-04 | 2026-06-11 |  |  |  |  |  |  |  |  |  |  |  |  |  |  |  |
|  | 1 | **Kids & Fitness Area** |  | 2026-05-04 | 2026-06-11 |  |  |  |  |  |  |  |  |  |  |  |  |  |  |  |
| CP09-TR6-HD-3680 |  | Geotextile Sheets | 5d | 2026-05-04 A | 2026-06-11 | CP09-TR6-HD-3670, CP09-TR6-EW-1090, CP09-TR6-EW-1100, CP09-TR6-HD-4000, CP09-TR6-IR-1360, CP09-TR6-EL-1140, CP09-EN-TR6-A-2330 | 55% | 5d | 2026-05-26 | 2026-06-01 | -113d | 136.06d | Cost [65290.1]; Geotextile Sheets [1227.62] | 65,290 | SND | TR06 | HS | MS#03 | CON | HD |
| CP09-TR6-HD-3690 |  | Install Clean sand layer | 5d | 2026-05-04 A | 2026-06-11 | CP09-TR6-HD-3680, CP09-TR6-HD-3670, CP09-TR6-HD-4000, CP09-EN-TR6-A-2330, CP09-PR-HD-DY-1070 | 55% | 5d | 2026-06-01 | 2026-06-07 | -151d | 0d | Cost [261160]; Clean sand [1227.62] | 261,160 | SND | TR06 | HS | MS#03 | CON | HD |
|  | 2 | **Site Improvments** |  | 2026-02-09 | 2026-08-31 |  |  |  |  |  |  |  |  |  |  |  |  |  |  |  |
|  | 1 | **Marble Steps** |  | 2026-02-09 | 2026-08-03 |  |  |  |  |  |  |  |  |  |  |  |  |  |  |  |
| CP09-TR6-HD-3760 |  | Reinforecd Concrete Step. | 5.62d | 2026-02-09 A | 2026-06-13 | CP09-TR6-RW-1860, CP09-TR6-EW-1090, CP09-TR6-EW-1100, CP09-EN-TR6-A-2360, CP09-TR6-IR-1360, CP09-TR6-EL-1140 | 20% | 5.62d | 2026-03-22 | 2026-03-29 | -162.06d | 0d | Cost [255883]; Mason [48 h]; Steel Fixer [48 h]; Shutter [48 h]; Labor [48 h]; Reinforced Concrete | 255,883 | STP | TR06 | HS | MS#03 | CON | HD |
| CP09-TR6-HD-3770 |  | Install Marble Blocks | 6.56d | 2026-06-08 | 2026-06-16 | CP09-TR6-HD-3760 SS+2.81d, CP09-TR6-HD-3760 FF+2.81d, CP09-PR-HD-DY-1100 |  |  |  |  | -162.06d | 36.56d | Cost [162834]; Marble Step [6.38] | 162,834 | STP | TR06 | HS | MS#03 | CON | HD |
| CP09-TR6-HD-3780 |  | Finishing Marble Surface | 5d | 2026-07-29 | 2026-08-03 | CP09-TR6-HD-3770, CP09-TR6-RW-1760, CP09-TR6-RW-1770, CP09-TR6-RW-1870, CP09-TR6-RW-1880 |  |  |  |  | -182d | 23.81d | Cost [46524.1] | 46,524 | STP | TR06 | HS | MS#03 | CON | HD |
|  | 2 | **Curvelinear Block Seat** |  | 2026-02-16 | 2026-08-04 |  |  |  |  |  |  |  |  |  |  |  |  |  |  |  |
| CP09-TR6-HD-3800 |  | Plaing Concrete with HPDE | 3.75d | 2026-02-16 A | 2026-04-28 A | CP09-TR6-HD-3790 | 100% |  | 2026-03-18 | 2026-03-23 |  |  | Cost [12486.2]; Mason [24 h]; Labor [48 h]; Plain Concrete [34.59 M3]; HDPE | 12,486 | SEAT | TR06 | HS | MS#03 | CON | HD |
| CP09-TR6-HD-3790 |  | Excavation | 2.81d | 2026-02-22 A | 2026-04-28 A | CP09-TR6-RW-1840, CP09-TR6-EW-1090, CP09-TR6-EW-1100, CP09-EN-TR6-A-2370, CP09-TR6-EL-1140 | 100% |  | 2026-03-16 | 2026-03-18 |  |  | Cost [9988.94]; EXCAVATOR [48 h]; LOADER [56 h]; TRUCK [56 h]; Excavation [59.96 M3] | 9,989 | SEAT | TR06 | HS | MS#03 | CON | HD |
| CP09-TR6-HD-3810 |  | W | 5.62d | 2026-02-22 A | 2026-04-28 A | CP09-TR6-HD-3800 | 100% |  | 2026-03-23 | 2026-03-30 |  |  | Cost [74917.1]; Mason [48 h]; Steel Fixer [31 h]; Shutter [48 h]; Labor [48 h]; Reinforced Concrete [8.84 M3] | 74,917 | SEAT | TR06 | HS | MS#03 | CON | HD |
| CP09-TR6-HD-3820 |  | Reinforced Concrete for beam | 5d | 2026-02-22 A | 2026-04-28 A | CP09-TR6-HD-3810 | 100% |  | 2026-03-30 | 2026-04-05 |  |  | Cost [24972.4]; Mason [5 h]; Steel Fixer [77 h]; Shutter [6 h]; Labor [48 h]; Reinforced Concrete [1.54 M3] | 24,972 | SEAT | TR06 | HS | MS#03 | CON | HD |
| CP09-TR6-HD-3830 |  | Waterproofing & Protection | 3.75d | 2026-02-22 A | 2026-04-28 A | CP09-TR6-HD-3820 | 100% |  | 2026-04-05 | 2026-04-08 |  |  | Cost [24972.4]; Waterproofing [9.22 M2] | 24,972 | SEAT | TR06 | HS | MS#03 | CON | HD |
| CP09-TR6-HD-3840 |  | Backfilling | 2.81d | 2026-02-22 A | 2026-04-28 A | CP09-TR6-HD-3830 | 100% |  | 2026-04-08 | 2026-04-12 |  |  | Cost [14983.4]; Backfilling [40.74 M3] | 14,983 | SEAT | TR06 | HS | MS#03 | CON | HD |
| CP09-TR6-HD-3850 |  | Marble Capping | 5.62d | 2026-07-29 | 2026-08-04 | CP09-TR6-RW-1870, CP09-TR6-RW-1880, CP09-TR6-RW-1760, CP09-TR6-RW-1770, CP09-TR6-HD-3840, CP09-PR-HD-DY-1110 |  |  |  |  | -204.25d | 0d | Cost [87403.2]; Mason [160 h]; Labor [48 h]; Marble Coping [25.62] | 87,403 | SEAT | TR06 | HS | MS#03 | CON | HD |
|  | 3 | **Pools Shower-04** |  | 2026-06-17 | 2026-08-31 |  |  |  |  |  |  |  |  |  |  |  |  |  |  |  |
| CP09-TR6-HD-3860 |  | Plain Concrete Basin | 5d | 2026-06-17 | 2026-06-22 | CP09-TR6-HD-4000, CP09-EN-TR6-A-2380, CP09-TR6-EL-1140 |  |  |  |  | -205.81d | 0d | Cost [5183.94]; Mason [5 h]; Labor [48 h]; Plain Concrete [7 M3] | 5,184 | PLSHW | TR06 | HS | MS#03 | CON | HD |
| CP09-TR6-HD-3870 |  | R.Concrete Basin | 7d | 2026-06-23 | 2026-06-30 | CP09-TR6-HD-3860 |  |  |  |  | -205.81d | 0d | Cost [20735.8]; Mason [48 h]; Steel Fixer [5 h]; Shutter [48 h]; Labor [48 h]; Reinforced Concrete [1.5 M3] | 20,736 | PLSHW | TR06 | HS | MS#03 | CON | HD |
| CP09-TR6-HD-3880 |  | Solid Block Work | 7d | 2026-07-01 | 2026-07-08 | CP09-TR6-HD-3870 |  |  |  |  | -205.81d | 0d | Cost [2073.57]; Mason [48 h]; Labor [48 h]; Blocks [0.25] | 2,074 | PLSHW | TR06 | HS | MS#03 | CON | HD |
| CP09-TR6-HD-3890 |  | Water Proofing | 5d | 2026-07-09 | 2026-07-14 | CP09-TR6-HD-3880 |  |  |  |  | -205.81d | 0d | Cost [2591.97]; Mason [5.04 h]; Labor [48 h] | 2,592 | PLSHW | TR06 | HS | MS#03 | CON | HD |
| CP09-TR6-HD-3900 |  | Backfilling | 5d | 2026-07-15 | 2026-07-20 | CP09-TR6-HD-3890 |  |  |  |  | -205.81d | 0d | Cost [1555.18]; Labor [2 h] | 1,555 | PLSHW | TR06 | HS | MS#03 | CON | HD |
| CP09-TR6-HD-3910 |  | Mica Stone Cladding | 5d | 2026-07-21 | 2026-07-26 | CP09-TR6-HD-3900, CP09-PR-HD-DY-1120 |  |  |  |  | -205.81d | 0d | Cost [20735.8]; Mason [11 h]; Labor [48 h] | 20,736 | PLSHW | TR06 | HS | MS#03 | CON | HD |
| CP09-TR6-HD-3920 |  | Mica Stone Capping | 5d | 2026-07-27 | 2026-08-01 | CP09-TR6-HD-3910, CP09-PR-HD-DY-1120 |  |  |  |  | -205.81d | 0d | Cost [2073.57]; Mason [1 h]; Labor [48 h] | 2,074 | PLSHW | TR06 | HS | MS#03 | CON | HD |
| CP09-TR6-HD-3930 |  | Drainage Cover with Geotextile | 5d | 2026-08-02 | 2026-08-06 | CP09-TR6-HD-3920, CP09-PR-HD-DY-1060 |  |  |  |  | -205.81d | 0d | Cost [12441.5] | 12,441 | PLSHW | TR06 | HS | MS#03 | CON | HD |
| CP09-TR6-HD-3940 |  | Blast stone blocks for Flooring | 6d | 2026-08-08 | 2026-08-13 | CP09-TR6-HD-3930, CP09-PR-HD-DY-1130 |  |  |  |  | -205.81d | 0d | Cost [15551.8]; Mason [9 h]; Labor [48 h] | 15,552 | PLSHW | TR06 | HS | MS#03 | CON | HD |
| CP09-TR6-HD-3950 |  | Blast Stone Blocks Capping | 6d | 2026-08-15 | 2026-08-20 | CP09-TR6-HD-3940, CP09-PR-HD-DY-1130 |  |  |  |  | -205.81d | 0d | Cost [5183.94]; Mason [16 h]; Labor [48 h] | 5,184 | PLSHW | TR06 | HS | MS#03 | CON | HD |
| CP09-TR6-HD-3960 |  | Loose Rounded Pebbles | 6d | 2026-08-22 | 2026-08-27 | CP09-TR6-HD-3950, CP09-PR-HD-DY-1140 |  |  |  |  | -205.81d | 0d | Cost [5183.94]; Mason [48 h]; Labor [48 h] | 5,184 | PLSHW | TR06 | HS | MS#03 | CON | HD |
| CP09-TR6-HD-3970 |  | Shower Head Fixation | 2.81d | 2026-08-29 | 2026-08-31 | CP09-TR6-HD-3960, CP09-TR6-HD-3940, CP09-TR6-HD-3950, CP09-PR-HD-DY-1150 |  |  |  |  | -205.81d | 0d | Cost [10367.9] | 10,368 | PLSHW | TR06 | HS | MS#03 | CON | HD |

| ID | WBS | Activity | Duration | Start | Finish | Predecessors | Total float | Free float | Resources | Cost | Hardscape | CP09_Terrace-7 | CP09-Trade | CP09_Milestone-7 | CP09_Discipline-7 | DES | Softscape |
| --- | --- | --- | --- | --- | --- | --- | --- | --- | --- | --- | --- | --- | --- | --- | --- | --- | --- |
|  | 4 | **Handrails** |  | 2026-08-04 | 2026-08-11 |  |  |  |  |  |  |  |  |  |  |  |  |
| CP09-TR6-HD-4010 |  | Install & Fix Stainless Handrail (500 mm height) | 5.62d | 2026-08-04 | 2026-08-11 | CP09-TR6-HD-3770, CP09-TR6-HD-3850, CP09-EN-TR6-A-2390, CP09-PR-HD-DY-1160 | -204.25d | 0d | Cost [131128]; Labor [51 h]; Stanless Steel Handrial [25.62] | 131,128 | HND | TR06 | HS | MS#03 | CON | HD |  |
| CP09-TR6-HD-4020 |  | Install & Fix Glass Handrail (900mm height) | 5.62d | 2026-08-04 | 2026-08-11 | CP09-TR6-HD-3770, CP09-TR6-HD-3850, CP09-EN-TR6-A-2390, CP09-PR-HD-DY-1170 | -204.25d | 0d | Cost [44178.5]; Glass Handrail [36]; Labor [7 h] | 44,179 | HND | TR06 | HS | MS#03 | CON | HD |  |
|  | 11 | **Sinage** |  | 2026-07-16 | 2026-09-06 |  |  |  |  |  |  |  |  |  |  |  |  |
| CP09-TR6-SN-4140 |  | Excavation | 10d | 2026-07-16 | 2026-07-28 | CP09-TR6-RW-1860, CP09-TR6-RW-1750, CP09-TR6-HD-3750, CP09-EN-TR6-A-2430 | -214.69d | 0d | Cost [21369.8]; EXCAVATOR [72 h]; LOADER [88 h]; TRUCK [88 h]; Excavation [92.06 M3] | 21,370 | SING | TR06 | SIN | MS#03 | CON | HD |  |
| CP09-TR6-SN-4150 |  | Plain Concrete with HDPE | 7d | 2026-07-22 | 2026-07-30 | CP09-TR6-SN-4140 SS+2d, CP09-TR6-SN-4140 FF+2d | -214.69d | 0d | Cost [32054.7]; Mason [4 h]; Labor [48 h]; Plain Concrete [6.14 M3] | 32,055 | SING | TR06 | SIN | MS#03 | CON | HD |  |
| CP09-TR6-SN-4160 |  | Reinforced Concrete | 12d | 2026-07-25 | 2026-08-08 | CP09-TR6-SN-4150 SS+2d, CP09-TR6-SN-4150 FF+2d | -214.69d | 0d | Cost [117534]; Mason [92 h]; Steel Fixer [616 h]; Shutter [123 h]; Labor [48 h]; Reinforced Concrete [30.69 M3] | 117,534 | SING | TR06 | SIN | MS#03 | CON | HD |  |
| CP09-TR6-SN-4170 |  | Waterproofing | 5d | 2026-08-05 | 2026-08-11 | CP09-TR6-SN-4160 SS+3d, CP09-TR6-SN-4160 FF+3d | -214.69d | 0d | Cost [21369.8]; Mason [128.8 h]; Labor [48 h]; Waterproofing [184.12 M2] | 21,370 | SING | TR06 | SIN | MS#03 | CON | HD |  |
| CP09-TR6-SN-4180 |  | Grouting | 5d | 2026-08-08 | 2026-08-13 | CP09-TR6-SN-4170 SS+2d, CP09-TR6-SN-4170 FF+2d | -214.69d | 0d | Cost [21369.8] | 21,370 | SING | TR06 | SIN | MS#03 | CON | HD |  |
| CP09-TR6-SN-4190 |  | STREET DIRECTIONAL SIGN | 10d | 2026-08-13 | 2026-08-25 | CP09-TR6-SN-4180, CP09-PR-SN-DY-1000 | -214.69d | 0d | Cost [124876]; Sign [41.25] | 124,876 | SING | TR06 | SIN | MS#03 | CON | HD |  |
| CP09-TR6-SN-4200 |  | DIRECTIONAL SIGN FOR VEHICULAR | 10d | 2026-08-13 | 2026-08-25 | CP09-TR6-SN-4180, CP09-PR-SN-DY-1010 | -214.69d | 0d | Cost [227367]; Sign [3.88] | 227,367 | SING | TR06 | SIN | MS#03 | CON | HD |  |
| CP09-TR6-SN-4230 |  | RULES SIGN | 10d | 2026-08-13 | 2026-08-25 | CP09-TR6-SN-4180, CP09-PR-SN-DY-1030 | -214.69d | 0d | Cost [102164]; Sign [10.38] | 102,164 | SING | TR06 | SIN | MS#03 | CON | HD |  |
| CP09-TR6-SN-4210 |  | UNIT ID SIGN (FRONT YARD) | 10d | 2026-08-25 | 2026-09-06 | CP09-TR6-SN-4190, CP09-TR6-SN-4200, CP09-TR6-SN-4230, CP09-TR6-SN-4180, CP09-PR-SN-DY-1020 | -214.69d | 0d | Cost [81022.5]; Sign [2.25] | 81,023 | SING | TR06 | SIN | MS#03 | CON | HD |  |
| CP09-TR6-SN-4220 |  | UNIT ID SIGN (BACK YARD) | 10d | 2026-08-25 | 2026-09-06 | CP09-TR6-SN-4190, CP09-TR6-SN-4200, CP09-TR6-SN-4230, CP09-TR6-SN-4180, CP09-PR-SN-DY-1020 | -214.69d | 0d | Cost [55703]; Sign [5] | 55,703 | SING | TR06 | SIN | MS#03 | CON | HD |  |
| CP09-TR6-SN-4240 |  | IDENTIFICATION SIGN | 10d | 2026-08-25 | 2026-09-06 | CP09-TR6-SN-4190, CP09-TR6-SN-4200, CP09-TR6-SN-4230, CP09-TR6-SN-4180, CP09-PR-SN-DY-1040 | -214.69d | 0d | Cost [49962.7]; Sign [60] | 49,963 | SING | TR06 | SIN | MS#03 | CON | HD |  |
|  | 7 | **Landscape Furntiure** |  | 2026-08-11 | 2026-08-17 |  |  |  |  |  |  |  |  |  |  |  |  |
| CP09-TR6-FN-4030 |  | Install & Fix Pitch Pine Picnic Table | 5d | 2026-08-11 | 2026-08-17 | CP09-TR6-HD-3810, CP09-TR6-HD-4010, CP09-TR6-HD-4020, CP09-TR6-HD-3750, CP09-TR6-HD-3670, CP09-TR6-HD-3660, CP09-TR6-HD-3620, CP09-TR6-HD-3580, CP09-TR6-HD-3480, CP09-TR6-HD-3530, CP09-EN-TR6-A-2400, CP09-PR-FN-DY-1000 | -197.25d | 17.44d | Cost [93998.3]; Pitch Pine Picnic Table [1] | 93,998 |  | TR06 | LA-F | MS#03 | CON | SO | FRNT |
| CP09-TR6-FN-4040 |  | Install & Fix Crcular Cast-iron tree grate | 5d | 2026-08-11 | 2026-08-17 | CP09-TR6-HD-4010, CP09-TR6-HD-4020, CP09-TR6-HD-3750, CP09-TR6-HD-3670, CP09-TR6-HD-3660, CP09-TR6-HD-3620, CP09-TR6-HD-3580, CP09-TR6-HD-3480, CP09-TR6-HD-3530, CP09-EN-TR6-A-2400, CP09-PR-FN-DY-1010 | -197.25d | 17.44d | Cost [655486]; Crcular Cast-iron tree grate [23.38] | 655,486 |  | TR06 | LA-F | MS#03 | CON | SO | FRNT |
| CP09-TR6-FN-4050 |  | Install & Fix Aluminium Cabana for Pool Shading | 5d | 2026-08-11 | 2026-08-17 | CP09-TR6-HD-4010, CP09-TR6-HD-4020, CP09-TR6-HD-3750, CP09-TR6-HD-3670, CP09-TR6-HD-3660, CP09-TR6-HD-3620, CP09-TR6-HD-3580, CP09-TR6-HD-3480, CP09-TR6-HD-3530, CP09-EN-TR6-A-2400, CP09-PR-FN-DY-1020 | -204.25d | 0d | Cost [195690]; Aluminium Cabana [1] | 195,690 |  | TR06 | LA-F | MS#03 | CON | SO | FRNT |
| CP09-TR6-FN-4060 |  | Install & Fix Pitch Pine Benchs | 5d | 2026-08-11 | 2026-08-17 | CP09-TR6-HD-4010, CP09-TR6-HD-4020, CP09-TR6-HD-3750, CP09-TR6-HD-3670, CP09-TR6-HD-3660, CP09-TR6-HD-3620, CP09-TR6-HD-3580, CP09-TR6-HD-3480, CP09-TR6-HD-3530, CP09-EN-TR6-A-2400, CP09-PR-FN-DY-1030 | -197.25d | 17.44d | Cost [316796]; Pitch Pine Benchs [9.5] | 316,796 |  | TR06 | LA-F | MS#03 | CON | SO | FRNT |
| CP09-TR6-FN-4070 |  | Install & Fix Polyester Hammocks | 5d | 2026-08-11 | 2026-08-17 | CP09-TR6-HD-4010, CP09-TR6-HD-4020, CP09-TR6-HD-3750, CP09-TR6-HD-3670, CP09-TR6-HD-3660, CP09-TR6-HD-3620, CP09-TR6-HD-3580, CP09-TR6-HD-3480, CP09-TR6-HD-3530, CP09-EN-TR6-A-2400, CP09-PR-FN-DY-1040 | -197.25d | 17.44d | Cost [40144.4]; Polyester Hammocks [1] | 40,144 |  | TR06 | LA-F | MS#03 | CON | SO | FRNT |
| CP09-TR6-FN-4080 |  | Install & Fix Adult Play Swing | 5d | 2026-08-11 | 2026-08-17 | CP09-TR6-HD-4010, CP09-TR6-HD-4020, CP09-TR6-HD-3750, CP09-TR6-HD-3670, CP09-TR6-HD-3660, CP09-TR6-HD-3620, CP09-TR6-HD-3580, CP09-TR6-HD-3480, CP09-TR6-HD-3530, CP09-EN-TR6-A-2400, CP09-PR-FN-DY-1050 | -197.25d | 17.44d | Cost [30435]; Adult Play Swing [1] | 30,435 |  | TR06 | LA-F | MS#03 | CON | SO | FRNT |
| CP09-TR6-FN-4090 |  | Install & Fix Aluminum Trash Bin | 5d | 2026-08-11 | 2026-08-17 | CP09-TR6-HD-4010, CP09-TR6-HD-4020, CP09-TR6-HD-3750, CP09-TR6-HD-3670, CP09-TR6-HD-3660, CP09-TR6-HD-3620, CP09-TR6-HD-3580, CP09-TR6-HD-3480, CP09-TR6-HD-3530, CP09-EN-TR6-A-2400, CP09-PR-FN-DY-1060 | -197.25d | 17.44d | Cost [896214]; Aluminum Trash Bin [14] | 896,214 |  | TR06 | LA-F | MS#03 | CON | SO | FRNT |
| CP09-TR6-FN-4100 |  | Install & Fix tensile Teflon Tent | 5d | 2026-08-11 | 2026-08-17 | CP09-TR6-HD-4010, CP09-TR6-HD-4020, CP09-TR6-HD-3750, CP09-TR6-HD-3670, CP09-TR6-HD-3660, CP09-TR6-HD-3620, CP09-TR6-HD-3580, CP09-TR6-HD-3480, CP09-TR6-HD-3530, CP09-EN-TR6-A-2400, CP09-PR-FN-DY-1070 | -197.25d | 17.44d | Cost [555836]; tensile Teflon Tent [2.5] | 555,836 |  | TR06 | LA-F | MS#03 | CON | SO | FRNT |
| CP09-TR6-FN-4110 |  | Lanscape Edging ( Rubber) | 5d | 2026-08-11 | 2026-08-17 | CP09-TR6-HD-4010, CP09-TR6-HD-4020, CP09-TR6-HD-3750, CP09-TR6-HD-3670, CP09-TR6-HD-3660, CP09-TR6-HD-3620, CP09-TR6-HD-3580, CP09-TR6-HD-3480, CP09-TR6-HD-3530, CP09-EN-TR6-A-2400, CP09-PR-FN-DY-1080 | -197.25d | 17.44d | Cost [65739.9]; Lanscape Edging ( Rubber) [236.5] | 65,740 |  | TR06 | LA-F | MS#03 | CON | SO | FRNT |

| ID | WBS | Activity | Duration | Start | Finish | Predecessors | Complete | Remaining | Planned start | Planned finish | Total float | Free float | Resources | Cost | Softscape | CP09_Terrace-7 | CP09-Trade | CP09_Milestone-7 | CP09_Discipline-7 | DES |
| --- | --- | --- | --- | --- | --- | --- | --- | --- | --- | --- | --- | --- | --- | --- | --- | --- | --- | --- | --- | --- |
|  | 10 | **Play Field Equipment** |  | 2026-02-09 | 2026-06-23 |  |  |  |  |  |  |  |  |  |  |  |  |  |  |  |
| CP09-TR6-PE-4130 |  | Kids playground equipment | 10d | 2026-02-09 A | 2026-06-17 | CP09-TR6-HD-3690, CP09-PR-PE-DY-1040, CP09-PR-PE-DY-1050, CP09-PR-PE-DY-1060, CP09-PR-PE-DY-1070, CP09-PR-PE-DY-1080, CP09-PR-PE-DY-1090, CP09-PR-PE-DY-1100 | 5% | 10d | 2026-04-07 | 2026-04-19 | -146d | 68.69d | Cost [1256494]; Kids equipment [6] | 1,256,494 | P.EQ | TR06 | PF-E | MS#03 | CON | SO |
| CP09-TR6-PE-4120 |  | Fitness areas equipment | 10d | 2026-06-13 | 2026-06-23 | CP09-TR6-HD-3690, CP09-EN-TR6-A-2440, CP09-PR-PE-DY-1000, CP09-PR-PE-DY-1010, CP09-PR-PE-DY-1020, CP09-PR-PE-DY-1030 |  |  |  |  | -151d | 63.69d | Cost [1442780]; Fitness equipment [5] | 1,442,780 | P.EQ | TR06 | PF-E | MS#03 | CON | SO |
|  | 5 | **Lighting for Softscape** |  | 2026-06-24 | 2026-08-25 |  |  |  |  |  |  |  |  |  |  |  |  |  |  |  |
|  | 1 | **Exterior Lighting** |  | 2026-06-24 | 2026-08-25 |  |  |  |  |  |  |  |  |  |  |  |  |  |  |  |
| CP09-TR6-SF-1570 |  | Install Landscape Lighting Pole | 14d | 2026-06-24 | 2026-07-09 | CP09-TR6-HD-3750, CP09-TR6-EL-1130, CP09-EN-TR6-A-2470, CP09-PR-EL-DY-1080 |  |  |  |  | -180d | 5.56d | Cost [97302.1]; Lighting Pole [3]; Electrican [25 h] | 97,302 | LHT | TR06 | LFS | MS#03 | CON | HD |
| CP09-TR6-SF-1580 |  | Install Bollard for Walkways | 10d | 2026-07-16 | 2026-07-28 | CP09-TR6-EL-1130, CP09-TR6-HD-3750, CP09-TR6-HD-3530, CP09-TR6-HD-3480, CP09-TR6-HD-3580, CP09-TR6-HD-3620, CP09-TR6-HD-3660, CP09-TR6-HD-3670, CP09-EN-TR6-A-2470, CP09-PR-EL-DY-1090, CP09-TR6-SF-1570 |  |  |  |  | -185.56d | 0d | Cost [1108355]; Bollard [260]; Electrican [25 h] | 1,108,355 | LHT | TR06 | LFS | MS#03 | CON | HD |
| CP09-TR6-SF-1600 |  | Install Inground Uplight For Palms | 7d | 2026-07-20 | 2026-07-27 | CP09-TR6-SF-1610 SS, CP09-TR6-SF-1580 SS, CP09-EN-TR6-A-2470, CP09-PR-EL-DY-1120 |  |  |  |  | -180d | 34.69d | Cost [393484]; Inground Uplight [86]; Electrican [25 h] | 393,484 | LHT | TR06 | LFS | MS#03 | CON | HD |
| CP09-TR6-SF-1610 |  | Install Projectors for Trees | 7d | 2026-07-20 | 2026-07-27 | CP09-TR6-SF-1500, CP09-TR6-SF-1510, CP09-TR6-SF-1520, CP09-TR6-SF-1530, CP09-TR6-SF-1540, CP09-TR6-SF-1550, CP09-TR6-SF-1560, CP09-EN-TR6-A-2470, CP09-PR-EL-DY-1130 |  |  |  |  | -180d | 0d | Cost [484837]; Projectors For Trees [120]; Electrican [25 h] | 484,837 | LHT | TR06 | LFS | MS#03 | CON | HD |
| CP09-TR6-SF-1590 |  | Install Diffused Wall Recessed Step | 10d | 2026-07-20 | 2026-08-01 | CP09-TR6-SF-1580 SS+3d, CP09-EN-TR6-A-2470, CP09-PR-EL-DY-1110 |  |  |  |  | -183.56d | 31.12d | Cost [194419]; Diffused Wall [47]; Electrican [25 h] | 194,419 | LHT | TR06 | LFS | MS#03 | CON | HD |
| CP09-TR6-SF-1620 |  | Install Surface Mountaed Down Light for Pool Cabans | 7d | 2026-08-17 | 2026-08-25 | CP09-TR6-FN-4050, CP09-EN-TR6-A-2470, CP09-PR-EL-DY-1100 |  |  |  |  | -204.25d | 10.44d | Cost [23033]; Surface Mountaed Light [4]; Electrican [25 h] | 23,033 | LHT | TR06 | LFS | MS#03 | CON | HD |
|  | 2 | **Outlet Lighting Fixtures** |  | 2026-07-28 | 2026-08-03 |  |  |  |  |  |  |  |  |  |  |  |  |  |  |  |
| CP09-TR6-SF-1630 |  | Install outlet lighting fixtures | 5d | 2026-07-28 | 2026-08-03 | CP09-TR6-SF-1580, CP09-EN-TR6-A-2470, CP09-PR-EL-DY-1150 |  |  |  |  | -185.56d | 29.12d | Cost [357578]; Outlet Lighting Fixtiure [519]; Electrican [25 h] | 357,578 | LHT | TR06 | LFS | MS#03 | CON | HD |
|  | 2 | **Softscape** |  | 2026-01-05 | 2026-07-19 |  |  |  |  |  |  |  |  |  |  |  |  |  |  |  |
|  | 1 | **Planting** |  | 2026-01-05 | 2026-07-19 |  |  |  |  |  |  |  |  |  |  |  |  |  |  |  |
| CP09-TR6-SF-1480 |  | Sweet sand for all plants | 10d | 2026-01-05 A | 2026-06-17 | CP09-TR6-EW-1110, CP09-TR6-HD-4000, CP09-TR6-HD-3750, CP09-EN-TR6-A-2460, CP09-PR-PN-DY-1000, CP09-TR4-SF-1160, CP09-TR4-SF-1170 | 55% | 10d | 2026-03-28 | 2026-04-08 | -179d | 1d | Cost [1296918]; Sweet sand [3702.2] | 1,296,918 | PLNT | TR06 | SS | MS#03 | CON | SO |
| CP09-TR6-SF-1490 |  | Organic Manure | 10d | 2026-01-05 A | 2026-06-17 | CP09-TR6-SF-1480 SS+5d, CP09-EN-TR6-A-2460, CP09-PR-PN-DY-1010 | 55% | 10d | 2026-04-02 | 2026-04-14 | -169d | 16d | Cost [841200]; Organic Manure [843.3] | 841,200 | PLNT | TR06 | SS | MS#03 | CON | SO |
| CP09-TR6-SF-1500 |  | Large Trees | 8d | 2026-07-07 | 2026-07-15 | CP09-TR6-IR-1370, CP09-TR6-IR-1380, CP09-TR6-IR-1390, CP09-TR6-IR-1400, CP09-TR6-IR-1410, CP09-TR6-IR-1420, CP09-TR6-IR-1430, CP09-TR6-SF-1490, CP09-TR6-SF-1480, CP09-PR-PN-DY-1020 |  |  |  |  | -180d | 0d | Cost [1933001]; Large Trees [706] | 1,933,001 | PLNT | TR06 | SS | MS#03 | CON | SO |
| CP09-TR6-SF-1510 |  | Shrubs | 7d | 2026-07-12 | 2026-07-19 | CP09-TR6-SF-1490, CP09-TR6-SF-1480, CP09-TR6-SF-1500 SS+3d, CP09-TR6-SF-1500 FF+3d, CP09-PR-PN-DY-1060 |  |  |  |  | -180d | 0d | Cost [758721]; Shrubs [5056] | 758,721 | PLNT | TR06 | SS | MS#03 | CON | SO |
| CP09-TR6-SF-1520 |  | Ground Covers | 7d | 2026-07-12 | 2026-07-19 | CP09-TR6-SF-1490, CP09-TR6-SF-1480, CP09-TR6-SF-1500 SS+3d, CP09-TR6-SF-1500 FF+3d, CP09-PR-PN-DY-1070 |  |  |  |  | -180d | 0d | Cost [840914]; Ground Covers [41638] | 840,914 | PLNT | TR06 | SS | MS#03 | CON | SO |
| CP09-TR6-SF-1530 |  | Succulents | 6d | 2026-07-13 | 2026-07-19 | CP09-TR6-SF-1490, CP09-TR6-SF-1480, CP09-TR6-SF-1500 SS+3d, CP09-TR6-SF-1500 FF+3d, CP09-PR-PN-DY-1080 |  |  |  |  | -180d | 0d | Cost [363438]; Succulents [1300] | 363,438 | PLNT | TR06 | SS | MS#03 | CON | SO |
| CP09-TR6-SF-1540 |  | Vines & Climbers | 6d | 2026-07-13 | 2026-07-19 | CP09-TR6-SF-1490, CP09-TR6-SF-1480, CP09-TR6-SF-1500 SS+3d, CP09-TR6-SF-1500 FF+3d, CP09-PR-PN-DY-1030 |  |  |  |  | -180d | 0d | Cost [26566.1]; Vines & Climbers [241] | 26,566 | PLNT | TR06 | SS | MS#03 | CON | SO |
| CP09-TR6-SF-1550 |  | Ornamental grass | 6d | 2026-07-13 | 2026-07-19 | CP09-TR6-SF-1490, CP09-TR6-SF-1480, CP09-TR6-SF-1500 SS+3d, CP09-TR6-SF-1500 FF+3d, CP09-PR-PN-DY-1050 |  |  |  |  | -180d | 0d | Cost [502971]; Ornamental grass [13594] | 502,971 | PLNT | TR06 | SS | MS#03 | CON | SO |
| CP09-TR6-SF-1560 |  | Lawn | 6d | 2026-07-13 | 2026-07-19 | CP09-TR6-SF-1490, CP09-TR6-SF-1480, CP09-TR6-SF-1500 SS+3d, CP09-TR6-SF-1500 FF+3d, CP09-PR-PN-DY-1040 |  |  |  |  | -180d | 0d | Cost [83925.4]; Lawn [1476] | 83,925 | PLNT | TR06 | SS | MS#03 | CON | SO |

| ID | WBS | Activity | Duration | Start | Finish | Predecessors | Complete | Remaining | Planned start | Planned finish | Total float | Free float | Resources | Cost | Actual cost | Swimming Pool | CP09_Terrace-7 | CP09-Trade | CP09_Milestone-7 | CP09_Discipline-7 | DES |
| --- | --- | --- | --- | --- | --- | --- | --- | --- | --- | --- | --- | --- | --- | --- | --- | --- | --- | --- | --- | --- | --- |
|  | 11 | **Terrace # 07** |  | 2024-07-16 | 2026-10-13 |  |  |  |  |  |  |  |  |  |  |  |  |  |  |  |  |
|  | 8 | **Swimming Pool-SP05 & Mechnical Room-MR-05** |  | 2024-09-13 | 2026-09-12 |  |  |  |  |  |  |  |  |  |  |  |  |  |  |  |  |
|  | 1 | **Structure Works for Swimming Pool** |  | 2024-09-13 | 2026-06-24 |  |  |  |  |  |  |  |  |  |  |  |  |  |  |  |  |
| CP09-TR7-SW-2450 |  | Excvation up to Formation Level | 7d | 2024-09-13 A | 2024-10-10 A | CP09-TR6-SW-2090, CP09-TR6-RW-1830, CP09-MS-1010, CP09-CLD-1000 | 100% |  | 2024-12-22 | 2024-12-29 |  |  | Cost [132462]; EXCAVATOR [800 h]; LOADER [960 h]; TRUCK [960 h]; Labor [500 h]; Excavation [1000 M3] | 132,462.38 | 132,462 | SP05 | TR07 | SP&MR | MS#04 | CON | HD |
| CP09-TR7-SW-2460 |  | Plain Concret for For Raft | 5d | 2024-11-06 A | 2024-11-19 A | CP09-TR6-SW-2140, CP09-TR7-SW-2450, CP09-EN-TR7-A-2490, CP09-PR-CV-DY-1000 SS | 100% |  | 2025-02-06 | 2025-02-12 |  |  | Cost [220771]; Mason [469 h]; Labor [48 h]; Plain Concrete [670 M3] | 220,770.63 | 220,771 | SP05 | TR07 | SP&MR | MS#04 | CON | HD |
| CP09-TR7-SW-2470 |  | Water Proofing with screed | 3d | 2024-11-20 A | 2024-11-23 A | CP09-TR7-SW-2460, CP09-EN-TR7-A-2510, CP09-PR-CV-DY-1010 SS | 100% |  | 2025-02-23 | 2025-02-26 |  |  | Cost [88308.2]; Mason [77 h]; Labor [48 h]; Waterproofing [670 M2] | 88,308.25 | 88,308 | SP05 | TR07 | SP&MR | MS#04 | CON | HD |
| CP09-TR7-SW-2480 |  | Reinforcement concrete for Raft | 10d | 2025-05-18 A | 2025-12-29 A | CP09-TR7-SW-2470, CP09-EN-TR7-A-2490, CP09-EN-TR7-A-2500, CP09-PR-CV-DY-1130 | 100% |  | 2025-02-26 | 2025-03-13 |  |  | Cost [1103853]; Mason [48 h]; Steel Fixer [574 h]; Shutter [48 h]; Labor [48 h]; Reinforced Concrete [164 M3] | 1,103,853.15 | 1,103,853 | SP05 | TR07 | SP&MR | MS#04 | CON | HD |
| CP09-TR7-SW-2490 |  | Water Proofing for Raft with screed | 3.75d | 2025-12-01 A | 2025-12-05 A | CP09-TR7-SW-2480, CP09-EN-TR7-A-2510, CP09-PR-CV-DY-1010 SS | 100% |  | 2025-12-17 | 2025-12-22 |  |  | Cost [220771]; Mason [564.2 h]; Labor [48 h]; Waterproofing [806 M2] | 220,770.63 | 220,771 | SP05 | TR07 | SP&MR | MS#04 | CON | HD |
| CP09-TR7-SW-2500 |  | Reinforcement Concrete for Walls | 21d | 2025-12-22 A | 2026-01-16 A | CP09-TR7-SW-2490 | 100% |  | 2025-12-14 | 2026-01-06 |  |  | Cost [441541]; Mason [96 h]; Steel Fixer [616 h]; Shutter [128 h]; Labor [48 h]; Reinforced Concrete [32 M3] | 441,541.26 | 441,541 | SP05 | TR07 | SP&MR | MS#04 | CON | HD |
| CP09-TR7-SW-2510 |  | External Waterproofing for Walls | 5d | 2026-06-07 | 2026-06-11 | CP09-TR7-SW-2500 |  |  |  |  | -172.19d | 0d | Cost [220771]; Mason [160 h]; Labor [48 h]; Waterproofing [640 M2] | 220,771 |  | SP05 | TR07 | SP&MR | MS#04 | CON | HD |
| CP09-TR7-SW-2520 |  | Protection Block Works | 5d | 2026-06-13 | 2026-06-17 | CP09-TR7-SW-2510, CP09-PR-CV-DY-1020 SS |  |  |  |  | -172.19d | 0d | Cost [88308.2]; Mason [80 h]; Labor [48 h]; Waterproofing; Blocks [130] | 88,308 |  | SP05 | TR07 | SP&MR | MS#04 | CON | HD |
| CP09-TR7-SW-2530 |  | Backfilling | 5.62d | 2026-06-18 | 2026-06-24 | CP09-TR7-SW-2520, CP09-TR7-SW-2680 FF |  |  |  |  | -172.19d | 0d | Cost [88308.2]; Labor [111 h]; Backfilling [185 M3] | 88,308 |  | SP05 | TR07 | SP&MR | MS#04 | CON | HD |
|  | 3 | **Finishing Works for Swimming Pool** |  | 2026-06-24 | 2026-07-26 |  |  |  |  |  |  |  |  |  |  |  |  |  |  |  |  |
| CP09-TR7-SW-2540 |  | Mosaics Tiles | 11.25d | 2026-06-24 | 2026-07-07 | CP09-TR7-SW-2520, CP09-TR7-SW-2530, CP09-EN-TR7-A-2520, CP09-PR-CV-DY-1030 |  |  |  |  | -172.19d | 0d | Cost [883083]; Mason [280 h]; Labor [48 h]; Mosaic [803] | 883,083 |  | SP05 | TR07 | SP&MR | MS#04 | CON | HD |
| CP09-TR7-SW-2550 |  | Granite for Pool Edg | 3.75d | 2026-07-07 | 2026-07-12 | CP09-TR7-SW-2540, CP09-EN-TR7-A-2530, CP09-PR-CV-DY-1040 |  |  |  |  | -172.19d | 0d | Cost [353233]; Mason [48 h]; Labor [48 h] | 353,233 |  | SP05 | TR07 | SP&MR | MS#04 | CON | HD |
| CP09-TR7-SW-2560 |  | Garnite for Drinage Grate | 3.75d | 2026-07-07 | 2026-07-12 | CP09-TR7-SW-2550 SS, CP09-EN-TR7-A-2530 |  |  |  |  | -168.44d | 3.75d | Cost [176617]; Mason [48 h]; Labor [48 h] | 176,617 |  | SP05 | TR07 | SP&MR | MS#04 | CON | HD |
| CP09-TR7-SW-2570 |  | Granite for Pool Coping | 3.75d | 2026-07-12 | 2026-07-16 | CP09-TR7-SW-2550, CP09-EN-TR7-A-2530 |  |  |  |  | -172.19d | 0d | Cost [220771]; Mason [160 h]; Labor [48 h]; Granit-Coping [60] | 220,771 |  | SP05 | TR07 | SP&MR | MS#04 | CON | HD |
| CP09-TR7-SW-2580 |  | Stanless Steel Ladders | 2.81d | 2026-07-16 | 2026-07-20 | CP09-TR7-SW-2540, CP09-TR7-SW-2550, CP09-TR7-SW-2560, CP09-TR7-SW-2570, CP09-EN-TR7-A-2550, CP09-EN-TR7-A-2540, CP09-PR-CV-DY-1050 |  |  |  |  | -172.19d | 0d | Cost [88308.2]; Labor [4 h]; Stanless Steel Ladders [2] | 88,308 |  | SP05 | TR07 | SP&MR | MS#04 | CON | HD |
| CP09-TR7-SW-2590 |  | Stanless Steel Handrial | 5d | 2026-07-20 | 2026-07-26 | CP09-TR7-SW-2580, CP09-EN-TR7-A-2550, CP09-PR-CV-DY-1060 |  |  |  |  | -172.19d | 60.75d | Cost [88308.2]; Labor [2 h]; Stanless Steel Handrial [1] | 88,308 |  | SP05 | TR07 | SP&MR | MS#04 | CON | HD |
|  | 4 | **Machine Room_MR05** |  | 2024-10-14 | 2026-09-12 |  |  |  |  |  |  |  |  |  |  |  |  |  |  |  |  |
| CP09-TR7-SW-2600 |  | Excvation up to Formation Level | 3.75d | 2024-10-14 A | 2024-10-26 A | CP09-TR7-SW-2450 SS | 100% |  | 2025-01-26 | 2025-01-29 |  |  | Cost [60173.5]; EXCAVATOR [400 h]; LOADER [480 h]; TRUCK [480 h]; Labor [250 h]; Excavation [500 M3] | 60,173.53 | 60,174 | SP05 | TR07 | SP&MR | MS#04 | CON | HD |
| CP09-TR7-SW-2610 |  | Plain Concret for For Raft | 2.81d | 2024-11-25 A | 2024-11-30 A | CP09-TR7-SW-2600, CP09-EN-TR7-A-2490 | 100% |  | 2025-03-08 | 2025-03-12 |  |  | Cost [30086.8]; Mason [77 h]; Labor [48 h]; Plain Concrete [110 M3] | 30,086.77 | 30,087 | SP05 | TR07 | SP&MR | MS#04 | CON | HD |
| CP09-TR7-SW-2620 |  | Water Proofing with screed | 1.88d | 2024-12-01 A | 2024-12-03 A | CP09-TR7-SW-2610, CP09-EN-TR7-A-2510, CP09-PR-CV-DY-1010 | 100% |  | 2025-03-12 | 2025-03-16 |  |  | Cost [30086.8]; Mason [77 h]; Labor [48 h]; Waterproofing [110 M2] | 30,086.77 | 30,087 | SP05 | TR07 | SP&MR | MS#04 | CON | HD |
| CP09-TR7-SW-2630 |  | Reinforcement concrete for Raft | 10d | 2024-12-04 A | 2025-04-15 A | CP09-TR7-SW-2620, CP09-EN-TR7-A-2490, CP09-EN-TR7-A-2500 | 100% |  | 2025-03-16 | 2025-04-06 |  |  | Cost [180521]; Mason [48 h]; Steel Fixer [95 h]; Shutter [48 h]; Labor [48 h]; Reinforced Concrete [27 M3] | 180,520.59 | 180,521 | SP05 | TR07 | SP&MR | MS#04 | CON | HD |
| CP09-TR7-SW-2640 |  | Water Proofing for Raft with screed | 3.75d | 2025-05-11 A | 2025-12-05 A | CP09-TR7-SW-2630 | 100% |  | 2025-07-17 | 2025-07-21 |  |  | Cost [75216.9]; Mason [161 h]; Labor [48 h]; Waterproofing [230 M2] | 75,216.91 | 75,217 | SP05 | TR07 | SP&MR | MS#04 | CON | HD |
| CP09-TR7-SW-2650 |  | Reinforcement Concrete for Walls & Columns | 15d | 2025-09-30 A | 2025-10-04 A | CP09-TR7-SW-2640 | 100% |  | 2025-10-14 | 2025-11-01 |  |  | Cost [330954]; Mason [105 h]; Steel Fixer [616 h]; Shutter [140 h]; Labor [48 h]; Reinforced Concrete [35 M3] | 330,954.42 | 330,954 | SP05 | TR07 | SP&MR | MS#04 | CON | HD |
| CP09-TR7-SW-2660 |  | Reinforcement Concrete for Slab | 21d | 2025-11-10 A | 2025-11-14 A | CP09-TR7-SW-2650 | 100% |  | 2025-11-09 | 2025-12-02 |  |  | Cost [150434]; Mason [60 h]; Steel Fixer [616 h]; Shutter [80 h]; Labor [48 h]; Reinforced Concrete [20 M3] | 150,433.83 | 150,434 | SP05 | TR07 | SP&MR | MS#04 | CON | HD |
| CP09-TR7-SW-2670 |  | External Waterproofing with Protection | 5d | 2026-04-06 A | 2026-06-11 | CP09-TR7-SW-2660 | 75% | 5d | 2026-03-31 | 2026-04-05 | -166.56d | 0d | Cost [270781]; Mason [119 h]; Labor [48 h]; Waterproofing [170 M2] | 270,781 |  | SP05 | TR07 | SP&MR | MS#04 | CON | HD |
| CP09-TR7-SW-2770 |  | Plaster for Internal Walls | 6d | 2026-05-04 A | 2026-05-08 A | CP09-TR7-SW-2670, CP09-EN-TR7-A-2850, CP09-PR-CV-DY-1070 | 100% |  | 2026-05-06 | 2026-05-12 |  |  | Cost [45130.2]; Mason [144 h]; Labor [48 h]; Plaster [180] | 45,130 |  | SP05 | TR07 | SP&MR | MS#04 | CON | HD |
| CP09-TR7-SW-2780 |  | Emulsion Paint for Internal Wall | 6d | 2026-05-04 A | 2026-05-08 A | CP09-TR7-SW-2770, CP09-TR7-SW-2720, CP09-PR-CV-DY-1080 | 100% |  | 2026-05-30 | 2026-06-06 |  |  | Cost [30086.8]; Paint [180]; Labor [48 h]; Painter [432 h]; Epoxy for flooring | 30,087 |  | SP05 | TR07 | SP&MR | MS#04 | CON | HD |
| CP09-TR7-SW-2800 |  | Metal Works | 5d | 2026-06-07 | 2026-06-11 | CP09-TR7-SW-2780 |  |  |  |  | -138d | 75.06d | Cost [120347]; Metals for MR | 120,347 |  | SP05 | TR07 | SP&MR | MS#04 | CON | HD |
| CP09-TR7-SW-2680 |  | Backfilling | 5d | 2026-06-13 | 2026-06-17 | CP09-TR7-SW-2670 |  |  |  |  | -166.56d | 5.62d | Cost [45130.2]; Labor [108 h]; Backfilling [180 M3] | 45,130 |  | SP05 | TR07 | SP&MR | MS#04 | CON | HD |
| CP09-TR7-SW-2690 |  | Drainage Gravel including Geotextile & Geocomposit | 3.75d | 2026-06-24 | 2026-06-28 | CP09-TR7-SW-2780, CP09-PR-CV-DY-1090, CP09-PR-CV-DY-1100 |  |  |  |  | -151.75d | 61.31d | Cost [60173.5]; Drainage Gravel | 60,174 |  | SP05 | TR07 | SP&MR | MS#04 | CON | HD |
| CP09-TR7-SW-2790 |  | Epoxy for flooring | 3d | 2026-09-08 | 2026-09-12 | CP09-TR7-SW-2780, CP09-TR7-SW-2800, CP09-TR7-SW-2690, CP09-TR7-SW-2710, CP09-TR7-SW-2750, CP09-TR7-SW-2760, CP09-PR-CV-DY-1110 |  |  |  |  | -213.06d | 19.88d | Cost [75216.9]; Mason [48 h]; Labor [48 h]; Epoxy for flooring [3.82] | 75,217 |  | SP05 | TR07 | SP&MR | MS#04 | CON | HD |

| ID | WBS | Activity | Duration | Start | Finish | Predecessors | Complete | Remaining | Planned start | Planned finish | Total float | Free float | Resources | Cost | Actual cost | Swimming Pool | CP09_Terrace-7 | CP09-Trade | CP09_Milestone-7 | CP09_Discipline-7 | DES |
| --- | --- | --- | --- | --- | --- | --- | --- | --- | --- | --- | --- | --- | --- | --- | --- | --- | --- | --- | --- | --- | --- |
|  | 2 | **MEP Works for Swimmimg Pool & Machine Room** |  | 2025-05-18 | 2026-09-08 |  |  |  |  |  |  |  |  |  |  |  |  |  |  |  |  |
|  | 1 | **Mechnical Works** |  | 2025-05-18 | 2026-07-28 |  |  |  |  |  |  |  |  |  |  |  |  |  |  |  |  |
| CP09-TR7-SW-2700 |  | UPVC pipes, fitting, valves, | 15d | 2025-05-18 A | 2026-06-23 | CP09-TR7-SW-2770, CP09-EN-TR7-A-2560, CP09-PR-ME-DY-1000, CP09-PR-ME-DY-1010 | 40% | 15d | 2025-10-11 | 2025-10-28 | -178d | 0d | Cost [710030]; Labor [48 h] | 710,029.67 | 284,012 | SP05 | TR07 | SP&MR | MS#04 | CON | HD |
| CP09-TR7-SW-2710 |  | Mechnical Equipment (Valves, Pumps, Filtters, Controllers ,Dosinng,& Ventilation exahust fan) | 30d | 2026-06-24 | 2026-07-28 | CP09-TR7-SW-2780, CP09-TR7-SW-2700, CP09-EN-TR7-A-2560, CP09-PR-ME-DY-1020, CP09-PR-ME-DY-1030, CP09-PR-ME-DY-1040, CP09-PR-ME-DY-1050, CP09-PR-ME-DY-1060, CP09-PR-ME-DY-1070, CP09-PR-ME-DY-1080 |  |  |  |  | -178d | 35.06d | Cost [2374248]; Labor [48 h] | 2,374,248 |  | SP05 | TR07 | SP&MR | MS#04 | CON | HD |
|  | 2 | **Electrical Works-SW** |  | 2026-06-24 | 2026-09-08 |  |  |  |  |  |  |  |  |  |  |  |  |  |  |  |  |
| CP09-TR7-SW-2720 |  | Conduits, Cable tray | 10d | 2026-06-24 | 2026-07-06 | CP09-TR7-SW-2770, CP09-EN-TR7-A-2570, CP09-PR-EL-DY-1000, CP09-PR-EL-DY-1010 |  |  |  |  | -213.06d | 0d | Cost [174464]; Labor [48 h] | 174,464 |  | SP05 | TR07 | SP&MR | MS#04 | CON | HD |
| CP09-TR7-SW-2730 |  | Panel boards | 10d | 2026-07-06 | 2026-07-18 | CP09-TR7-SW-2720, CP09-TR7-SW-2780, CP09-EN-TR7-A-2570, CP09-PR-EL-DY-1020 |  |  |  |  | -213.06d | 0d | Cost [624381]; Labor [48 h] | 624,381 |  | SP05 | TR07 | SP&MR | MS#04 | CON | HD |
| CP09-TR7-SW-2740 |  | Power Cables & Wires | 15d | 2026-07-18 | 2026-08-04 | CP09-TR7-SW-2730, CP09-TR7-SW-2720, CP09-EN-TR7-A-2570, CP09-PR-EL-DY-1030 |  |  |  |  | -213.06d | 0d | Cost [8133]; Labor [48 h] | 8,133 |  | SP05 | TR07 | SP&MR | MS#04 | CON | HD |
| CP09-TR7-SW-2760 |  | Earthing System | 15d | 2026-07-18 | 2026-08-04 | CP09-TR7-SW-2740 SS, CP09-PR-EL-DY-1040 |  |  |  |  | -183.06d | 30d | Cost [52517.6]; Labor [48 h] | 52,518 |  | SP05 | TR07 | SP&MR | MS#04 | CON | HD |
| CP09-TR7-SW-2750 |  | (Lighting Outlets , Switches, Fixture ) | 30d | 2026-08-04 | 2026-09-08 | CP09-TR7-SW-2720, CP09-TR7-SW-2740, CP09-TR7-SW-2730, CP09-PR-EL-DY-1050, CP09-PR-EL-DY-1140 |  |  |  |  | -213.06d | 0d | Cost [651051]; Labor [48 h] | 651,051 |  | SP05 | TR07 | SP&MR | MS#04 | CON | HD |
|  | 5 | **Swimming Pool-SP06 & Mechnical Room-MR-06** |  | 2024-07-16 | 2026-09-19 |  |  |  |  |  |  |  |  |  |  |  |  |  |  |  |  |
|  | 1 | **Structure Works for Swimming Pool** |  | 2024-07-16 | 2026-06-24 |  |  |  |  |  |  |  |  |  |  |  |  |  |  |  |  |
| CP09-TR7-SW-2810 |  | Excvation up to Formation Level | 7d | 2024-07-16 A | 2024-08-28 A | CP09-TR6-RW-1830, CP09-MS-1010, CP09-CLD-1000 | 100% |  | 2024-06-24 | 2024-07-02 |  |  | Cost [132461]; EXCAVATOR [800 h]; LOADER [960 h]; TRUCK [960 h]; Labor [500 h]; Excavation [1000 M3] | 132,460.56 | 132,461 | SP06 | TR07 | SP&MR | MS#04 | CON | HD |
| CP09-TR7-SW-2820 |  | Plain Concret for For Raft | 5d | 2024-09-04 A | 2024-11-03 A | CP09-TR7-SW-2660, CP09-TR7-SW-2810, CP09-EN-TR7-A-2490, CP09-PR-CV-DY-1000 SS | 100% |  | 2025-02-22 | 2025-02-27 |  |  | Cost [220768]; Mason [469 h]; Labor [48 h]; Plain Concrete [670 M3] | 220,767.6 | 220,768 | SP06 | TR07 | SP&MR | MS#04 | CON | HD |
| CP09-TR7-SW-2830 |  | Water Proofing with screed | 3d | 2024-11-04 A | 2024-11-07 A | CP09-TR7-SW-2820, CP09-EN-TR7-A-2510, CP09-PR-CV-DY-1010 SS | 100% |  | 2025-04-26 | 2025-04-29 |  |  | Cost [88307]; Mason [77 h]; Labor [48 h]; Waterproofing [670 M2] | 88,307.04 | 88,307 | SP06 | TR07 | SP&MR | MS#04 | CON | HD |
| CP09-TR7-SW-2840 |  | Reinforcement concrete for Raft | 10d | 2025-05-18 A | 2025-06-20 A | CP09-TR7-SW-2830, CP09-EN-TR7-A-2490, CP09-EN-TR7-A-2500, CP09-PR-CV-DY-1130 | 100% |  | 2025-04-29 | 2025-05-11 |  |  | Cost [1103838]; Mason [48 h]; Steel Fixer [574 h]; Shutter [48 h]; Labor [48 h]; Reinforced Concrete [164 M3] | 1,103,837.98 | 1,103,838 | SP06 | TR07 | SP&MR | MS#04 | CON | HD |
| CP09-TR7-SW-2860 |  | Reinforcement Concrete for Walls | 15d | 2025-06-24 A | 2025-10-04 A | CP09-TR7-SW-2500, CP09-TR7-SW-2850 | 100% |  | 2025-11-06 | 2025-11-24 |  |  | Cost [441535]; Mason [96 h]; Steel Fixer [616 h]; Shutter [128 h]; Labor [48 h]; Reinforced Concrete [32 M3] | 441,535.19 | 441,535 | SP06 | TR07 | SP&MR | MS#04 | CON | HD |
| CP09-TR7-SW-2850 |  | Water Proofing for Raft with screed | 3.75d | 2026-01-05 A | 2026-01-09 A | CP09-TR7-SW-2840, CP09-EN-TR7-A-2510, CP09-PR-CV-DY-1010 SS | 100% |  | 2025-12-31 | 2026-01-04 |  |  | Cost [220768]; Mason [564.2 h]; Labor [48 h]; Waterproofing [806 M2] | 220,767.6 | 220,768 | SP06 | TR07 | SP&MR | MS#04 | CON | HD |
| CP09-TR7-SW-2870 |  | External Waterproofing for Walls | 5d | 2026-06-07 | 2026-06-11 | CP09-TR7-SW-2860 |  |  |  |  | -172.19d | 0d | Cost [220768]; Mason [160 h]; Labor [48 h]; Waterproofing [640 M2] | 220,768 |  | SP06 | TR07 | SP&MR | MS#04 | CON | HD |
| CP09-TR7-SW-2880 |  | Protection Block Works | 5d | 2026-06-13 | 2026-06-17 | CP09-TR7-SW-2870, CP09-PR-CV-DY-1020 SS |  |  |  |  | -172.19d | 0d | Cost [88307]; Mason [80 h]; Labor [48 h]; Waterproofing; Blocks [130] | 88,307 |  | SP06 | TR07 | SP&MR | MS#04 | CON | HD |
| CP09-TR7-SW-2890 |  | Backfilling | 5.62d | 2026-06-18 | 2026-06-24 | CP09-TR7-SW-2880, CP09-TR7-SW-3040 FF |  |  |  |  | -172.19d | 0d | Cost [88307]; Labor [111 h]; Backfilling [185 M3] | 88,307 |  | SP06 | TR07 | SP&MR | MS#04 | CON | HD |
|  | 3 | **Finishing Works for Swimming Pool** |  | 2026-06-24 | 2026-07-26 |  |  |  |  |  |  |  |  |  |  |  |  |  |  |  |  |
| CP09-TR7-SW-2900 |  | Mosaics Tiles | 11.25d | 2026-06-24 | 2026-07-07 | CP09-TR7-SW-2880, CP09-TR7-SW-2890, CP09-EN-TR7-A-2520, CP09-PR-CV-DY-1030 |  |  |  |  | -172.19d | 0d | Cost [883070]; Mason [280 h]; Labor [48 h]; Mosaic [803] | 883,070 |  | SP06 | TR07 | SP&MR | MS#04 | CON | HD |
| CP09-TR7-SW-2910 |  | Granite for Pool Edg | 3.75d | 2026-07-07 | 2026-07-12 | CP09-TR7-SW-2900, CP09-EN-TR7-A-2530, CP09-PR-CV-DY-1040 |  |  |  |  | -172.19d | 0d | Cost [353228]; Mason [48 h]; Labor [48 h] | 353,228 |  | SP06 | TR07 | SP&MR | MS#04 | CON | HD |
| CP09-TR7-SW-2920 |  | Garnite for Drinage Grate | 3.75d | 2026-07-07 | 2026-07-12 | CP09-TR7-SW-2910 SS, CP09-EN-TR7-A-2530 |  |  |  |  | -168.44d | 3.75d | Cost [176614]; Mason [48 h]; Labor [48 h] | 176,614 |  | SP06 | TR07 | SP&MR | MS#04 | CON | HD |
| CP09-TR7-SW-2930 |  | Granite for Pool Coping | 3.75d | 2026-07-12 | 2026-07-16 | CP09-TR7-SW-2910, CP09-EN-TR7-A-2530 |  |  |  |  | -172.19d | 0d | Cost [220768]; Mason [160 h]; Labor [48 h]; Granit-Coping [60] | 220,768 |  | SP06 | TR07 | SP&MR | MS#04 | CON | HD |
| CP09-TR7-SW-2940 |  | Stanless Steel Ladders | 2.81d | 2026-07-16 | 2026-07-20 | CP09-TR7-SW-2900, CP09-TR7-SW-2910, CP09-TR7-SW-2920, CP09-TR7-SW-2930, CP09-EN-TR7-A-2550, CP09-EN-TR7-A-2540, CP09-PR-CV-DY-1050 |  |  |  |  | -172.19d | 0d | Cost [88307]; Labor [4 h]; Stanless Steel Ladders [2] | 88,307 |  | SP06 | TR07 | SP&MR | MS#04 | CON | HD |
| CP09-TR7-SW-2950 |  | Stanless Steel Handrial | 5d | 2026-07-20 | 2026-07-26 | CP09-TR7-SW-2940, CP09-EN-TR7-A-2550, CP09-PR-CV-DY-1060 |  |  |  |  | -172.19d | 60.75d | Cost [88307]; Labor [2 h]; Stanless Steel Handrial [1] | 88,307 |  | SP06 | TR07 | SP&MR | MS#04 | CON | HD |

| ID | WBS | Activity | Duration | Start | Finish | Predecessors | Complete | Remaining | Planned start | Planned finish | Total float | Free float | Resources | Cost | Actual cost | Swimming Pool | CP09_Terrace-7 | CP09-Trade | CP09_Milestone-7 | CP09_Discipline-7 | DES |
| --- | --- | --- | --- | --- | --- | --- | --- | --- | --- | --- | --- | --- | --- | --- | --- | --- | --- | --- | --- | --- | --- |
|  | 4 | **Machine Room_MR06** |  | 2024-07-16 | 2026-09-19 |  |  |  |  |  |  |  |  |  |  |  |  |  |  |  |  |
| CP09-TR7-SW-2960 |  | Excvation up to Formation Level | 3.75d | 2024-07-16 A | 2024-08-29 A | CP09-TR7-SW-2810 SS | 100% |  | 2024-06-24 | 2024-06-27 |  |  | Cost [60173.5]; EXCAVATOR [400 h]; LOADER [480 h]; TRUCK [480 h]; Labor [250 h]; Excavation [500 M3] | 60,173.53 | 60,174 | SP06 | TR07 | SP&MR | MS#04 | CON | HD |
| CP09-TR7-SW-2970 |  | Plain Concret for For Raft | 2.81d | 2024-12-10 A | 2024-12-14 A | CP09-TR7-SW-2960, CP09-EN-TR7-A-2490 | 100% |  | 2025-03-16 | 2025-03-20 |  |  | Cost [30086.8]; Mason [77 h]; Labor [48 h]; Plain Concrete [110 M3] | 30,086.77 | 30,087 | SP06 | TR07 | SP&MR | MS#04 | CON | HD |
| CP09-TR7-SW-2980 |  | Water Proofing with screed | 1.88d | 2024-12-15 A | 2024-12-21 A | CP09-TR7-SW-2970, CP09-EN-TR7-A-2510, CP09-PR-CV-DY-1010 | 100% |  | 2025-03-20 | 2025-03-23 |  |  | Cost [30086.8]; Mason [77 h]; Labor [48 h]; Waterproofing [110 M2] | 30,086.77 | 30,087 | SP06 | TR07 | SP&MR | MS#04 | CON | HD |
| CP09-TR7-SW-2990 |  | Reinforcement concrete for Raft | 10d | 2025-05-18 A | 2025-06-04 A | CP09-TR7-SW-2980, CP09-EN-TR7-A-2490, CP09-EN-TR7-A-2500 | 100% |  | 2025-04-05 | 2025-04-16 |  |  | Cost [180521]; Mason [48 h]; Steel Fixer [95 h]; Shutter [48 h]; Labor [48 h]; Reinforced Concrete [27 M3] | 180,520.59 | 180,521 | SP06 | TR07 | SP&MR | MS#04 | CON | HD |
| CP09-TR7-SW-3010 |  | Reinforcement Concrete for Walls & Columns | 15d | 2025-11-10 A | 2025-11-14 A | CP09-TR7-SW-3000 | 100% |  | 2025-11-12 | 2025-11-30 |  |  | Cost [330954]; Mason [105 h]; Steel Fixer [616 h]; Shutter [140 h]; Labor [48 h]; Reinforced Concrete [35 M3] | 330,954.42 | 330,954 | SP06 | TR07 | SP&MR | MS#04 | CON | HD |
| CP09-TR7-SW-3020 |  | Reinforcement Concrete for Slab | 21d | 2025-11-17 A | 2025-12-12 A | CP09-TR7-SW-3010 | 100% |  | 2025-11-23 | 2025-12-16 |  |  | Cost [150434]; Mason [60 h]; Steel Fixer [616 h]; Shutter [80 h]; Labor [48 h]; Reinforced Concrete [20 M3] | 150,433.83 | 150,434 | SP06 | TR07 | SP&MR | MS#04 | CON | HD |
| CP09-TR7-SW-3000 |  | Water Proofing for Raft with screed | 3.75d | 2025-12-08 A | 2025-12-12 A | CP09-TR7-SW-2990 | 100% |  | 2025-12-14 | 2025-12-17 |  |  | Cost [75216.9]; Mason [161 h]; Labor [48 h]; Waterproofing [230 M2] | 75,216.91 | 75,217 | SP06 | TR07 | SP&MR | MS#04 | CON | HD |
| CP09-TR7-SW-3030 |  | External Waterproofing with Protection | 5d | 2026-04-06 A | 2026-06-11 | CP09-TR7-SW-3020 | 75% | 5d | 2026-03-31 | 2026-04-05 | -166.56d | 0d | Cost [270781]; Mason [119 h]; Labor [48 h]; Waterproofing [170 M2] | 270,781 |  | SP06 | TR07 | SP&MR | MS#04 | CON | HD |
| CP09-TR7-SW-3130 |  | Plaster for Internal Walls | 6d | 2026-05-18 A | 2026-06-13 | CP09-TR7-SW-3030, CP09-EN-TR7-A-2850, CP09-PR-CV-DY-1070 | 75% | 6d | 2026-05-23 | 2026-05-28 | -210d | 9.06d | Cost [45130.2]; Mason [144 h]; Labor [48 h]; Plaster [180] | 45,130 |  | SP06 | TR07 | SP&MR | MS#04 | CON | HD |
| CP09-TR7-SW-3040 |  | Backfilling | 5d | 2026-06-13 | 2026-06-17 | CP09-TR7-SW-3030 |  |  |  |  | -166.56d | 5.62d | Cost [45130.2]; Labor [108 h]; Backfilling [180 M3] | 45,130 |  | SP06 | TR07 | SP&MR | MS#04 | CON | HD |
| CP09-TR7-SW-3140 |  | Emulsion Paint for Internal Wall | 6d | 2026-07-06 | 2026-07-13 | CP09-TR7-SW-3130, CP09-TR7-SW-3080, CP09-PR-CV-DY-1080 |  |  |  |  | -219.06d | 0d | Cost [30086.8]; Paint [180]; Labor [48 h]; Painter [432 h]; Epoxy for flooring | 30,087 |  | SP06 | TR07 | SP&MR | MS#04 | CON | HD |
| CP09-TR7-SW-3050 |  | Drainage Gravel including Geotextile & Geocomposit | 3.75d | 2026-07-13 | 2026-07-16 | CP09-TR7-SW-3140, CP09-PR-CV-DY-1090, CP09-PR-CV-DY-1100 |  |  |  |  | -167.81d | 51.25d | Cost [60173.5]; Drainage Gravel | 60,174 |  | SP06 | TR07 | SP&MR | MS#04 | CON | HD |
| CP09-TR7-SW-3160 |  | Metal Works | 5d | 2026-07-13 | 2026-07-19 | CP09-TR7-SW-3140 |  |  |  |  | -169.06d | 50d | Cost [120347]; Metals for MR | 120,347 |  | SP06 | TR07 | SP&MR | MS#04 | CON | HD |
| CP09-TR7-SW-3150 |  | Epoxy for flooring | 3d | 2026-09-15 | 2026-09-19 | CP09-TR7-SW-3140, CP09-TR7-SW-3160, CP09-TR7-SW-3050, CP09-TR7-SW-3070, CP09-TR7-SW-3110, CP09-TR7-SW-3120, CP09-PR-CV-DY-1110 |  |  |  |  | -219.06d | 13.88d | Cost [75216.9]; Mason [48 h]; Labor [48 h]; Epoxy for flooring [3.82] | 75,217 |  | SP06 | TR07 | SP&MR | MS#04 | CON | HD |
|  | 2 | **MEP Works for Swimmimg Pool & Machine Room** |  | 2025-05-18 | 2026-09-15 |  |  |  |  |  |  |  |  |  |  |  |  |  |  |  |  |
|  | 1 | **Mechnical Works** |  | 2025-05-18 | 2026-08-17 |  |  |  |  |  |  |  |  |  |  |  |  |  |  |  |  |
| CP09-TR7-SW-3060 |  | UPVC pipes, fitting, valves, | 15d | 2025-05-18 A | 2026-06-23 | CP09-TR7-SW-3130, CP09-EN-TR7-A-2560, CP09-PR-ME-DY-1000, CP09-PR-ME-DY-1010 | 40% | 15d | 2025-10-19 | 2025-11-05 | -178d | 16.06d | Cost [710030]; Labor [48 h] | 710,029.67 | 142,006 | SP06 | TR07 | SP&MR | MS#04 | CON | HD |
| CP09-TR7-SW-3070 |  | Mechnical Equipment (Valves, Pumps, Filtters, Controllers ,Dosinng,& Ventilation exahust fan) | 30d | 2026-07-13 | 2026-08-17 | CP09-TR7-SW-3140, CP09-TR7-SW-3060, CP09-EN-TR7-A-2560, CP09-PR-ME-DY-1020, CP09-PR-ME-DY-1030, CP09-PR-ME-DY-1040, CP09-PR-ME-DY-1050, CP09-PR-ME-DY-1060, CP09-PR-ME-DY-1070, CP09-PR-ME-DY-1080 |  |  |  |  | -194.06d | 25d | Cost [2371921]; Labor [48 h] | 2,371,921 |  | SP06 | TR07 | SP&MR | MS#04 | CON | HD |
|  | 2 | **Electrical Works-SW** |  | 2026-06-24 | 2026-09-15 |  |  |  |  |  |  |  |  |  |  |  |  |  |  |  |  |
| CP09-TR7-SW-3080 |  | Conduits, Cable tray | 10d | 2026-06-24 | 2026-07-06 | CP09-TR7-SW-3130, CP09-EN-TR7-A-2570, CP09-PR-EL-DY-1000, CP09-PR-EL-DY-1010 |  |  |  |  | -219.06d | 0d | Cost [174464]; Labor [48 h] | 174,464 |  | SP06 | TR07 | SP&MR | MS#04 | CON | HD |
| CP09-TR7-SW-3090 |  | Panel boards | 10d | 2026-07-13 | 2026-07-25 | CP09-TR7-SW-3080, CP09-TR7-SW-3140, CP09-EN-TR7-A-2570, CP09-PR-EL-DY-1020 |  |  |  |  | -219.06d | 0d | Cost [624381]; Labor [48 h] | 624,381 |  | SP06 | TR07 | SP&MR | MS#04 | CON | HD |
| CP09-TR7-SW-3100 |  | Power Cables & Wires | 15d | 2026-07-25 | 2026-08-11 | CP09-TR7-SW-3090, CP09-TR7-SW-3080, CP09-EN-TR7-A-2570, CP09-PR-EL-DY-1030 |  |  |  |  | -219.06d | 0d | Cost [8133]; Labor [48 h] | 8,133 |  | SP06 | TR07 | SP&MR | MS#04 | CON | HD |
| CP09-TR7-SW-3120 |  | Earthing System | 15d | 2026-07-25 | 2026-08-11 | CP09-TR7-SW-3100 SS, CP09-PR-EL-DY-1040 |  |  |  |  | -189.06d | 30d | Cost [52517.6]; Labor [48 h] | 52,518 |  | SP06 | TR07 | SP&MR | MS#04 | CON | HD |
| CP09-TR7-SW-3110 |  | (Lighting Outlets , Switches, Fixture ) | 30d | 2026-08-11 | 2026-09-15 | CP09-TR7-SW-3080, CP09-TR7-SW-3100, CP09-TR7-SW-3090, CP09-PR-EL-DY-1050, CP09-PR-EL-DY-1140 |  |  |  |  | -219.06d | 0d | Cost [572541]; Labor [48 h] | 572,541 |  | SP06 | TR07 | SP&MR | MS#04 | CON | HD |

| ID | WBS | Activity | Duration | Start | Finish | Predecessors | Complete | Remaining | Planned start | Planned finish | Total float | Free float | Resources | Cost | CP09_Terrace-7 | CP09-Trade | CP09_Milestone-7 | CP09_Discipline-7 | DES | Walls |
| --- | --- | --- | --- | --- | --- | --- | --- | --- | --- | --- | --- | --- | --- | --- | --- | --- | --- | --- | --- | --- |
|  | 6 | **Earth Work** |  | 2026-02-16 | 2026-04-10 |  |  |  |  |  |  |  |  |  |  |  |  |  |  |  |
|  | 1 | **Grading works** |  | 2026-02-16 | 2026-04-10 |  |  |  |  |  |  |  |  |  |  |  |  |  |  |  |
| CP09-TR7-EW-1120 |  | Excavation work to Reduce Level | 15d | 2026-02-16 A | 2026-04-10 A | CP09-TR7-SW-2600, CP09-EN-TR7-A-2580, CP09-CLD-1000, CP09-TR7-SW-2960 | 100% |  | 2026-01-25 | 2026-02-10 |  |  | Cost; EXCAVATOR; LOADER; TRUCK; Labor [48 h]; Excavation |  | TR07 | E-W | MS#04 | CON | HD |  |
| CP09-TR7-EW-1130 |  | Filling works to make up levels with Compacting | 15d | 2026-02-16 A | 2026-04-10 A | CP09-TR7-SW-2600, CP09-TR7-EW-1120 SS+4.69d, CP09-EN-TR7-A-2580, CP09-TR7-SW-2960 | 100% |  | 2026-01-29 | 2026-02-16 |  |  | Cost; Labor [48 h]; Filling |  | TR07 | E-W | MS#04 | CON | HD |  |
|  | 2 | **Planting** |  | 2026-02-22 | 2026-04-10 |  |  |  |  |  |  |  |  |  |  |  |  |  |  |  |
| CP09-TR7-EW-1140 |  | Excavation works for Planting Beds | 15d | 2026-02-22 A | 2026-04-10 A | CP09-TR7-EW-1120 SS, CP09-TR7-EW-1130 SS, CP09-EN-TR7-A-2580 | 100% |  | 2026-01-29 | 2026-02-16 |  |  | Cost [915350]; EXCAVATOR [4544 h]; LOADER [5456 h]; TRUCK [5456 h]; Labor [280 h]; Excavation [5681.88 M3] | 915,350 | TR07 | E-W | MS#04 | CON | HD |  |
|  | 9 | **Retaining & Cheek Walls** |  | 2026-05-04 | 2026-07-28 |  |  |  |  |  |  |  |  |  |  |  |  |  |  |  |
|  | 1 | **Soild Block Work Cheek Walls** |  | 2026-05-04 | 2026-07-28 |  |  |  |  |  |  |  |  |  |  |  |  |  |  |  |
| CP09-TR7-RW-1890 |  | Plaing Concrete with HPDE | 4.69d | 2026-05-04 A | 2026-06-14 | CP09-TR7-RW-1940 SS+2.81d, CP09-TR7-RW-1940 FF+2.81d, CP09-EN-TR7-A-2590 | 50% | 4.69d | 2026-05-03 | 2026-05-09 | -249.44d | 0d | Cost [25885]; Mason [27 h]; Labor [48 h]; Plain Concrete [38.81 M3]; HDPE | 25,885 | TR07 | RE&CW | MS#04 | CON | HD | CHW |
| CP09-TR7-RW-1900 |  | Reinforced Concrete for Footing | 6.56d | 2026-05-04 A | 2026-06-17 | CP09-TR7-RW-1890 SS+2.81d, CP09-TR7-RW-1890 FF+2.81d, CP09-EN-TR7-A-2600, CP09-EN-TR7-A-2590 | 50% | 6.56d | 2026-05-06 | 2026-05-14 | -249.44d | 0d | Cost [194137]; Mason [48 h]; Steel Fixer [45 h]; Shutter [48 h]; Labor [48 h]; Reinforced Concrete [12.94 M3] | 194,137 | TR07 | RE&CW | MS#04 | CON | HD | CHW |
| CP09-TR7-RW-1910 |  | Reinforced Concrete for Tie beam | 4.69d | 2026-05-04 A | 2026-06-21 | CP09-TR7-RW-1900 SS+2.81d, CP09-TR7-RW-1900 FF+2.81d | 50% | 4.69d | 2026-05-12 | 2026-05-17 | -249.44d | 0d | Cost [32356.2]; Mason [48 h]; Steel Fixer [48 h]; Shutter [48 h]; Labor [48 h]; Reinforced Concrete | 32,356 | TR07 | RE&CW | MS#04 | CON | HD | CHW |
| CP09-TR7-RW-1920 |  | Reinforced Concrete for Column | 5.62d | 2026-05-04 A | 2026-06-23 | CP09-TR7-RW-1910 SS+2.81d, CP09-TR7-RW-1910 FF+2.81d | 50% | 5.62d | 2026-05-16 | 2026-05-21 | -249.44d | 0d | Cost [32356.2]; Mason [48 h]; Steel Fixer [48 h]; Shutter [48 h]; Labor [48 h]; Reinforced Concrete | 32,356 | TR07 | RE&CW | MS#04 | CON | HD | CHW |
| CP09-TR7-RW-1930 |  | Soild Block Work | 5.62d | 2026-05-04 A | 2026-06-30 | CP09-TR7-RW-1920 SS+5.62d, CP09-TR7-RW-1920 FF+5.62d, CP09-EN-TR7-A-2620, CP09-PR-CV-DY-1020 | 50% | 5.62d | 2026-05-21 | 2026-05-28 | -249.44d | 0d | Cost [64712.5]; Mason [38 h]; Labor [48 h]; Blocks [10.35] | 64,712 | TR07 | RE&CW | MS#04 | CON | HD | CHW |
| CP09-TR7-RW-1940 |  | Excavation | 3.75d | 2026-05-04 A | 2026-06-10 | CP09-TR7-EW-1120, CP09-TR7-EW-1130 | 50% | 3.75d | 2026-04-30 | 2026-05-04 | -249.44d | 0d | Cost [19413.7]; EXCAVATOR [48 h]; LOADER [56 h]; TRUCK [56 h]; Labor [31 h]; Excavation [60.55 M3] | 19,414 | TR07 | RE&CW | MS#04 | CON | HD | CHW |
| CP09-TR7-RW-1950 |  | Reinforced Concrete for Beam | 7.5d | 2026-05-04 A | 2026-07-05 | CP09-TR7-RW-1930 SS+3.75d, CP09-TR7-RW-1930 FF+3.75d | 50% | 7.5d | 2026-05-26 | 2026-06-03 | -249.44d | 0d | Cost [64712.5]; Mason [12 h]; Steel Fixer [207 h]; Shutter [17 h]; Labor [48 h]; Reinforced Concrete [4.14 M3] | 64,712 | TR07 | RE&CW | MS#04 | CON | HD | CHW |
| CP09-TR7-RW-1960 |  | Waterproofing & Protection | 6.56d | 2026-05-04 A | 2026-07-13 | CP09-TR7-RW-1950 SS+7.5d, CP09-TR7-RW-1950 FF+7.5d, CP09-EN-TR7-A-2610 | 50% | 6.56d | 2026-06-04 | 2026-06-13 | -249.44d | 0d | Cost [25885]; Mason [10.08 h]; Labor [48 h]; Waterproofing [14.49 M2] | 25,885 | TR07 | RE&CW | MS#04 | CON | HD | CHW |
| CP09-TR7-RW-1970 |  | Backfilling | 5.62d | 2026-05-04 A | 2026-07-16 | CP09-TR7-RW-1960 SS+2.81d, CP09-TR7-RW-1960 FF+2.81d | 50% | 5.62d | 2026-06-09 | 2026-06-16 | -249.44d | 0d | Cost [25885]; Labor [25 h]; Backfilling [41.14 M3] | 25,885 | TR07 | RE&CW | MS#04 | CON | HD | CHW |
| CP09-TR7-RW-1980 |  | Marble Cladding | 6.56d | 2026-07-15 | 2026-07-23 | CP09-TR7-RW-1970 SS+5.62d, CP09-TR7-RW-1970 FF+5.62d, CP09-EN-TR7-A-2630, CP09-PR-CV-DY-1120 |  |  |  |  | -236d | 0d | Cost [129425]; Mason [88 h]; Labor [48 h]; Marble [31.05] | 129,425 | TR07 | RE&CW | MS#04 | CON | HD | CHW |
| CP09-TR7-RW-1990 |  | Marble Copping | 6.56d | 2026-07-21 | 2026-07-28 | CP09-TR7-RW-1980 SS+4.69d, CP09-TR7-RW-1980 FF+4.69d, CP09-EN-TR7-A-2630, CP09-PR-CV-DY-1120 |  |  |  |  | -236d | 0d | Cost [32356.2]; Mason [160 h]; Labor [48 h]; Marble Coping [25.88] | 32,356 | TR07 | RE&CW | MS#04 | CON | HD | CHW |
|  | 2 | **Solid Block Retaining Walls** |  | 2026-05-04 | 2026-07-28 |  |  |  |  |  |  |  |  |  |  |  |  |  |  |  |
| CP09-TR7-RW-2000 |  | Plaing Concrete with HPDE | 5d | 2026-05-04 A | 2026-06-14 | CP09-TR7-RW-2050 SS+2.81d, CP09-TR7-RW-2050 FF+2.81d, CP09-EN-TR7-A-2590 | 50% | 5d | 2026-05-18 | 2026-05-23 | -249.44d | 0d | Cost [7990.96]; Mason [27 h]; Labor [48 h]; Plain Concrete [38.81 M3]; HDPE | 7,991 | TR07 | RE&CW | MS#04 | CON | HD | RW |
| CP09-TR7-RW-2010 |  | Reinforced Concrete for Footing | 6.56d | 2026-05-04 A | 2026-06-17 | CP09-TR7-RW-2000 SS+2.81d, CP09-TR7-RW-2000 FF+2.81d, CP09-EN-TR7-A-2590, CP09-EN-TR7-A-2600 | 50% | 6.56d | 2026-05-20 | 2026-05-28 | -249.44d | 0d | Cost [59932.2]; Mason [48 h]; Steel Fixer [45 h]; Shutter [48 h]; Labor [48 h]; Reinforced Concrete [12.94 M3] | 59,932 | TR07 | RE&CW | MS#04 | CON | HD | RW |
| CP09-TR7-RW-2020 |  | Reinforced Concrete for Tie beam | 5d | 2026-05-04 A | 2026-06-21 | CP09-TR7-RW-2010 SS+2.81d, CP09-TR7-RW-2010 FF+2.81d | 50% | 5d | 2026-05-26 | 2026-06-01 | -249.44d | 0d | Cost [9988.7]; Mason [48 h]; Steel Fixer [48 h]; Shutter [48 h]; Labor [48 h]; Reinforced Concrete | 9,989 | TR07 | RE&CW | MS#04 | CON | HD | RW |
| CP09-TR7-RW-2030 |  | Reinforced Concrete for Column | 5.62d | 2026-05-04 A | 2026-06-23 | CP09-TR7-RW-2020 SS+2.81d, CP09-TR7-RW-2020 FF+2.81d | 50% | 5.62d | 2026-05-30 | 2026-06-04 | -249.44d | 0d | Cost [9988.7]; Mason [48 h]; Steel Fixer [48 h]; Shutter [48 h]; Labor [48 h]; Reinforced Concrete | 9,989 | TR07 | RE&CW | MS#04 | CON | HD | RW |
| CP09-TR7-RW-2040 |  | Soild Block Work | 5.62d | 2026-05-04 A | 2026-06-30 | CP09-TR7-RW-2030 SS+5.62d, CP09-TR7-RW-2030 FF+5.62d, CP09-EN-TR7-A-2620 | 50% | 5.62d | 2026-06-04 | 2026-06-11 | -249.44d | 0d | Cost [19977.4]; Mason [38 h]; Labor [48 h]; Blocks [10.35] | 19,977 | TR07 | RE&CW | MS#04 | CON | HD | RW |
| CP09-TR7-RW-2050 |  | Excavation | 3.75d | 2026-05-04 A | 2026-06-10 | CP09-TR7-RW-1900, CP09-TR7-EW-1120, CP09-TR7-EW-1130 | 50% | 3.75d | 2026-05-14 | 2026-05-18 | -249.44d | 0d | Cost [5993.22]; EXCAVATOR [48 h]; LOADER [56 h]; TRUCK [56 h]; Labor [31 h]; Excavation [60.55 M3] | 5,993 | TR07 | RE&CW | MS#04 | CON | HD | RW |
| CP09-TR7-RW-2060 |  | Reinforced Concrete for Beam | 7.5d | 2026-05-04 A | 2026-07-05 | CP09-TR7-RW-2040 SS+3.75d, CP09-TR7-RW-2040 FF+3.75d | 50% | 7.5d | 2026-06-09 | 2026-06-17 | -249.44d | 0d | Cost [19977.4]; Mason [12 h]; Steel Fixer [207 h]; Shutter [17 h]; Labor [48 h]; Reinforced Concrete [4.14 M3] | 19,977 | TR07 | RE&CW | MS#04 | CON | HD | RW |
| CP09-TR7-RW-2070 |  | Waterproofing & Protection | 6.56d | 2026-05-04 A | 2026-07-13 | CP09-TR7-RW-2060 SS+7.5d, CP09-TR7-RW-2060 FF+7.5d | 50% | 6.56d | 2026-06-18 | 2026-06-27 | -249.44d | 0d | Cost [7990.96]; Mason [10.08 h]; Labor [48 h]; Waterproofing [14.49 M2] | 7,991 | TR07 | RE&CW | MS#04 | CON | HD | RW |
| CP09-TR7-RW-2080 |  | Backfilling | 5.62d | 2026-05-04 A | 2026-07-16 | CP09-TR7-RW-2070 SS+2.81d, CP09-TR7-RW-2070 FF+2.81d | 50% | 5.62d | 2026-06-23 | 2026-06-30 | -249.44d | 0d | Cost [7990.96]; Labor [25 h]; Backfilling [41.14 M3] | 7,991 | TR07 | RE&CW | MS#04 | CON | HD | RW |
| CP09-TR7-RW-2090 |  | Marble Cladding | 6.56d | 2026-07-14 | 2026-07-22 | CP09-TR7-RW-2080 SS+4.69d, CP09-TR7-RW-2080 FF+4.69d, CP09-EN-TR7-A-2630, CP09-PR-CV-DY-1120 |  |  |  |  | -235.06d | 0d | Cost [39954.8]; Mason [88 h]; Labor [48 h]; Marble [31.05] | 39,955 | TR07 | RE&CW | MS#04 | CON | HD | RW |
| CP09-TR7-RW-2100 |  | Marble Copping | 6.56d | 2026-07-20 | 2026-07-28 | CP09-TR7-RW-2090 SS+4.69d, CP09-TR7-RW-2090 FF+4.69d, CP09-EN-TR7-A-2630, CP09-PR-CV-DY-1120 |  |  |  |  | -235.06d | 0.94d | Cost [9988.7]; Mason [160 h]; Labor [48 h]; Marble Coping [25.88] | 9,989 | TR07 | RE&CW | MS#04 | CON | HD | RW |

| ID | WBS | Activity | Duration | Start | Finish | Predecessors | Complete | Remaining | Planned start | Planned finish | Total float | Free float | Resources | Cost | Actual cost | Networks | CP09_Terrace-7 | CP09-Trade | CP09_Milestone-7 | CP09_Discipline-7 | DES | Hardscape |
| --- | --- | --- | --- | --- | --- | --- | --- | --- | --- | --- | --- | --- | --- | --- | --- | --- | --- | --- | --- | --- | --- | --- |
|  | 1 | **Irrigation Works** |  | 2026-02-22 | 2026-07-04 |  |  |  |  |  |  |  |  |  |  |  |  |  |  |  |  |  |
|  | 1 | **Sub-Main & Lateral** |  | 2026-02-22 | 2026-06-17 |  |  |  |  |  |  |  |  |  |  |  |  |  |  |  |  |  |
| CP09-TR7-IR-1440 |  | Excavation for Sub-main & Lateral Pieps | 4d | 2026-02-22 A | 2026-06-10 | CP09-EN-TR7-A-2820, CP09-TR7-HD-4810, CP09-TR4-IR-1140 | 72% | 4d | 2026-03-12 | 2026-03-17 | -227.19d | 0d | Cost [484535]; EXCAVATOR [4784 h]; LOADER [5744 h]; TRUCK [5744 h]; Excavation [7977.8 M3] | 484,535.36 | 145,360.5 | IRR | TR07 | IRR-W | MS#04 | CON | SO |  |
| CP09-TR7-IR-1450 |  | Sub-main & Lateral Pieps laying out and installation | 5d | 2026-02-22 A | 2026-06-13 | CP09-TR7-IR-1440 SS+2d, CP09-TR7-IR-1440 FF+2d, CP09-PR-IR-DY-1000 | 72% | 5d | 2026-03-15 | 2026-03-21 | -227.19d | 0d | Cost [872164]; PipeFitter [280 h]; Labor [48 h]; UPVC Pipes [7977.8 M] | 872,163.65 | 261,649.2 | IRR | TR07 | IRR-W | MS#04 | CON | SO |  |
| CP09-TR7-IR-1460 |  | Sub-main & Lateral Pieps Testing | 3d | 2026-02-22 A | 2026-06-15 | CP09-TR7-IR-1450 SS+2d, CP09-TR7-IR-1450 FF+2d | 72% | 3d | 2026-03-19 | 2026-03-23 | -227.19d | 0d | Cost [96907.1] | 96,907.07 | 29,072.1 | IRR | TR07 | IRR-W | MS#04 | CON | SO |  |
| CP09-TR7-IR-1470 |  | Backfilling forSub-main & Lateral Pieps | 4d | 2026-02-22 A | 2026-06-17 | CP09-TR7-IR-1460 SS+2d, CP09-TR7-IR-1460 FF+2d | 72% | 4d | 2026-03-22 | 2026-03-26 | -227.19d | 0d | Cost [484535]; Labor [48 h]; Backfilling [7977.8 M3] | 484,535.36 | 145,360.5 | IRR | TR07 | IRR-W | MS#04 | CON | SO |  |
|  | 2 | **Fittings & Accessories** |  | 2026-06-18 | 2026-07-04 |  |  |  |  |  |  |  |  |  |  |  |  |  |  |  |  |  |
| CP09-TR7-IR-1480 |  | Installation of Dripline | 12d | 2026-06-18 | 2026-07-01 | CP09-TR7-SF-1640, CP09-TR7-SF-1650 SS+2d, CP09-TR7-IR-1460, CP09-PR-IR-DY-1010 |  |  |  |  | -186.38d | 0d | Cost [789420]; Labor [280 h]; Dripline [29500 Nos_] | 789,420 |  | IRR | TR07 | IRR-W | MS#04 | CON | SO |  |
| CP09-TR7-IR-1490 |  | Installation of Sprinklers | 12d | 2026-06-18 | 2026-07-01 | CP09-TR7-IR-1480 SS, CP09-PR-IR-DY-1040 |  |  |  |  | -186.38d | 0d | Cost [57038.3]; Labor [48 h]; Sprinkle [84.1 Nos_] | 57,038 |  | IRR | TR07 | IRR-W | MS#04 | CON | SO |  |
| CP09-TR7-IR-1500 |  | Installation Valves & Rings | 7d | 2026-06-18 | 2026-06-25 | CP09-TR7-IR-1490 SS, CP09-PR-IR-DY-1030, CP09-PR-IR-DY-1020 |  |  |  |  | -186.38d | 0d | Cost [208328]; Valves [715.1]; Labor [48 h] | 208,328 |  | IRR | TR07 | IRR-W | MS#04 | CON | SO |  |
| CP09-TR7-IR-1510 |  | Installation of Electrical solenoid valve | 7d | 2026-06-18 | 2026-06-25 | CP09-TR7-IR-1500 SS, CP09-PR-IR-DY-1050 |  |  |  |  | -179.38d | 7d | Cost [439801]; Solenoid valve [22.4]; Labor [48 h] | 439,801 |  | IRR | TR07 | IRR-W | MS#04 | CON | SO |  |
| CP09-TR7-IR-1520 |  | Installation of Controller (decoder system plastic pedestal) | 7d | 2026-06-27 | 2026-07-04 | CP09-TR7-IR-1500, CP09-TR7-IR-1510 SS, CP09-PR-IR-DY-1060 |  |  |  |  | -186.38d | 0d | Cost [262719]; Controller [1]; Labor [48 h] | 262,719 |  | IRR | TR07 | IRR-W | MS#04 | CON | SO |  |
| CP09-TR7-IR-1530 |  | Installation of Controller decoder cables | 7d | 2026-06-27 | 2026-07-04 | CP09-TR7-IR-1520 SS, CP09-PR-IR-DY-1070 |  |  |  |  | -186.38d | 0d | Cost [198024]; Controller Cable [1850]; Labor [48 h] | 198,024 |  | IRR | TR07 | IRR-W | MS#04 | CON | SO |  |
| CP09-TR7-IR-1540 |  | Installation of Decoder one station | 5d | 2026-06-27 | 2026-07-01 | CP09-TR7-IR-1530 SS, CP09-PR-IR-DY-1080 |  |  |  |  | -184.38d | 2d | Cost [212404]; Decoder station [28.4]; Labor [48 h] | 212,404 |  | IRR | TR07 | IRR-W | MS#04 | CON | SO |  |
|  | 4 | **Electrical Works** |  | 2026-04-06 | 2026-07-28 |  |  |  |  |  |  |  |  |  |  |  |  |  |  |  |  |  |
|  | 1 | **Power Cable & Pillars** |  | 2026-04-06 | 2026-07-28 |  |  |  |  |  |  |  |  |  |  |  |  |  |  |  |  |  |
| CP09-TR7-EL-1160 |  | Excavation | 5d | 2026-04-06 A | 2026-06-11 | CP09-TR7-EW-1120, CP09-TR7-EW-1130, CP09-TR7-IR-1470, CP09-EN-TR7-A-2780, CP09-TR4-EL-1060 | 10% | 5d | 2026-04-18 | 2026-04-22 | -226.19d | 0d | Cost [374565]; EXCAVATOR [3344 h]; LOADER [4016 h]; TRUCK [4016 h]; Excavation [6974.38 M3] | 374,565 |  | ELEC | TR07 | EL-W | MS#04 | CON | HD |  |
| CP09-TR7-EL-1170 |  | Installation of Power Cables | 4d | 2026-04-06 A | 2026-06-14 | CP09-TR7-EL-1160 SS+2d, CP09-TR7-EL-1160 FF+2d, CP09-EN-TR7-A-2780, CP09-EN-TR7-A-2790, CP09-PR-EL-DY-1060 | 10% | 4d | 2026-04-21 | 2026-04-25 | -226.19d | 0d | Cost [898956]; Electrical Cable [6974.38]; Electrican [280 h]; Labor [48 h] | 898,956 |  | ELEC | TR07 | EL-W | MS#04 | CON | HD |  |
| CP09-TR7-EL-1180 |  | Backfilling for Power Cables | 4d | 2026-04-06 A | 2026-06-16 | CP09-TR7-EL-1170 SS+2d, CP09-TR7-EL-1170 FF+2d | 10% | 4d | 2026-04-23 | 2026-04-27 | -226.19d | 1d | Cost [224739]; Backfilling [6974.38 M3] | 224,739 |  | ELEC | TR07 | EL-W | MS#04 | CON | HD |  |
| CP09-TR7-EL-1190 |  | Installation of Connecting Pillars | 15d | 2026-07-12 | 2026-07-28 | CP09-TR7-HD-4560, CP09-PR-EL-DY-1070 |  |  |  |  | -181d | 55.12d | Cost [428687]; Pillars [3]; Electrican [48 h]; Labor [48 h] | 428,687 |  | ELEC | TR07 | EL-W | MS#04 | CON | HD |  |
|  | 3 | **Hardscape** |  | 2026-02-09 | 2026-09-15 |  |  |  |  |  |  |  |  |  |  |  |  |  |  |  |  |  |
|  | 6 | **Concrete Curb** |  | 2026-05-11 | 2026-06-29 |  |  |  |  |  |  |  |  |  |  |  |  |  |  |  |  |  |
| CP09-TR7-HD-4510 |  | Excavation | 5d | 2026-05-11 A | 2026-06-11 | CP09-TR7-EW-1120, CP09-TR7-EW-1130, CP09-TR7-EW-1140, CP09-TR4-HD-2380 | 50% | 5d | 2026-05-20 | 2026-05-25 | -113d | 136.06d | Cost [158617]; EXCAVATOR [312 h]; LOADER [368 h]; TRUCK [368 h]; Excavation [384.51 M3] | 158,617 |  |  | TR07 | HS | MS#04 | CON | HD | CURB |
| CP09-TR7-HD-4520 |  | Plains Concrete with HDPE waterproofing | 5d | 2026-05-11 A | 2026-06-11 | CP09-TR7-HD-4510, CP09-EN-TR7-A-2710 | 50% | 5d | 2026-05-26 | 2026-05-31 | -206.44d | 3.12d | Cost [475850]; Plain Concrete [1121.49 M3]; HDPE | 475,850 |  |  | TR07 | HS | MS#04 | CON | HD | CURB |
| CP09-TR7-HD-4790 |  | Under Paving Reinforced Concrete Curb | 10d | 2026-05-11 A | 2026-06-17 | CP09-TR7-HD-4520 SS+1.88d, CP09-TR7-HD-4520 FF+1.88d | 50% | 10d | 2026-05-27 | 2026-06-08 | -209.56d | 0d | Cost [951701]; Mason [385 h]; Steel Fixer [269 h]; Shutter [513 h]; Labor [48 h]; Reinforced Concrete [128.17 M3] | 951,701 |  |  | TR07 | HS | MS#04 | CON | HD | CURB |
| CP09-TR7-HD-4810 |  | Instal Flush Curb | 7d | 2026-06-22 | 2026-06-29 | CP09-EN-TR7-A-2710, CP09-PR-HD-DY-1080, CP09-TR7-HD-4790 FS+3d, CP09-TR7-HD-4790 FF+3d |  |  |  |  | -209.56d | 4d | Cost [116047]; Mason [160 h]; Labor [48 h]; Flush Curb [360.25] | 116,047 |  |  | TR07 | HS | MS#04 | CON | HD | CURB |

| ID | WBS | Activity | Duration | Start | Finish | Predecessors | Complete | Remaining | Planned start | Planned finish | Total float | Free float | Resources | Cost | Hardscape | CP09_Terrace-7 | CP09-Trade | CP09_Milestone-7 | CP09_Discipline-7 | DES |
| --- | --- | --- | --- | --- | --- | --- | --- | --- | --- | --- | --- | --- | --- | --- | --- | --- | --- | --- | --- | --- |
|  | 1 | **Side wake & Plazes** |  | 2026-02-22 | 2026-07-27 |  |  |  |  |  |  |  |  |  |  |  |  |  |  |  |
|  | 8 | **Interlocking Paving** |  | 2026-06-18 | 2026-07-08 |  |  |  |  |  |  |  |  |  |  |  |  |  |  |  |
| CP09-TR7-HD-4530 |  | Crush Stone for Interlock Types IL-(01,02,06,07) | 6.56d | 2026-06-18 | 2026-06-25 | CP09-EN-TR7-A-2720, CP09-TR7-EW-1120, CP09-TR7-EW-1130, CP09-TR7-IR-1470, CP09-TR7-EL-1180, CP09-PR-HD-DY-1090, CP09-TR4-HD-2130 |  |  |  |  | -227.19d | 0d | Cost [410521]; Mason [280 h]; Labor [48 h]; Crushed Stone [2325.12] | 410,521 | INTK | TR07 | HS | MS#04 | CON | HD |
| CP09-TR7-HD-4540 |  | Sand Layer for Interlock Types IL-(01,02,06,07) | 10d | 2026-06-24 | 2026-07-05 | CP09-TR7-HD-4530 SS+5d, CP09-TR7-HD-4530 FF+5d, CP09-EN-TR7-A-2720 |  |  |  |  | -227.19d | 0d | Cost [279178]; Mason [48 h]; Labor [280 h]; Clean sand [2321.5] | 279,178 | INTK | TR07 | HS | MS#04 | CON | HD |
| CP09-TR7-HD-4550 |  | Motar Bed Interlock Types IL-(03,04,08,09,10) | 10d | 2026-06-24 | 2026-07-05 | CP09-TR7-HD-4540 SS, CP09-EN-TR7-A-2720 |  |  |  |  | -227.19d | 0d | Cost [68357.3]; Mason [48 h]; Labor [48 h] | 68,357 | INTK | TR07 | HS | MS#04 | CON | HD |
| CP09-TR7-HD-4560 |  | Interlocking Paving | 10d | 2026-06-27 | 2026-07-08 | CP09-TR7-HD-4540 SS+2.81d, CP09-TR7-HD-4550 SS+2.81d, CP09-TR7-HD-4540 FF+2.81d, CP09-TR7-HD-4550 FF+2.81d, CP09-EN-TR7-A-2720, CP09-PR-HD-DY-1180 |  |  |  |  | -227.19d | 0d | Cost [521304]; Mason [280 h]; Labor [48 h]; Interlock [2966] | 521,304 | INTK | TR07 | HS | MS#04 | CON | HD |
|  | 2 | **Concrete in Situ** |  | 2026-02-22 | 2026-06-23 |  |  |  |  |  |  |  |  |  |  |  |  |  |  |  |
|  | 1 | **Slab on Garde** |  | 2026-02-22 | 2026-06-17 |  |  |  |  |  |  |  |  |  |  |  |  |  |  |  |
| CP09-TR7-HD-4300 |  | Plain Concrete with HDPE | 7d | 2026-02-22 A | 2026-06-14 | CP09-TR7-HD-4560, CP09-TR7-EW-1120, CP09-TR7-EW-1130, CP09-TR7-IR-1470, CP09-TR7-EL-1180, CP09-EN-TR7-A-2640 | 75% | 7d | 2026-03-28 | 2026-04-05 | -115d | 134.06d | Cost [577969]; Mason [280 h]; Labor [48 h]; Plain Concrete [3339.88 M3]; HDPE | 577,969 | CON | TR07 | HS | MS#04 | CON | HD |
| CP09-TR7-HD-4310 |  | Reinfored Concrete slab on grade | 10d | 2026-05-11 A | 2026-06-17 | CP09-TR7-HD-4300 | 30% | 10d | 2026-05-25 | 2026-06-04 | -118d | 131.06d | Cost [1444922]; Mason [48 h]; Steel Fixer [616 h]; Shutter [48 h]; Labor [48 h]; Reinforced Concrete [333.99 M3] | 1,444,922 | CON | TR07 | HS | MS#04 | CON | HD |
| CP09-TR7-HD-4320 |  | Waterproofing & Screed | 6d | 2026-05-11 A | 2026-06-13 | CP09-TR7-HD-4310 | 30% | 6d | 2026-06-06 | 2026-06-11 | -114d | 135.06d | Cost [288984]; Mason [280 h]; Labor [48 h]; Waterproofing [3339.88 M2] | 288,984 | CON | TR07 | HS | MS#04 | CON | HD |
|  | 2 | **Concrete In-situ w./Exposed Aggregate Finish** |  | 2026-05-11 | 2026-06-23 |  |  |  |  |  |  |  |  |  |  |  |  |  |  |  |
| CP09-TR7-HD-4330 |  | Concrete casting (including Joints & Wire Mish) | 15d | 2026-05-11 A | 2026-06-23 | CP09-TR7-HD-4320, CP09-TR7-HD-4810, CP09-EN-TR7-A-2640, CP09-PR-HD-DY-1000 | 30% | 15d | 2026-06-20 | 2026-07-07 | -123d | 126.06d | Cost [2600859]; Mason [280 h]; Labor [48 h]; Concrete /Exposed Aggregate [3339.88] | 2,600,859 | CON | TR07 | HS | MS#04 | CON | HD |
| CP09-TR7-HD-4340 |  | Finishing Concrete Surface | 6d | 2026-05-11 A | 2026-06-13 | CP09-TR7-HD-4330, CP09-TR7-RW-1980, CP09-TR7-RW-1990, CP09-TR7-RW-2090, CP09-TR7-RW-2100 | 30% | 6d | 2026-07-08 | 2026-07-14 | -160.38d | 56.81d | Cost [866953]; Mason [48 h]; Labor [48 h] | 866,953 | CON | TR07 | HS | MS#04 | CON | HD |
|  | 1 | **Marble Paving** |  | 2026-02-22 | 2026-06-17 |  |  |  |  |  |  |  |  |  |  |  |  |  |  |  |
|  | 1 | **Slab on Garde** |  | 2026-02-22 | 2026-06-17 |  |  |  |  |  |  |  |  |  |  |  |  |  |  |  |
| CP09-TR7-HD-4250 |  | Plain Concrete with HDPE | 5d | 2026-02-22 A | 2026-06-11 | CP09-TR7-HD-4560, CP09-TR7-EW-1120, CP09-TR7-EW-1140, CP09-TR7-IR-1470, CP09-TR7-EL-1180 FS+5d, CP09-EN-TR7-A-2650 | 85% | 5d | 2026-03-22 | 2026-03-28 | -113d | 136.06d | Cost [173552]; Mason [160 h]; Labor [48 h]; Plain Concrete [808.88 M3]; HDPE | 173,552 | MRB | TR07 | HS | MS#04 | CON | HD |
| CP09-TR7-HD-4260 |  | Reinfored Concrete slab on grade | 10d | 2026-02-22 A | 2026-06-17 | CP09-TR7-HD-4250 | 80% | 10d | 2026-03-28 | 2026-04-08 | -196.38d | 0d | Cost [416525]; Mason [48 h]; Steel Fixer [170 h]; Shutter [48 h]; Labor [48 h]; Reinforced Concrete [80.89 M3] | 416,525 | MRB | TR07 | HS | MS#04 | CON | HD |
| CP09-TR7-HD-4270 |  | Waterproofing & Screed | 7d | 2026-05-04 A | 2026-06-14 | CP09-TR7-HD-4260 | 80% | 7d | 2026-05-12 | 2026-05-19 | -115d | 134.06d | Cost [104131]; Mason [160 h]; Labor [48 h]; Waterproofing [808.88 M2] | 104,131 | MRB | TR07 | HS | MS#04 | CON | HD |
|  | 2 | **Marble Tiles** |  | 2026-05-04 | 2026-06-17 |  |  |  |  |  |  |  |  |  |  |  |  |  |  |  |
| CP09-TR7-HD-4280 |  | Marble Fixiation | 10d | 2026-05-04 A | 2026-06-17 | CP09-TR7-HD-4270, CP09-TR7-HD-4810, CP09-EN-TR7-A-2650, CP09-PR-HD-DY-1010 | 80% | 10d | 2026-06-03 | 2026-06-15 | -118d | 131.06d | Cost [2283133]; Mason [280 h]; Labor [48 h]; Marble [1120.38] | 2,283,133 | MRB | TR07 | HS | MS#04 | CON | HD |
| CP09-TR7-HD-4290 |  | Marble Surfcae Finishing | 7d | 2026-05-04 A | 2026-06-14 | CP09-TR7-HD-4280 | 80% | 7d | 2026-06-15 | 2026-06-23 | -168.38d | 27d | Cost [402906]; Mason [48 h]; Labor [48 h]; Marble | 402,906 | MRB | TR07 | HS | MS#04 | CON | HD |
|  | 3 | **Wooden Floor Boards** |  | 2026-06-18 | 2026-07-23 |  |  |  |  |  |  |  |  |  |  |  |  |  |  |  |
|  | 1 | **Slab on Garde** |  | 2026-06-18 | 2026-07-04 |  |  |  |  |  |  |  |  |  |  |  |  |  |  |  |
| CP09-TR7-HD-4350 |  | Plain Concrete with HDPE | 3d | 2026-06-18 | 2026-06-21 | CP09-TR7-HD-4260, CP09-TR7-EW-1120, CP09-TR7-EW-1130, CP09-TR7-IR-1470, CP09-TR7-EL-1180, CP09-EN-TR7-A-2660 |  |  |  |  | -196.38d | 0d | Cost [116181]; Mason [160 h]; Labor [48 h]; Plain Concrete [395.25 M3]; HDPE | 116,181 | WPC | TR07 | HS | MS#04 | CON | HD |
| CP09-TR7-HD-4360 |  | Reinfored Concrete slab on grade | 6d | 2026-06-22 | 2026-06-28 | CP09-TR7-HD-4350 |  |  |  |  | -196.38d | 0d | Cost [278834]; Mason [48 h]; Steel Fixer [83 h]; Shutter [48 h]; Labor [48 h]; Reinforced Concrete [39.52 M3] | 278,834 | WPC | TR07 | HS | MS#04 | CON | HD |
| CP09-TR7-HD-4370 |  | Waterproofing & Screed | 5d | 2026-06-29 | 2026-07-04 | CP09-TR7-HD-4360 |  |  |  |  | -195.38d | 0d | Cost [69708]; Mason [276.64 h]; Labor [48 h]; Waterproofing [395.25 M2] | 69,708 | WPC | TR07 | HS | MS#04 | CON | HD |

| ID | WBS | Activity | Duration | Start | Finish | Predecessors | Total float | Free float | Resources | Cost | Hardscape | CP09_Terrace-7 | CP09-Trade | CP09_Milestone-7 | CP09_Discipline-7 | DES |
| --- | --- | --- | --- | --- | --- | --- | --- | --- | --- | --- | --- | --- | --- | --- | --- | --- |
|  | 2 | **Wood- Plastic Composit** |  | 2026-07-05 | 2026-07-23 |  |  |  |  |  |  |  |  |  |  |  |
| CP09-TR7-HD-4380 |  | WPC Installation | 10d | 2026-07-05 | 2026-07-15 | CP09-TR7-HD-4370, CP09-TR7-HD-4810, CP09-EN-TR7-A-2660, CP09-PR-HD-DY-1020 | -195.38d | 0d | Cost [1816040]; WPC [528] | 1,816,040 | WPC | TR07 | HS | MS#04 | CON | HD |
| CP09-TR7-HD-4390 |  | WPC surface finishing & Accessories | 7d | 2026-07-16 | 2026-07-23 | CP09-TR7-HD-4380, CP09-TR7-HD-4290 | -195.38d | 21.81d | Cost [454010] | 454,010 | WPC | TR07 | HS | MS#04 | CON | HD |
|  | 4 | **Gravel layer** |  | 2026-06-29 | 2026-07-18 |  |  |  |  |  |  |  |  |  |  |  |
|  | 1 | **Slab on Garde** |  | 2026-06-29 | 2026-07-12 |  |  |  |  |  |  |  |  |  |  |  |
| CP09-TR7-HD-4400 |  | Plain Concrete with HDPE | 6d | 2026-06-29 | 2026-07-05 | CP09-TR7-HD-4360, CP09-TR7-EW-1120, CP09-TR7-EW-1130, CP09-TR7-IR-1470, CP09-TR7-EL-1180, CP09-EN-TR7-A-2670 | -196.38d | 0d | Cost [7507.48]; Mason [90 h]; Labor [48 h]; Plain Concrete [128.88 M3]; HDPE | 7,507 | GRV | TR07 | HS | MS#04 | CON | HD |
| CP09-TR7-HD-4420 |  | Mortar bed | 6d | 2026-07-06 | 2026-07-12 | CP09-TR7-HD-4400 | -196.38d | 0d | Cost [7507.48]; Mason [48 h]; Labor [48 h] | 7,507 | GRV | TR07 | HS | MS#04 | CON | HD |
|  | 2 | **Gravel Layer, w./Earth Colors** |  | 2026-07-13 | 2026-07-18 |  |  |  |  |  |  |  |  |  |  |  |
| CP09-TR7-HD-4430 |  | Furnish & install Garvel Layer | 5d | 2026-07-13 | 2026-07-18 | CP09-TR7-HD-4420, CP09-TR7-HD-4810, CP09-EN-TR7-A-2670, CP09-PR-HD-DY-1030 | -196.38d | 0d | Cost [35034.9]; Mason [77 h]; Labor [48 h]; Gravel Layer [128.88] | 35,035 | GRV | TR07 | HS | MS#04 | CON | HD |
|  | 5 | **Crushed Stone** |  | 2026-07-06 | 2026-07-25 |  |  |  |  |  |  |  |  |  |  |  |
|  | 1 | **Slab on Garde** |  | 2026-07-06 | 2026-07-18 |  |  |  |  |  |  |  |  |  |  |  |
| CP09-TR7-HD-4440 |  | Geotextile membrane | 4d | 2026-07-06 | 2026-07-09 | CP09-TR7-HD-4400, CP09-TR7-EW-1120, CP09-TR7-EW-1130, CP09-TR7-IR-1470, CP09-TR7-EL-1180, CP09-EN-TR7-A-2680 | -190.38d | 0d | Cost [3164.14]; Mason [48 h]; Labor [4 h]; Geotextile Sheets [13.25] | 3,164 | CRST | TR07 | HS | MS#04 | CON | HD |
| CP09-TR7-HD-4460 |  | Gravel fix sheets | 7d | 2026-07-11 | 2026-07-18 | CP09-TR7-HD-4440 | -190.38d | 6d | Cost [3164.14]; Waterproofing | 3,164 | CRST | TR07 | HS | MS#04 | CON | HD |
|  | 2 | **Crushed Dolomite Stone** |  | 2026-07-19 | 2026-07-25 |  |  |  |  |  |  |  |  |  |  |  |
| CP09-TR7-HD-4470 |  | Furnish & Install Crushed Dolomite stone , w./ mixed colors | 6d | 2026-07-19 | 2026-07-25 | CP09-TR7-HD-4460 FF, CP09-TR7-HD-4460 SS, CP09-TR7-HD-4430, CP09-TR7-HD-4810, CP09-EN-TR7-A-2680, CP09-PR-HD-DY-1040 | -196.38d | 20.81d | Cost [14766]; Mason [37 h]; Labor [48 h]; Crushed Dolomite stone [13.25] | 14,766 | CRST | TR07 | HS | MS#04 | CON | HD |
|  | 6 | **Loose Gravel** |  | 2026-07-06 | 2026-07-19 |  |  |  |  |  |  |  |  |  |  |  |
|  | 2 | **Loose Gravel 50mm** |  | 2026-07-06 | 2026-07-19 |  |  |  |  |  |  |  |  |  |  |  |
| CP09-TR7-HD-4480 |  | Furnish & Install loose gravel w./earth colors. | 12d | 2026-07-06 | 2026-07-19 | CP09-TR7-HD-4400, CP09-TR7-HD-4810, CP09-TR7-IR-1470, CP09-TR7-EL-1180, CP09-EN-TR7-A-2690, CP09-PR-HD-DY-1050 | -193.38d | 2d | Cost [8429.21]; Mason [19 h]; Labor [48 h]; Loose gravel [31.38] | 8,429 | LGRV | TR07 | HS | MS#04 | CON | HD |
|  | 7 | **Clean Sand Layer** |  | 2026-07-19 | 2026-07-27 |  |  |  |  |  |  |  |  |  |  |  |
|  | 1 | **Kids & Fitness Area** |  | 2026-07-19 | 2026-07-27 |  |  |  |  |  |  |  |  |  |  |  |
| CP09-TR7-HD-4490 |  | Geotextile Sheets | 3d | 2026-07-19 | 2026-07-21 | CP09-TR7-HD-4430, CP09-TR7-EW-1120, CP09-TR7-EW-1130, CP09-TR7-HD-4810, CP09-TR7-IR-1470, CP09-TR7-EL-1180, CP09-EN-TR7-A-2700 | -195.38d | 0d | Cost [65290.1]; Geotextile Sheets [1227.62] | 65,290 | SND | TR07 | HS | MS#04 | CON | HD |
| CP09-TR7-HD-4500 |  | Install Clean sand layer | 5d | 2026-07-22 | 2026-07-27 | CP09-TR7-HD-4490, CP09-TR7-HD-4480, CP09-TR7-HD-4810, CP09-EN-TR7-A-2700, CP09-PR-HD-DY-1070 | -195.38d | 46.06d | Cost [261160]; Clean sand [1227.62] | 261,160 | SND | TR07 | HS | MS#04 | CON | HD |
|  | 2 | **Site Improvments** |  | 2026-02-09 | 2026-09-15 |  |  |  |  |  |  |  |  |  |  |  |
|  | 6 | **Pools Shower -05** |  | 2026-07-08 | 2026-09-05 |  |  |  |  |  |  |  |  |  |  |  |
| CP09-TR7-HD-5060 |  | Plain Concrete Basin | 2d | 2026-07-08 | 2026-07-11 | CP09-EN-TR2-A-1910, CP09-TR7-HD-4560, CP09-EN-TR1-A-1640, CP09-TR7-EL-1180, CP09-TR7-HD-4810, CP09-TR7-HD-4790 | -217.38d | 0d | Cost [5183.94]; Mason [5 h]; Labor [48 h]; Plain Concrete [7 M3] | 5,184 | PLSHW | TR07 | HS | MS#04 | CON | HD |
| CP09-TR7-HD-5070 |  | R.Concrete Basin | 5d | 2026-07-11 | 2026-07-16 | CP09-TR7-HD-5060 | -217.38d | 0d | Cost [20735.8]; Mason [48 h]; Steel Fixer [5 h]; Shutter [48 h]; Labor [48 h]; Reinforced Concrete [1.5 M3] | 20,736 | PLSHW | TR07 | HS | MS#04 | CON | HD |
| CP09-TR7-HD-5080 |  | Solid Block Work | 5d | 2026-07-16 | 2026-07-22 | CP09-TR7-HD-5070 | -210.44d | 0d | Cost [2073.57]; Mason [48 h]; Labor [48 h]; Blocks [0.25] | 2,074 | PLSHW | TR07 | HS | MS#04 | CON | HD |
| CP09-TR7-HD-5090 |  | Water Proofing | 2.81d | 2026-07-22 | 2026-07-26 | CP09-TR7-HD-5080 | -210.44d | 0d | Cost [2591.97]; Mason [5.04 h]; Labor [48 h] | 2,592 | PLSHW | TR07 | HS | MS#04 | CON | HD |
| CP09-TR7-HD-5100 |  | Backfilling | 5d | 2026-07-26 | 2026-08-01 | CP09-TR7-HD-5090 | -210.44d | 0d | Cost [1555.18]; Labor [2 h] | 1,555 | PLSHW | TR07 | HS | MS#04 | CON | HD |
| CP09-TR7-HD-5110 |  | Mica Stone Cladding | 6d | 2026-08-01 | 2026-08-08 | CP09-TR7-HD-5100, CP09-PR-HD-DY-1120 | -210.44d | 0d | Cost [20735.8]; Mason [11 h]; Labor [48 h] | 20,736 | PLSHW | TR07 | HS | MS#04 | CON | HD |
| CP09-TR7-HD-5120 |  | Mica Stone Capping | 4d | 2026-08-08 | 2026-08-12 | CP09-TR7-HD-5110, CP09-PR-HD-DY-1120 | -210.44d | 0d | Cost [2073.57]; Mason [1 h]; Labor [48 h] | 2,074 | PLSHW | TR07 | HS | MS#04 | CON | HD |
| CP09-TR7-HD-5130 |  | Drainage Cover with Geotextile | 2.81d | 2026-08-12 | 2026-08-16 | CP09-TR7-HD-5120, CP09-PR-HD-DY-1060 | -210.44d | 0d | Cost [12441.5] | 12,441 | PLSHW | TR07 | HS | MS#04 | CON | HD |
| CP09-TR7-HD-5140 |  | Blast stone blocks for Flooring | 5d | 2026-08-16 | 2026-08-22 | CP09-TR7-HD-5130, CP09-PR-HD-DY-1130 | -210.44d | 0d | Cost [15551.8]; Mason [9 h]; Labor [48 h] | 15,552 | PLSHW | TR07 | HS | MS#04 | CON | HD |
| CP09-TR7-HD-5150 |  | Blast Stone Blocks Capping | 4d | 2026-08-22 | 2026-08-26 | CP09-TR7-HD-5140, CP09-PR-HD-DY-1130 | -210.44d | 0d | Cost [5183.94]; Mason [16 h]; Labor [48 h] | 5,184 | PLSHW | TR07 | HS | MS#04 | CON | HD |
| CP09-TR7-HD-5160 |  | Loose Rounded Pebbles | 5d | 2026-08-26 | 2026-09-01 | CP09-TR7-HD-5150, CP09-PR-HD-DY-1140 | -210.44d | 0d | Cost [5183.94]; Mason [48 h]; Labor [48 h] | 5,184 | PLSHW | TR07 | HS | MS#04 | CON | HD |
| CP09-TR7-HD-5170 |  | Shower Head Fixation | 2.81d | 2026-09-01 | 2026-09-05 | CP09-TR7-HD-5160, CP09-TR7-HD-5140, CP09-TR7-HD-5150, CP09-PR-HD-DY-1150 | -207.25d | 25.69d | Cost [10367.9] | 10,368 | PLSHW | TR07 | HS | MS#04 | CON | HD |

| ID | WBS | Activity | Duration | Start | Finish | Predecessors | Complete | Remaining | Planned start | Planned finish | Total float | Free float | Resources | Cost | Hardscape | CP09_Terrace-7 | CP09-Trade | CP09_Milestone-7 | CP09_Discipline-7 | DES |
| --- | --- | --- | --- | --- | --- | --- | --- | --- | --- | --- | --- | --- | --- | --- | --- | --- | --- | --- | --- | --- |
|  | 3 | **Pools Shower -06** |  | 2026-07-16 | 2026-09-15 |  |  |  |  |  |  |  |  |  |  |  |  |  |  |  |
| CP09-TR7-HD-2240 |  | Plain Concrete Basin | 2d | 2026-07-16 | 2026-07-19 | CP09-EN-TR2-A-1910, CP09-TR7-HD-5070, CP09-EN-TR1-A-1640, CP09-TR7-EL-1180, CP09-TR7-HD-4810, CP09-TR7-HD-4790 |  |  |  |  | -217.38d | 0d | Cost [5183.94]; Mason [5 h]; Labor [48 h]; Plain Concrete [7 M3] | 5,184 | PLSHW | TR07 | HS | MS#04 | CON | HD |
| CP09-TR7-HD-2250 |  | R.Concrete Basin | 7d | 2026-07-19 | 2026-07-27 | CP09-TR7-HD-2240 |  |  |  |  | -217.38d | 0d | Cost [20735.8]; Mason [48 h]; Steel Fixer [5 h]; Shutter [48 h]; Labor [48 h]; Reinforced Concrete [1.5 M3] | 20,736 | PLSHW | TR07 | HS | MS#04 | CON | HD |
| CP09-TR7-HD-2260 |  | Solid Block Work | 5d | 2026-07-27 | 2026-08-02 | CP09-TR7-HD-2250 |  |  |  |  | -217.38d | 0d | Cost [2073.57]; Mason [48 h]; Labor [48 h]; Blocks [0.25] | 2,074 | PLSHW | TR07 | HS | MS#04 | CON | HD |
| CP09-TR7-HD-2270 |  | Water Proofing | 2.81d | 2026-08-02 | 2026-08-05 | CP09-TR7-HD-2260 |  |  |  |  | -217.38d | 0d | Cost [2591.97]; Mason [5.04 h]; Labor [48 h] | 2,592 | PLSHW | TR07 | HS | MS#04 | CON | HD |
| CP09-TR7-HD-2280 |  | Backfilling | 6d | 2026-08-05 | 2026-08-12 | CP09-TR7-HD-2270 |  |  |  |  | -217.38d | 0d | Cost [1555.18]; Labor [2 h] | 1,555 | PLSHW | TR07 | HS | MS#04 | CON | HD |
| CP09-TR7-HD-2290 |  | Mica Stone Cladding | 4d | 2026-08-12 | 2026-08-17 | CP09-TR7-HD-2280, CP09-PR-HD-DY-1120 |  |  |  |  | -217.38d | 0d | Cost [20735.8]; Mason [11 h]; Labor [48 h] | 20,736 | PLSHW | TR07 | HS | MS#04 | CON | HD |
| CP09-TR7-HD-2300 |  | Mica Stone Capping | 3d | 2026-08-17 | 2026-08-20 | CP09-TR7-HD-2290, CP09-PR-HD-DY-1120 |  |  |  |  | -217.38d | 0d | Cost [2073.57]; Mason [1 h]; Labor [48 h] | 2,074 | PLSHW | TR07 | HS | MS#04 | CON | HD |
| CP09-TR7-HD-2310 |  | Drainage Cover with Geotextile | 5d | 2026-08-20 | 2026-08-26 | CP09-TR7-HD-2300, CP09-PR-HD-DY-1060 |  |  |  |  | -217.38d | 0d | Cost [12441.5] | 12,441 | PLSHW | TR07 | HS | MS#04 | CON | HD |
| CP09-TR7-HD-2320 |  | Blast stone blocks for Flooring | 5d | 2026-08-26 | 2026-09-01 | CP09-TR7-HD-2310, CP09-PR-HD-DY-1130 |  |  |  |  | -217.38d | 0d | Cost [15551.8]; Mason [9 h]; Labor [48 h] | 15,552 | PLSHW | TR07 | HS | MS#04 | CON | HD |
| CP09-TR7-HD-2330 |  | Blast Stone Blocks Capping | 3d | 2026-09-01 | 2026-09-05 | CP09-TR7-HD-2320, CP09-PR-HD-DY-1130 |  |  |  |  | -217.38d | 0d | Cost [5183.94]; Mason [16 h]; Labor [48 h] | 5,184 | PLSHW | TR07 | HS | MS#04 | CON | HD |
| CP09-TR7-HD-2340 |  | Loose Rounded Pebbles | 3.75d | 2026-09-05 | 2026-09-09 | CP09-TR7-HD-2330, CP09-PR-HD-DY-1140 |  |  |  |  | -217.38d | 0d | Cost [5183.94]; Mason [48 h]; Labor [48 h] | 5,184 | PLSHW | TR07 | HS | MS#04 | CON | HD |
| CP09-TR7-HD-2350 |  | Shower Head Fixation | 5d | 2026-09-09 | 2026-09-15 | CP09-TR7-HD-2340, CP09-TR7-HD-2320, CP09-TR7-HD-2330, CP09-PR-HD-DY-1150 |  |  |  |  | -216.38d | 16.56d | Cost [10367.9] | 10,368 | PLSHW | TR07 | HS | MS#04 | CON | HD |
|  | 1 | **Marble Steps** |  | 2026-02-09 | 2026-08-03 |  |  |  |  |  |  |  |  |  |  |  |  |  |  |  |
| CP09-TR7-HD-4570 |  | Reinforecd Concrete Step. | 10d | 2026-02-09 A | 2026-06-17 | CP09-TR7-RW-1980, CP09-TR7-RW-1990, CP09-TR7-RW-2090, CP09-TR7-RW-2100, CP09-TR7-EW-1120, CP09-TR7-EW-1130, CP09-EN-TR7-A-2730, CP09-TR7-IR-1470, CP09-TR7-EL-1180 | 80% | 10d | 2026-05-09 | 2026-05-20 | -171.81d | 0d | Cost [255883]; Mason [48 h]; Steel Fixer [48 h]; Shutter [48 h]; Labor [48 h]; Reinforced Concrete | 255,883 | STP | TR07 | HS | MS#04 | CON | HD |
| CP09-TR7-HD-4580 |  | Install Marble Blocks | 6.56d | 2026-06-14 | 2026-06-21 | CP09-TR7-HD-4570 SS+2.81d, CP09-TR7-HD-4570 FF+2.81d, CP09-PR-HD-DY-1100 |  |  |  |  | -171.81d | 32.19d | Cost [162834]; Marble Step [6.38] | 162,834 | STP | TR07 | HS | MS#04 | CON | HD |
| CP09-TR7-HD-4590 |  | Finishing Marble Surface | 5d | 2026-07-29 | 2026-08-03 | CP09-TR7-HD-4580, CP09-TR7-RW-1980, CP09-TR7-RW-1990, CP09-TR7-RW-2090, CP09-TR7-RW-2100 |  |  |  |  | -186d | 50.12d | Cost [46524.1] | 46,524 | STP | TR07 | HS | MS#04 | CON | HD |
|  | 4 | **Handrails** |  | 2026-08-20 | 2026-08-26 |  |  |  |  |  |  |  |  |  |  |  |  |  |  |  |
| CP09-TR7-HD-4820 |  | Install & Fix Stainless Handrail (500 mm height) | 5.62d | 2026-08-20 | 2026-08-26 | CP09-TR7-HD-4580, CP09-TR7-HD-4660, CP09-EN-TR7-A-2760, CP09-PR-HD-DY-1160 |  |  |  |  | -223.06d | 20.38d | Cost [131128]; Labor [51 h]; Stanless Steel Handrial [25.62] | 131,128 | HND | TR07 | HS | MS#04 | CON | HD |
| CP09-TR7-HD-4830 |  | Install & Fix Glass Handrail (900mm height) | 5.62d | 2026-08-20 | 2026-08-26 | CP09-TR7-HD-4580, CP09-TR7-HD-4660, CP09-EN-TR7-A-2760, CP09-PR-HD-DY-1170 |  |  |  |  | -223.06d | 20.38d | Cost [44178.5]; Glass Handrail [4]; Labor [7 h] | 44,179 | HND | TR07 | HS | MS#04 | CON | HD |
|  | 2 | **Curvelinear Block Seat** |  | 2026-07-16 | 2026-08-20 |  |  |  |  |  |  |  |  |  |  |  |  |  |  |  |
| CP09-TR7-HD-4600 |  | Excavation | 2.81d | 2026-07-16 | 2026-07-20 | CP09-TR7-RW-1970, CP09-TR7-RW-2080, CP09-TR7-EW-1120, CP09-TR7-EW-1130, CP09-EN-TR7-A-2740, CP09-TR7-EL-1180 |  |  |  |  | -249.44d | 0d | Cost [9988.94]; EXCAVATOR [48 h]; LOADER [56 h]; TRUCK [56 h]; Excavation [59.96 M3] | 9,989 | SEAT | TR07 | HS | MS#04 | CON | HD |
| CP09-TR7-HD-4610 |  | Plaing Concrete with HPDE | 3.75d | 2026-07-20 | 2026-07-25 | CP09-TR7-HD-4600 |  |  |  |  | -249.44d | 0d | Cost [12486.2]; Mason [24 h]; Labor [48 h]; Plain Concrete [34.59 M3]; HDPE | 12,486 | SEAT | TR07 | HS | MS#04 | CON | HD |
| CP09-TR7-HD-4620 |  | Reinforced Concrete for Footing | 5.62d | 2026-07-25 | 2026-07-30 | CP09-TR7-HD-4610 |  |  |  |  | -249.44d | 0d | Cost [74917.1]; Mason [48 h]; Steel Fixer [31 h]; Shutter [48 h]; Labor [48 h]; Reinforced Concrete [8.84 M3] | 74,917 | SEAT | TR07 | HS | MS#04 | CON | HD |
| CP09-TR7-HD-4630 |  | Reinforced Concrete for beam | 5d | 2026-07-30 | 2026-08-05 | CP09-TR7-HD-4620 |  |  |  |  | -249.44d | 0d | Cost [24972.4]; Mason [5 h]; Steel Fixer [77 h]; Shutter [6 h]; Labor [48 h]; Reinforced Concrete [1.54 M3] | 24,972 | SEAT | TR07 | HS | MS#04 | CON | HD |
| CP09-TR7-HD-4640 |  | Waterproofing & Protection | 3.75d | 2026-08-05 | 2026-08-10 | CP09-TR7-HD-4630 |  |  |  |  | -249.44d | 0d | Cost [24972.4]; Waterproofing [9.22 M2] | 24,972 | SEAT | TR07 | HS | MS#04 | CON | HD |
| CP09-TR7-HD-4650 |  | Backfilling | 2.81d | 2026-08-10 | 2026-08-13 | CP09-TR7-HD-4640 |  |  |  |  | -249.44d | 0d | Cost [14983.4]; Backfilling [40.74 M3] | 14,983 | SEAT | TR07 | HS | MS#04 | CON | HD |
| CP09-TR7-HD-4660 |  | Marble Capping | 5.62d | 2026-08-13 | 2026-08-20 | CP09-TR7-RW-2090, CP09-TR7-RW-2100, CP09-TR7-RW-1980, CP09-TR7-RW-1990, CP09-TR7-HD-4650, CP09-PR-HD-DY-1110 |  |  |  |  | -249.44d | 0d | Cost [87403.2]; Mason [160 h]; Labor [48 h]; Marble Coping [25.62] | 87,403 | SEAT | TR07 | HS | MS#04 | CON | HD |

| ID | WBS | Activity | Duration | Start | Finish | Predecessors | Total float | Free float | Resources | Cost | Hardscape | CP09_Terrace-7 | CP09-Trade | CP09_Milestone-7 | CP09_Discipline-7 | DES | Softscape |
| --- | --- | --- | --- | --- | --- | --- | --- | --- | --- | --- | --- | --- | --- | --- | --- | --- | --- |
|  | 11 | **Sinage** |  | 2026-08-20 | 2026-10-13 |  |  |  |  |  |  |  |  |  |  |  |  |
| CP09-TR7-SN-4950 |  | Excavation | 7d | 2026-08-20 | 2026-08-29 | CP09-TR7-HD-4660, CP09-TR7-HD-4560, CP09-EN-TR7-A-2800 | -249.44d | 0d | Cost [21369.8]; EXCAVATOR [72 h]; LOADER [88 h]; TRUCK [88 h]; Excavation [92.06 M3] | 21,370 | SING | TR07 | SIN | MS#04 | CON | HD |  |
| CP09-TR7-SN-4960 |  | Plain Concrete with HDPE | 5d | 2026-08-25 | 2026-08-31 | CP09-TR7-SN-4950 SS+2d, CP09-TR7-SN-4950 FF+2d | -249.44d | 0d | Cost [32054.7]; Mason [4 h]; Labor [48 h]; Plain Concrete [6.14 M3] | 32,055 | SING | TR07 | SIN | MS#04 | CON | HD |  |
| CP09-TR7-SN-4970 |  | Reinforced Concrete | 10d | 2026-08-27 | 2026-09-08 | CP09-TR7-SN-4960 SS+2d, CP09-TR7-SN-4960 FF+2d | -249.44d | 0d | Cost [117534]; Mason [92 h]; Steel Fixer [616 h]; Shutter [123 h]; Labor [48 h]; Reinforced Concrete [30.69 M3] | 117,534 | SING | TR07 | SIN | MS#04 | CON | HD |  |
| CP09-TR7-SN-4980 |  | Waterproofing | 5d | 2026-09-06 | 2026-09-12 | CP09-TR7-SN-4970 SS+3d, CP09-TR7-SN-4970 FF+3d | -249.44d | 0d | Cost [21369.8]; Mason [128.8 h]; Labor [48 h]; Waterproofing [184.12 M2] | 21,370 | SING | TR07 | SIN | MS#04 | CON | HD |  |
| CP09-TR7-SN-4990 |  | Grouting | 10d | 2026-09-08 | 2026-09-20 | CP09-TR7-SN-4980 SS+2d, CP09-TR7-SN-4980 FF+2d | -249.44d | 0d | Cost [21369.8] | 21,370 | SING | TR07 | SIN | MS#04 | CON | HD |  |
| CP09-TR7-SN-5000 |  | STREET DIRECTIONAL SIGN | 10d | 2026-09-08 | 2026-09-20 | CP09-TR7-SN-4990 FF, CP09-TR7-SF-1730, CP09-TR7-SN-4990 SS, CP09-PR-SN-DY-1000 | -244.44d | 0d | Cost [124876]; Sign [41.25] | 124,876 | SING | TR07 | SIN | MS#04 | CON | HD |  |
| CP09-TR7-SN-5010 |  | DIRECTIONAL SIGN FOR VEHICULAR | 10d | 2026-09-08 | 2026-09-20 | CP09-TR7-SN-4990 FF, CP09-TR7-SF-1730, CP09-TR7-SN-4990 SS, CP09-PR-SN-DY-1010 | -244.44d | 0d | Cost [227367]; Sign [3.88] | 227,367 | SING | TR07 | SIN | MS#04 | CON | HD |  |
| CP09-TR7-SN-5040 |  | RULES SIGN | 10d | 2026-09-14 | 2026-09-26 | CP09-TR7-SN-4990 FF+5d, CP09-TR7-SF-1730, CP09-TR7-SN-4990 SS+5d, CP09-PR-SN-DY-1030 | -249.44d | 0d | Cost [102164]; Sign [10.38] | 102,164 | SING | TR07 | SIN | MS#04 | CON | HD |  |
| CP09-TR7-SN-5020 |  | UNIT ID SIGN (FRONT YARD) | 15d | 2026-09-26 | 2026-10-13 | CP09-TR7-SN-5000, CP09-TR7-SN-5010, CP09-TR7-SN-5040, CP09-PR-SN-DY-1020 | -249.44d | 0d | Cost [81022.5]; Sign [2.25] | 81,023 | SING | TR07 | SIN | MS#04 | CON | HD |  |
| CP09-TR7-SN-5030 |  | UNIT ID SIGN (BACK YARD) | 15d | 2026-09-26 | 2026-10-13 | CP09-TR7-SN-5000, CP09-TR7-SN-5010, CP09-TR7-SN-5040, CP09-PR-SN-DY-1020 | -249.44d | 0d | Cost [55703]; Sign [5] | 55,703 | SING | TR07 | SIN | MS#04 | CON | HD |  |
| CP09-TR7-SN-5050 |  | IDENTIFICATION SIGN | 10d | 2026-09-26 | 2026-10-07 | CP09-TR7-SN-5000, CP09-TR7-SN-5010, CP09-TR7-SN-5040, CP09-PR-SN-DY-1040 | -244.44d | 5d | Cost [49962.7]; Sign [60] | 49,963 | SING | TR07 | SIN | MS#04 | CON | HD |  |
|  | 12 | **Landscape Furntiure** |  | 2026-09-20 | 2026-10-06 |  |  |  |  |  |  |  |  |  |  |  |  |
| CP09-TR7-FN-4840 |  | Install & Fix Pitch Pine Picnic Table | 14d | 2026-09-20 | 2026-10-06 | CP09-TR7-SN-5000, CP09-TR7-HD-4560, CP09-TR7-HD-4480, CP09-TR7-HD-4470, CP09-TR7-HD-4430, CP09-TR7-HD-4390, CP09-TR7-HD-4290, CP09-TR7-HD-4340, CP09-EN-TR7-A-2770, CP09-PR-FN-DY-1000 | -243.44d | 6d | Cost [93998.3]; Pitch Pine Picnic Table [1] | 93,998 |  | TR07 | LA-F | MS#04 | CON | SO | FRNT |
| CP09-TR7-FN-4850 |  | Install & Fix Crcular Cast-iron tree grate | 14d | 2026-09-20 | 2026-10-06 | CP09-TR7-HD-4820, CP09-TR7-HD-4830, CP09-TR7-SN-5000, CP09-TR7-HD-4560, CP09-TR7-HD-4480, CP09-TR7-HD-4470, CP09-TR7-HD-4430, CP09-TR7-HD-4390, CP09-TR7-HD-4290, CP09-TR7-HD-4340, CP09-EN-TR7-A-2770, CP09-PR-FN-DY-1010 | -243.44d | 6d | Cost [655486]; Crcular Cast-iron tree grate [23.38] | 655,486 |  | TR07 | LA-F | MS#04 | CON | SO | FRNT |
| CP09-TR7-FN-4860 |  | Install & Fix Aluminium Cabana for Pool Shading | 14d | 2026-09-20 | 2026-10-06 | CP09-TR7-HD-4820, CP09-TR7-HD-4830, CP09-TR7-SN-5000, CP09-TR7-HD-4560, CP09-TR7-HD-4480, CP09-TR7-HD-4470, CP09-TR7-HD-4430, CP09-TR7-HD-4390, CP09-TR7-HD-4290, CP09-TR7-HD-4340, CP09-EN-TR7-A-2770, CP09-PR-FN-DY-1020 | -243.44d | 0d | Cost [217421]; Aluminium Cabana [1] | 217,421 |  | TR07 | LA-F | MS#04 | CON | SO | FRNT |
| CP09-TR7-FN-4870 |  | Install & Fix Pitch Pine Benchs | 14d | 2026-09-20 | 2026-10-06 | CP09-TR7-HD-4820, CP09-TR7-HD-4830, CP09-TR7-SN-5000, CP09-TR7-HD-4560, CP09-TR7-HD-4480, CP09-TR7-HD-4470, CP09-TR7-HD-4430, CP09-TR7-HD-4390, CP09-TR7-HD-4290, CP09-TR7-HD-4340, CP09-EN-TR7-A-2770, CP09-PR-FN-DY-1030 | -243.44d | 6d | Cost [316796]; Pitch Pine Benchs [9.5] | 316,796 |  | TR07 | LA-F | MS#04 | CON | SO | FRNT |
| CP09-TR7-FN-4880 |  | Install & Fix Polyester Hammocks | 14d | 2026-09-20 | 2026-10-06 | CP09-TR7-HD-4820, CP09-TR7-HD-4830, CP09-TR7-SN-5000, CP09-TR7-HD-4560, CP09-TR7-HD-4480, CP09-TR7-HD-4470, CP09-TR7-HD-4430, CP09-TR7-HD-4390, CP09-TR7-HD-4290, CP09-TR7-HD-4340, CP09-EN-TR7-A-2770, CP09-PR-FN-DY-1040 | -243.44d | 6d | Cost [40144.4]; Polyester Hammocks [1] | 40,144 |  | TR07 | LA-F | MS#04 | CON | SO | FRNT |
| CP09-TR7-FN-4890 |  | Install & Fix Adult Play Swing | 14d | 2026-09-20 | 2026-10-06 | CP09-TR7-HD-4820, CP09-TR7-HD-4830, CP09-TR7-SN-5000, CP09-TR7-HD-4560, CP09-TR7-HD-4480, CP09-TR7-HD-4470, CP09-TR7-HD-4430, CP09-TR7-HD-4390, CP09-TR7-HD-4290, CP09-TR7-HD-4340, CP09-EN-TR7-A-2770, CP09-PR-FN-DY-1050 | -243.44d | 6d | Cost [30435]; Adult Play Swing [1] | 30,435 |  | TR07 | LA-F | MS#04 | CON | SO | FRNT |
| CP09-TR7-FN-4900 |  | Install & Fix Aluminum Trash Bin | 14d | 2026-09-20 | 2026-10-06 | CP09-TR7-HD-4820, CP09-TR7-HD-4830, CP09-TR7-SN-5000, CP09-TR7-HD-4560, CP09-TR7-HD-4480, CP09-TR7-HD-4470, CP09-TR7-HD-4430, CP09-TR7-HD-4390, CP09-TR7-HD-4290, CP09-TR7-HD-4340, CP09-EN-TR7-A-2770, CP09-PR-FN-DY-1060 | -243.44d | 6d | Cost [896214]; Aluminum Trash Bin [14] | 896,214 |  | TR07 | LA-F | MS#04 | CON | SO | FRNT |
| CP09-TR7-FN-4910 |  | Install & Fix tensile Teflon Tent | 14d | 2026-09-20 | 2026-10-06 | CP09-TR7-HD-4820, CP09-TR7-HD-4830, CP09-TR7-SN-5000, CP09-TR7-HD-4560, CP09-TR7-HD-4480, CP09-TR7-HD-4470, CP09-TR7-HD-4430, CP09-TR7-HD-4390, CP09-TR7-HD-4290, CP09-TR7-HD-4340, CP09-EN-TR7-A-2770, CP09-PR-FN-DY-1070 | -243.44d | 6d | Cost [555836]; tensile Teflon Tent [2.5] | 555,836 |  | TR07 | LA-F | MS#04 | CON | SO | FRNT |
| CP09-TR7-FN-4920 |  | Lanscape Edging ( Rubber) | 14d | 2026-09-20 | 2026-10-06 | CP09-TR7-HD-4820, CP09-TR7-HD-4830, CP09-TR7-SN-5000, CP09-TR7-HD-4560, CP09-TR7-HD-4480, CP09-TR7-HD-4470, CP09-TR7-HD-4430, CP09-TR7-HD-4390, CP09-TR7-HD-4290, CP09-TR7-HD-4340, CP09-EN-TR7-A-2770, CP09-PR-FN-DY-1080 | -243.44d | 6d | Cost [65739.9]; Lanscape Edging ( Rubber) [236.5] | 65,740 |  | TR07 | LA-F | MS#04 | CON | SO | FRNT |
|  | 10 | **Play Field Equipment** |  | 2026-09-20 | 2026-10-04 |  |  |  |  |  |  |  |  |  |  |  |  |
| CP09-TR7-PE-4930 |  | Fitness areas equipment | 12d | 2026-09-20 | 2026-10-04 | CP09-TR7-SN-5000, CP09-TR7-SN-5010, CP09-TR7-HD-4500, CP09-EN-TR7-A-2810, CP09-PR-PE-DY-1000, CP09-PR-PE-DY-1010, CP09-PR-PE-DY-1020, CP09-PR-PE-DY-1030 | -241.44d | 8d | Cost [1442780]; Fitness equipment [5] | 1,442,780 |  | TR07 | PF-E | MS#04 | CON | SO | P.EQ |
| CP09-TR7-PE-4940 |  | Kids playground equipment | 12d | 2026-09-20 | 2026-10-04 | CP09-TR7-SN-5000, CP09-TR7-SN-5010, CP09-TR7-HD-4500, CP09-PR-PE-DY-1040, CP09-PR-PE-DY-1050, CP09-PR-PE-DY-1060, CP09-PR-PE-DY-1070, CP09-PR-PE-DY-1080, CP09-PR-PE-DY-1090, CP09-PR-PE-DY-1100 | -241.44d | 8d | Cost [1256494]; Kids equipment [6] | 1,256,494 |  | TR07 | PF-E | MS#04 | CON | SO | P.EQ |

| ID | WBS | Activity | Duration | Start | Finish | Predecessors | Complete | Remaining | Planned start | Planned finish | Total float | Free float | Resources | Cost | Actual cost | Softscape | CP09_Terrace-7 | CP09-Trade | CP09_Milestone-7 | CP09_Discipline-7 | DES | Swimming Pool |
| --- | --- | --- | --- | --- | --- | --- | --- | --- | --- | --- | --- | --- | --- | --- | --- | --- | --- | --- | --- | --- | --- | --- |
|  | 7 | **Lighting for Softscape** |  | 2026-07-08 | 2026-10-06 |  |  |  |  |  |  |  |  |  |  |  |  |  |  |  |  |  |
|  | 1 | **Exterior Lighting** |  | 2026-07-08 | 2026-10-06 |  |  |  |  |  |  |  |  |  |  |  |  |  |  |  |  |  |
| CP09-TR7-SF-1730 |  | Install Landscape Lighting Pole | 35d | 2026-07-08 | 2026-08-18 | CP09-TR7-HD-4560, CP09-TR7-EL-1170, CP09-EN-TR7-A-2840, CP09-PR-EL-DY-1080 |  |  |  |  | -227.19d | 0d | Cost [97302.1]; Lighting Pole [4]; Electrican [25 h] | 97,302 |  | LHT | TR07 | LFS | MS#04 | CON | HD |  |
| CP09-TR7-SF-1770 |  | Install Projectors for Trees | 10d | 2026-07-20 | 2026-07-30 | CP09-TR7-SF-1660, CP09-TR7-SF-1670, CP09-TR7-SF-1680, CP09-TR7-SF-1690, CP09-TR7-SF-1700, CP09-TR7-SF-1710, CP09-TR7-SF-1720, CP09-EN-TR7-A-2840, CP09-PR-EL-DY-1130 |  |  |  |  | -186.38d | 25.81d | Cost [484837]; Projectors For Trees [120]; Electrican [25 h] | 484,837 |  | LHT | TR07 | LFS | MS#04 | CON | HD |  |
| CP09-TR7-SF-1740 |  | Install Bollard for Walkways | 10d | 2026-08-18 | 2026-08-30 | CP09-TR7-EL-1170, CP09-TR7-HD-4560, CP09-TR7-HD-4340, CP09-TR7-HD-4290, CP09-TR7-HD-4390, CP09-TR7-HD-4430, CP09-TR7-HD-4470, CP09-TR7-HD-4480, CP09-EN-TR7-A-2840, CP09-PR-EL-DY-1090, CP09-TR7-SF-1730 |  |  |  |  | -217.19d | 0d | Cost [1108355]; Bollard [260]; Electrican [25 h] | 1,108,355 |  | LHT | TR07 | LFS | MS#04 | CON | HD |  |
| CP09-TR7-SF-1760 |  | Install Inground Uplight For Palms | 10d | 2026-08-18 | 2026-08-30 | CP09-TR7-SF-1770 SS, CP09-TR7-SF-1740 SS, CP09-EN-TR7-A-2840, CP09-PR-EL-DY-1120 |  |  |  |  | -212.19d | 37.25d | Cost [393484]; Inground Uplight [86]; Electrican [25 h] | 393,484 |  | LHT | TR07 | LFS | MS#04 | CON | HD |  |
| CP09-TR7-SF-1750 |  | Install Diffused Wall Recessed Step | 10d | 2026-08-22 | 2026-09-02 | CP09-TR7-SF-1740 SS+3d, CP09-EN-TR7-A-2840, CP09-PR-EL-DY-1110 |  |  |  |  | -215.19d | 28.25d | Cost [194419]; Diffused Wall [47]; Electrican [25 h] | 194,419 |  | LHT | TR07 | LFS | MS#04 | CON | HD |  |
| CP09-TR7-SF-1780 |  | Install Surface Mountaed Down Light for Pool Cabans | 10d | 2026-09-24 | 2026-10-06 | CP09-TR7-SF-1750 FF, CP09-TR7-FN-4860 FF, CP09-EN-TR7-A-2840, CP09-PR-EL-DY-1100 |  |  |  |  | -243.44d | 6d | Cost [25594]; Surface Mountaed Light [6]; Electrican [25 h] | 25,594 |  | LHT | TR07 | LFS | MS#04 | CON | HD |  |
|  | 2 | **Outlet Lighting Fixtures** |  | 2026-08-30 | 2026-09-05 |  |  |  |  |  |  |  |  |  |  |  |  |  |  |  |  |  |
| CP09-TR7-SF-1790 |  | Install outlet lighting fixtures | 5d | 2026-08-30 | 2026-09-05 | CP09-TR7-SF-1740, CP09-EN-TR7-A-2840, CP09-PR-EL-DY-1150 |  |  |  |  | -217.19d | 32.25d | Cost [357578]; Outlet Lighting Fixtiure [520]; Electrican [25 h] | 357,578 |  | LHT | TR07 | LFS | MS#04 | CON | HD |  |
|  | 2 | **Softscape** |  | 2026-04-13 | 2026-07-19 |  |  |  |  |  |  |  |  |  |  |  |  |  |  |  |  |  |
|  | 1 | **Planting** |  | 2026-04-13 | 2026-07-19 |  |  |  |  |  |  |  |  |  |  |  |  |  |  |  |  |  |
| CP09-TR7-SF-1640 |  | Sweet sand for all plants | 10d | 2026-04-13 A | 2026-06-17 | CP09-TR7-EW-1140, CP09-TR7-HD-4810, CP09-TR7-HD-4560, CP09-EN-TR7-A-2830, CP09-PR-PN-DY-1000, CP09-TR4-SF-1160, CP09-TR4-SF-1170 | 10% | 10d | 2026-05-16 | 2026-05-27 | -186.38d | 0d | Cost [1296918]; Sweet sand [3702.2] | 1,296,918 |  | PLNT | TR07 | SS | MS#04 | CON | SO |  |
| CP09-TR7-SF-1650 |  | Organic Manure | 10d | 2026-04-13 A | 2026-06-17 | CP09-TR7-SF-1640 SS+5d, CP09-EN-TR7-A-2830, CP09-PR-PN-DY-1010 | 10% | 10d | 2026-05-21 | 2026-06-02 | -176.38d | 14d | Cost [841200]; Organic Manure [843.3] | 841,200 |  | PLNT | TR07 | SS | MS#04 | CON | SO |  |
| CP09-TR7-SF-1660 |  | Large Trees | 10d | 2026-07-05 | 2026-07-15 | CP09-TR7-IR-1480, CP09-TR7-IR-1490, CP09-TR7-IR-1500, CP09-TR7-IR-1510, CP09-TR7-IR-1520, CP09-TR7-IR-1530, CP09-TR7-IR-1540, CP09-TR7-SF-1650, CP09-TR7-SF-1640, CP09-PR-PN-DY-1020 |  |  |  |  | -186.38d | 0d | Cost [1933001]; Large Trees [706] | 1,933,001 |  | PLNT | TR07 | SS | MS#04 | CON | SO |  |
| CP09-TR7-SF-1670 |  | Shrubs | 10d | 2026-07-08 | 2026-07-19 | CP09-TR7-SF-1650, CP09-TR7-SF-1640, CP09-TR7-SF-1660 SS+3d, CP09-TR7-SF-1660 FF+3d, CP09-PR-PN-DY-1060 |  |  |  |  | -186.38d | 0d | Cost [758721]; Shrubs [5056] | 758,721 |  | PLNT | TR07 | SS | MS#04 | CON | SO |  |
| CP09-TR7-SF-1680 |  | Ground Covers | 10d | 2026-07-08 | 2026-07-19 | CP09-TR7-SF-1650, CP09-TR7-SF-1640, CP09-TR7-SF-1660 SS+3d, CP09-TR7-SF-1660 FF+3d, CP09-PR-PN-DY-1070 |  |  |  |  | -186.38d | 0d | Cost [840914]; Ground Covers [41638] | 840,914 |  | PLNT | TR07 | SS | MS#04 | CON | SO |  |
| CP09-TR7-SF-1690 |  | Succulents | 10d | 2026-07-08 | 2026-07-19 | CP09-TR7-SF-1650, CP09-TR7-SF-1640, CP09-TR7-SF-1660 SS+3d, CP09-TR7-SF-1660 FF+3d, CP09-PR-PN-DY-1080 |  |  |  |  | -186.38d | 0d | Cost [363438]; Succulents [1300] | 363,438 |  | PLNT | TR07 | SS | MS#04 | CON | SO |  |
| CP09-TR7-SF-1700 |  | Vines & Climbers | 10d | 2026-07-08 | 2026-07-19 | CP09-TR7-SF-1650, CP09-TR7-SF-1640, CP09-TR7-SF-1660 SS+3d, CP09-TR7-SF-1660 FF+3d, CP09-PR-PN-DY-1030 |  |  |  |  | -186.38d | 0d | Cost [26566.1]; Vines & Climbers [241] | 26,566 |  | PLNT | TR07 | SS | MS#04 | CON | SO |  |
| CP09-TR7-SF-1710 |  | Ornamental grass | 10d | 2026-07-08 | 2026-07-19 | CP09-TR7-SF-1650, CP09-TR7-SF-1640, CP09-TR7-SF-1660 SS+3d, CP09-TR7-SF-1660 FF+3d, CP09-PR-PN-DY-1050 |  |  |  |  | -186.38d | 0d | Cost [502971]; Ornamental grass [13594] | 502,971 |  | PLNT | TR07 | SS | MS#04 | CON | SO |  |
| CP09-TR7-SF-1720 |  | Lawn | 10d | 2026-07-08 | 2026-07-19 | CP09-TR7-SF-1650, CP09-TR7-SF-1640, CP09-TR7-SF-1660 SS+3d, CP09-TR7-SF-1660 FF+3d, CP09-PR-PN-DY-1040 |  |  |  |  | -186.38d | 0d | Cost [83925.4]; Lawn [1476] | 83,925 |  | PLNT | TR07 | SS | MS#04 | CON | SO |  |
|  | 13 | **Terrace # 08** |  | 2024-06-24 | 2026-10-04 |  |  |  |  |  |  |  |  |  |  |  |  |  |  |  |  |  |
|  | 8 | **Swimming Pool-SP07 & Mechnical Room-MR-07** |  | 2024-06-24 | 2026-09-19 |  |  |  |  |  |  |  |  |  |  |  |  |  |  |  |  |  |
|  | 1 | **Structure Works for Swimming Pool** |  | 2024-06-24 | 2026-06-24 |  |  |  |  |  |  |  |  |  |  |  |  |  |  |  |  |  |
| CP09-TR8-SW-2450 |  | Excvation up to Formation Level | 7d | 2024-06-24 A | 2024-07-14 A | CP09-MS-1010, CP09-CLD-1000 | 100% |  | 2024-06-24 | 2024-07-02 |  |  | Cost [106513]; EXCAVATOR [640 h]; LOADER [768 h]; TRUCK [768 h]; Labor [400 h]; Excavation [800 M3] | 106,513.05 | 106,513 |  | TR08 | SP&MR | MS#04 | CON | HD | SP07 |
| CP09-TR8-SW-2460 |  | Plain Concret for For Raft | 5d | 2024-09-04 A | 2025-02-27 A | CP09-TR8-SW-2450, CP09-EN-TR7-A-2490, CP09-PR-CV-DY-1000 SS, CP09-TR7-SW-3020 | 100% |  | 2025-02-17 | 2025-02-23 |  |  | Cost [177522]; Mason [378 h]; Labor [48 h]; Plain Concrete [540 M3] | 177,521.76 | 177,522 |  | TR08 | SP&MR | MS#04 | CON | HD | SP07 |
| CP09-TR8-SW-2470 |  | Water Proofing with screed | 3d | 2024-09-14 A | 2024-09-17 A | CP09-TR8-SW-2460, CP09-EN-TR7-A-2510, CP09-PR-CV-DY-1010 SS, CP09-EN-TR8-A-2880 | 100% |  | 2025-02-27 | 2025-03-04 |  |  | Cost [71008.7]; Mason [77 h]; Labor [48 h]; Waterproofing [540 M2] | 71,008.7 | 71,009 |  | TR08 | SP&MR | MS#04 | CON | HD | SP07 |
| CP09-TR8-SW-2480 |  | Reinforcement concrete for Raft | 10d | 2024-09-18 A | 2024-12-11 A | CP09-TR8-SW-2470, CP09-EN-TR7-A-2490, CP09-EN-TR7-A-2500, CP09-PR-CV-DY-1130, CP09-EN-TR8-A-2870 | 100% |  | 2025-03-09 | 2025-03-24 |  |  | Cost [887609]; Mason [48 h]; Steel Fixer [455 h]; Shutter [48 h]; Labor [48 h]; Reinforced Concrete [130 M3] | 887,608.79 | 887,609 |  | TR08 | SP&MR | MS#04 | CON | HD | SP07 |
| CP09-TR8-SW-2490 |  | Water Proofing for Raft with screed | 3.75d | 2024-12-12 A | 2024-12-15 A | CP09-TR8-SW-2480, CP09-EN-TR7-A-2510, CP09-PR-CV-DY-1010 SS | 100% |  | 2025-05-29 | 2025-06-03 |  |  | Cost [177522]; Mason [450.24 h]; Labor [48 h]; Waterproofing [643 M2] | 177,521.76 | 177,522 |  | TR08 | SP&MR | MS#04 | CON | HD | SP07 |
| CP09-TR8-SW-2500 |  | Reinforcement Concrete for Walls | 21d | 2025-05-18 A | 2025-06-20 A | CP09-TR8-SW-2490 | 100% |  | 2025-05-29 | 2025-07-03 |  |  | Cost [355044]; Mason [78 h]; Steel Fixer [1300 h]; Shutter [104 h]; Labor [48 h]; Reinforced Concrete [26 M3] | 355,043.51 | 355,044 |  | TR08 | SP&MR | MS#04 | CON | HD | SP07 |
| CP09-TR8-SW-2510 |  | External Waterproofing for Walls | 5d | 2026-06-07 | 2026-06-11 | CP09-TR8-SW-2500 |  |  |  |  | -172.19d | 0d | Cost [177522]; Mason [358.4 h]; Labor [48 h]; Waterproofing [512 M2] | 177,522 |  |  | TR08 | SP&MR | MS#04 | CON | HD | SP07 |
| CP09-TR8-SW-2520 |  | Protection Block Works | 5d | 2026-06-13 | 2026-06-17 | CP09-TR8-SW-2510, CP09-PR-CV-DY-1020 SS |  |  |  |  | -172.19d | 0d | Cost [71008.7]; Mason [80 h]; Labor [48 h]; Waterproofing; Blocks [104] | 71,009 |  |  | TR08 | SP&MR | MS#04 | CON | HD | SP07 |
| CP09-TR8-SW-2530 |  | Backfilling | 5.62d | 2026-06-18 | 2026-06-24 | CP09-TR8-SW-2520, CP09-TR8-SW-2680 FF |  |  |  |  | -172.19d | 0d | Cost [71008.7]; Labor [89 h]; Backfilling [148 M3] | 71,009 |  |  | TR08 | SP&MR | MS#04 | CON | HD | SP07 |

| ID | WBS | Activity | Duration | Start | Finish | Predecessors | Complete | Remaining | Planned start | Planned finish | Total float | Free float | Resources | Cost | Actual cost | Swimming Pool | CP09_Terrace-7 | CP09-Trade | CP09_Milestone-7 | CP09_Discipline-7 | DES |
| --- | --- | --- | --- | --- | --- | --- | --- | --- | --- | --- | --- | --- | --- | --- | --- | --- | --- | --- | --- | --- | --- |
|  | 3 | **Finishing Works for Swimming Pool** |  | 2026-06-24 | 2026-07-26 |  |  |  |  |  |  |  |  |  |  |  |  |  |  |  |  |
| CP09-TR8-SW-2540 |  | Mosaics Tiles | 11.25d | 2026-06-24 | 2026-07-07 | CP09-TR8-SW-2520, CP09-TR8-SW-2530, CP09-EN-TR7-A-2520, CP09-PR-CV-DY-1030, CP09-EN-TR8-A-2890 |  |  |  |  | -172.19d | 0d | Cost [710087]; Mason [804 h]; Labor [48 h]; Mosaic [643] | 710,087 |  | SP07 | TR08 | SP&MR | MS#04 | CON | HD |
| CP09-TR8-SW-2550 |  | Granite for Pool Edg | 3.75d | 2026-07-07 | 2026-07-12 | CP09-TR8-SW-2540, CP09-EN-TR7-A-2530, CP09-PR-CV-DY-1040, CP09-EN-TR8-A-2900 |  |  |  |  | -172.19d | 0d | Cost [284035]; Mason [48 h]; Labor [48 h] | 284,035 |  | SP07 | TR08 | SP&MR | MS#04 | CON | HD |
| CP09-TR8-SW-2560 |  | Garnite for Drinage Grate | 3.75d | 2026-07-07 | 2026-07-12 | CP09-TR8-SW-2550 SS, CP09-EN-TR7-A-2530, CP09-EN-TR8-A-2900 |  |  |  |  | -168.44d | 3.75d | Cost [142017]; Mason [48 h]; Labor [48 h] | 142,017 |  | SP07 | TR08 | SP&MR | MS#04 | CON | HD |
| CP09-TR8-SW-2570 |  | Granite for Pool Coping | 3.75d | 2026-07-12 | 2026-07-16 | CP09-TR8-SW-2550, CP09-EN-TR7-A-2530, CP09-EN-TR8-A-2900 |  |  |  |  | -172.19d | 0d | Cost [177522]; Mason [160 h]; Labor [48 h]; Granit-Coping [70] | 177,522 |  | SP07 | TR08 | SP&MR | MS#04 | CON | HD |
| CP09-TR8-SW-2580 |  | Stanless Steel Ladders | 2.81d | 2026-07-16 | 2026-07-20 | CP09-TR8-SW-2540, CP09-TR8-SW-2550, CP09-TR8-SW-2560, CP09-TR8-SW-2570, CP09-EN-TR7-A-2550, CP09-EN-TR7-A-2540, CP09-PR-CV-DY-1050, CP09-EN-TR8-A-2910 |  |  |  |  | -172.19d | 0d | Cost [71008.7]; Labor [4 h]; Stanless Steel Ladders [2] | 71,009 |  | SP07 | TR08 | SP&MR | MS#04 | CON | HD |
| CP09-TR8-SW-2590 |  | Stanless Steel Handrial | 5d | 2026-07-20 | 2026-07-26 | CP09-TR8-SW-2580, CP09-EN-TR7-A-2550, CP09-PR-CV-DY-1060, CP09-EN-TR8-A-2920 |  |  |  |  | -172.19d | 60.75d | Cost [71008.7]; Labor [2 h]; Stanless Steel Handrial [1] | 71,009 |  | SP07 | TR08 | SP&MR | MS#04 | CON | HD |
|  | 4 | **Machine Room_MR07** |  | 2024-06-24 | 2026-09-19 |  |  |  |  |  |  |  |  |  |  |  |  |  |  |  |  |
| CP09-TR8-SW-2600 |  | Excvation up to Formation Level | 3.75d | 2024-06-24 A | 2024-07-06 A | CP09-TR8-SW-2450 SS | 100% |  | 2024-06-24 | 2024-06-27 |  |  | Cost [60173.5]; EXCAVATOR [400 h]; LOADER [480 h]; TRUCK [480 h]; Labor [250 h]; Excavation [500 M3] | 60,173.53 | 60,174 | SP07 | TR08 | SP&MR | MS#04 | CON | HD |
| CP09-TR8-SW-2610 |  | Plain Concret for For Raft | 2.81d | 2024-12-14 A | 2024-12-17 A | CP09-TR8-SW-2600, CP09-EN-TR7-A-2490, CP09-EN-TR8-A-2860 | 100% |  | 2025-03-16 | 2025-03-20 |  |  | Cost [30086.8]; Mason [77 h]; Labor [48 h]; Plain Concrete [110 M3] | 30,086.77 | 30,087 | SP07 | TR08 | SP&MR | MS#04 | CON | HD |
| CP09-TR8-SW-2620 |  | Water Proofing with screed | 1.88d | 2024-12-19 A | 2024-12-24 A | CP09-TR8-SW-2610, CP09-EN-TR7-A-2510, CP09-PR-CV-DY-1010 | 100% |  | 2025-03-22 | 2025-03-25 |  |  | Cost [30086.8]; Mason [77 h]; Labor [48 h]; Waterproofing [110 M2] | 30,086.77 | 30,087 | SP07 | TR08 | SP&MR | MS#04 | CON | HD |
| CP09-TR8-SW-2630 |  | Reinforcement concrete for Raft | 10d | 2025-05-18 A | 2025-10-04 A | CP09-TR8-SW-2620, CP09-EN-TR7-A-2490, CP09-EN-TR7-A-2500, CP09-EN-TR8-A-2870 | 100% |  | 2025-04-06 | 2025-04-17 |  |  | Cost [180521]; Mason [48 h]; Steel Fixer [95 h]; Shutter [48 h]; Labor [48 h]; Reinforced Concrete [27 M3] | 180,520.59 | 180,521 | SP07 | TR08 | SP&MR | MS#04 | CON | HD |
| CP09-TR8-SW-2650 |  | Reinforcement Concrete for Walls & Columns | 15d | 2025-09-30 A | 2025-11-14 A | CP09-TR8-SW-2640 | 100% |  | 2025-10-21 | 2025-11-08 |  |  | Cost [330954]; Mason [105 h]; Steel Fixer [280 h]; Shutter [140 h]; Labor [48 h]; Reinforced Concrete [35 M3] | 330,954.42 | 330,954 | SP07 | TR08 | SP&MR | MS#04 | CON | HD |
| CP09-TR8-SW-2660 |  | Reinforcement Concrete for Slab | 21d | 2025-11-17 A | 2025-11-21 A | CP09-TR8-SW-2650 | 100% |  | 2025-11-23 | 2025-12-16 |  |  | Cost [150434]; Mason [60 h]; Steel Fixer [616 h]; Shutter [80 h]; Labor [48 h]; Reinforced Concrete [20 M3] | 150,433.83 | 150,434 | SP07 | TR08 | SP&MR | MS#04 | CON | HD |
| CP09-TR8-SW-2640 |  | Water Proofing for Raft with screed | 3.75d | 2026-01-12 A | 2026-01-16 A | CP09-TR8-SW-2630 | 100% |  | 2026-01-18 | 2026-01-21 |  |  | Cost [75216.9]; Mason [161 h]; Labor [48 h]; Waterproofing [230 M2] | 75,216.91 | 75,217 | SP07 | TR08 | SP&MR | MS#04 | CON | HD |
| CP09-TR8-SW-2670 |  | External Waterproofing with Protection | 5d | 2026-06-07 | 2026-06-11 | CP09-TR8-SW-2660 |  |  |  |  | -215d | 0d | Cost [270781]; Mason [119 h]; Labor [48 h]; Waterproofing [170 M2] | 270,781 |  | SP07 | TR08 | SP&MR | MS#04 | CON | HD |
| CP09-TR8-SW-2680 |  | Backfilling | 5d | 2026-06-13 | 2026-06-17 | CP09-TR8-SW-2670 |  |  |  |  | -166.56d | 5.62d | Cost [45130.2]; Labor [108 h]; Backfilling [180 M3] | 45,130 |  | SP07 | TR08 | SP&MR | MS#04 | CON | HD |
| CP09-TR8-SW-2770 |  | Plaster for Internal Walls | 6d | 2026-06-13 | 2026-06-18 | CP09-TR8-SW-2670, CP09-EN-TR7-A-2850, CP09-PR-CV-DY-1070 |  |  |  |  | -215d | 4.06d | Cost [45130.2]; Mason [144 h]; Labor [48 h]; Plaster [180] | 45,130 |  | SP07 | TR08 | SP&MR | MS#04 | CON | HD |
| CP09-TR8-SW-2780 |  | Emulsion Paint for Internal Wall | 6d | 2026-07-06 | 2026-07-13 | CP09-TR8-SW-2770, CP09-TR8-SW-2720, CP09-PR-CV-DY-1080 |  |  |  |  | -219.06d | 0d | Cost [30086.8]; Paint [180]; Labor [48 h]; Painter [432 h]; Epoxy for flooring | 30,087 |  | SP07 | TR08 | SP&MR | MS#04 | CON | HD |
| CP09-TR8-SW-2690 |  | Drainage Gravel including Geotextile & Geocomposit | 6d | 2026-07-13 | 2026-07-20 | CP09-TR8-SW-2780, CP09-PR-CV-DY-1090, CP09-PR-CV-DY-1100 |  |  |  |  | -180.06d | 0d | Cost [60173.5]; Drainage Gravel | 60,174 |  | SP07 | TR08 | SP&MR | MS#04 | CON | HD |
| CP09-TR8-SW-2800 |  | Metal Works | 10d | 2026-07-20 | 2026-08-01 | CP09-TR8-SW-2780, CP09-TR8-SW-2690 |  |  |  |  | -180.06d | 39d | Cost [120347]; Metals for MR | 120,347 |  | SP07 | TR08 | SP&MR | MS#04 | CON | HD |
| CP09-TR8-SW-2790 |  | Epoxy for flooring | 3d | 2026-09-15 | 2026-09-19 | CP09-TR8-SW-2780, CP09-TR8-SW-2800, CP09-TR8-SW-2690, CP09-TR8-SW-2710, CP09-TR8-SW-2750, CP09-TR8-SW-2760, CP09-PR-CV-DY-1110 |  |  |  |  | -219.06d | 13.88d | Cost [75216.9]; Mason [48 h]; Labor [48 h]; Epoxy for flooring [3.82] | 75,217 |  | SP07 | TR08 | SP&MR | MS#04 | CON | HD |
|  | 2 | **MEP Works for Swimmimg Pool & Machine Room** |  | 2025-05-18 | 2026-09-15 |  |  |  |  |  |  |  |  |  |  |  |  |  |  |  |  |
|  | 1 | **Mechnical Works** |  | 2025-05-18 | 2026-08-17 |  |  |  |  |  |  |  |  |  |  |  |  |  |  |  |  |
| CP09-TR8-SW-2700 |  | UPVC pipes, fitting, valves, | 15d | 2025-05-18 A | 2026-06-23 | CP09-TR8-SW-2770, CP09-EN-TR7-A-2560, CP09-PR-ME-DY-1000, CP09-PR-ME-DY-1010, CP09-EN-TR8-A-2930 | 40% | 15d | 2025-10-19 | 2025-11-05 | -178d | 16.06d | Cost [710030]; Labor [48 h] | 710,029.67 | 284,012 | SP07 | TR08 | SP&MR | MS#04 | CON | HD |
| CP09-TR8-SW-2710 |  | Mechnical Equipment (Valves, Pumps, Filtters, Controllers ,Dosinng) | 30d | 2026-07-13 | 2026-08-17 | CP09-TR8-SW-2780, CP09-TR8-SW-2700, CP09-EN-TR7-A-2560, CP09-PR-ME-DY-1020, CP09-PR-ME-DY-1030, CP09-PR-ME-DY-1040, CP09-PR-ME-DY-1050, CP09-PR-ME-DY-1060, CP09-PR-ME-DY-1070, CP09-PR-ME-DY-1080 |  |  |  |  | -194.06d | 25d | Cost [2369232]; Labor [48 h] | 2,369,232 |  | SP07 | TR08 | SP&MR | MS#04 | CON | HD |

| ID | WBS | Activity | Duration | Start | Finish | Predecessors | Complete | Planned start | Planned finish | Total float | Free float | Resources | Cost | Actual cost | Swimming Pool | CP09_Terrace-7 | CP09-Trade | CP09_Milestone-7 | CP09_Discipline-7 | DES |
| --- | --- | --- | --- | --- | --- | --- | --- | --- | --- | --- | --- | --- | --- | --- | --- | --- | --- | --- | --- | --- |
|  | 2 | **Electrical Works-SW** |  | 2026-06-24 | 2026-09-15 |  |  |  |  |  |  |  |  |  |  |  |  |  |  |  |
| CP09-TR8-SW-2720 |  | Conduits, Cable tray | 10d | 2026-06-24 | 2026-07-06 | CP09-TR8-SW-2770, CP09-EN-TR7-A-2570, CP09-PR-EL-DY-1000, CP09-PR-EL-DY-1010, CP09-EN-TR8-A-2940 |  |  |  | -219.06d | 0d | Cost [174464]; Labor [48 h] | 174,464 |  | SP07 | TR08 | SP&MR | MS#04 | CON | HD |
| CP09-TR8-SW-2730 |  | Panel boards | 10d | 2026-07-13 | 2026-07-25 | CP09-TR8-SW-2720, CP09-TR8-SW-2780, CP09-EN-TR7-A-2570, CP09-PR-EL-DY-1020 |  |  |  | -219.06d | 0d | Cost [624381]; Labor [48 h] | 624,381 |  | SP07 | TR08 | SP&MR | MS#04 | CON | HD |
| CP09-TR8-SW-2740 |  | Power Cables & Wires | 15d | 2026-07-25 | 2026-08-11 | CP09-TR8-SW-2730, CP09-TR8-SW-2720, CP09-EN-TR7-A-2570, CP09-PR-EL-DY-1030 |  |  |  | -219.06d | 0d | Cost [8133]; Labor [48 h] | 8,133 |  | SP07 | TR08 | SP&MR | MS#04 | CON | HD |
| CP09-TR8-SW-2760 |  | Earthing System | 15d | 2026-07-25 | 2026-08-11 | CP09-TR8-SW-2740 SS, CP09-PR-EL-DY-1040 |  |  |  | -189.06d | 30d | Cost [52517.6]; Labor [48 h] | 52,518 |  | SP07 | TR08 | SP&MR | MS#04 | CON | HD |
| CP09-TR8-SW-2750 |  | (Lighting Outlets , Switches, Fixture ) | 30d | 2026-08-11 | 2026-09-15 | CP09-TR8-SW-2720, CP09-TR8-SW-2740, CP09-TR8-SW-2730, CP09-PR-EL-DY-1050, CP09-PR-EL-DY-1140 |  |  |  | -219.06d | 0d | Cost [572541]; Labor [48 h] | 572,541 |  | SP07 | TR08 | SP&MR | MS#04 | CON | HD |
|  | 5 | **Swimming Pool-SP08 & Mechnical Room-MR-08** |  | 2025-11-03 | 2026-09-20 |  |  |  |  |  |  |  |  |  |  |  |  |  |  |  |
|  | 1 | **Structure Works for Swimming Pool** |  | 2025-11-03 | 2026-06-23 |  |  |  |  |  |  |  |  |  |  |  |  |  |  |  |
| CP09-TR8-SW-2810 |  | Excvation up to Formation Level | 5d | 2025-11-03 A | 2025-11-21 A | CP09-MS-1010, CP09-CLD-1000 | 100% | 2025-11-09 | 2025-11-13 |  |  | Cost [109152]; EXCAVATOR [640 h]; LOADER [768 h]; TRUCK [768 h]; Labor [400 h]; Excavation [800 M3] | 109,151.89 | 109,152 | SP08 | TR08 | SP&MR | MS#04 | CON | HD |
| CP09-TR8-SW-2820 |  | Plain Concret for For Raft | 5d | 2025-11-17 A | 2025-11-28 A | CP09-TR8-SW-2810, CP09-EN-TR7-A-2490, CP09-PR-CV-DY-1000 SS, CP09-EN-TR8-A-2860, CP09-TR8-SW-2660 | 100% | 2025-12-17 | 2025-12-22 |  |  | Cost [181920]; Mason [378 h]; Labor [48 h]; Plain Concrete [540 M3] | 181,919.82 | 181,920 | SP08 | TR08 | SP&MR | MS#04 | CON | HD |
| CP09-TR8-SW-2830 |  | Water Proofing with screed | 5d | 2025-11-24 A | 2025-12-26 A | CP09-TR8-SW-2820, CP09-EN-TR7-A-2510, CP09-PR-CV-DY-1010 SS, CP09-EN-TR8-A-2870 | 100% | 2025-12-23 | 2025-12-28 |  |  | Cost [72767.9]; Mason [77 h]; Labor [48 h]; Waterproofing [540 M2] | 72,767.93 | 72,768 | SP08 | TR08 | SP&MR | MS#04 | CON | HD |
| CP09-TR8-SW-2840 |  | Reinforcement concrete for Raft | 5d | 2025-12-22 A | 2026-01-09 A | CP09-TR8-SW-2830, CP09-EN-TR7-A-2490, CP09-EN-TR7-A-2500, CP09-PR-CV-DY-1130 | 100% | 2026-01-03 | 2026-01-07 |  |  | Cost [909599]; Mason [48 h]; Steel Fixer [455 h]; Shutter [48 h]; Labor [48 h]; Reinforced Concrete [130 M3] | 909,599.1 | 909,599 | SP08 | TR08 | SP&MR | MS#04 | CON | HD |
| CP09-TR8-SW-2860 |  | Reinforcement Concrete for Walls | 5d | 2025-12-25 A | 2026-03-06 A | CP09-TR8-SW-2850 | 100% | 2026-01-08 | 2026-01-13 |  |  | Cost [363840]; Mason [78 h]; Steel Fixer [160 h]; Shutter [104 h]; Labor [48 h]; Reinforced Concrete [26 M3] | 363,839.64 | 363,839.64 | SP08 | TR08 | SP&MR | MS#04 | CON | HD |
| CP09-TR8-SW-2850 |  | Water Proofing for Raft with screed | 5d | 2026-01-05 A | 2026-01-09 A | CP09-TR8-SW-2840, CP09-EN-TR7-A-2510, CP09-PR-CV-DY-1010 SS | 100% | 2026-01-06 | 2026-01-11 |  |  | Cost [181920]; Mason [450.24 h]; Labor [48 h]; Waterproofing [643 M2] | 181,919.82 | 181,920 | SP08 | TR08 | SP&MR | MS#04 | CON | HD |
| CP09-TR8-SW-2870 |  | External Waterproofing for Walls | 5d | 2026-06-07 | 2026-06-11 | CP09-TR8-SW-2860 |  |  |  | -175d | 0d | Cost [181920]; Mason [358.4 h]; Labor [48 h]; Waterproofing [512 M2] | 181,920 |  | SP08 | TR08 | SP&MR | MS#04 | CON | HD |
| CP09-TR8-SW-2880 |  | Protection Block Works | 5d | 2026-06-13 | 2026-06-17 | CP09-TR8-SW-2870, CP09-PR-CV-DY-1020 SS |  |  |  | -175d | 0d | Cost [72767.9]; Mason [80 h]; Labor [48 h]; Waterproofing; Blocks [104] | 72,768 |  | SP08 | TR08 | SP&MR | MS#04 | CON | HD |
| CP09-TR8-SW-2890 |  | Backfilling | 5d | 2026-06-18 | 2026-06-23 | CP09-TR8-SW-2880, CP09-TR8-SW-3040 FF |  |  |  | -175d | 0d | Cost [72767.9]; Labor [89 h]; Backfilling [148 M3] | 72,768 |  | SP08 | TR08 | SP&MR | MS#04 | CON | HD |
|  | 3 | **Finishing Works for Swimming Pool** |  | 2026-06-24 | 2026-07-22 |  |  |  |  |  |  |  |  |  |  |  |  |  |  |  |
| CP09-TR8-SW-2900 |  | Mosaics Tiles | 5d | 2026-06-24 | 2026-06-29 | CP09-TR8-SW-2880, CP09-TR8-SW-2890, CP09-EN-TR7-A-2520, CP09-PR-CV-DY-1030, CP09-EN-TR8-A-2890 |  |  |  | -175d | 0d | Cost [727679]; Mason [144 h]; Labor [48 h]; Mosaic [643] | 727,679 |  | SP08 | TR08 | SP&MR | MS#04 | CON | HD |
| CP09-TR8-SW-2910 |  | Granite for Pool Edg | 5d | 2026-06-30 | 2026-07-05 | CP09-TR8-SW-2900, CP09-EN-TR7-A-2530, CP09-PR-CV-DY-1040, CP09-EN-TR8-A-2900 |  |  |  | -175d | 0d | Cost [291072]; Mason [48 h]; Labor [48 h] | 291,072 |  | SP08 | TR08 | SP&MR | MS#04 | CON | HD |
| CP09-TR8-SW-2920 |  | Garnite for Drinage Grate | 5d | 2026-06-30 | 2026-07-05 | CP09-TR8-SW-2910 SS, CP09-EN-TR7-A-2530, CP09-EN-TR8-A-2900 |  |  |  | -170d | 5d | Cost [145536]; Mason [48 h]; Labor [48 h] | 145,536 |  | SP08 | TR08 | SP&MR | MS#04 | CON | HD |
| CP09-TR8-SW-2930 |  | Granite for Pool Coping | 5d | 2026-07-06 | 2026-07-11 | CP09-TR8-SW-2910, CP09-EN-TR7-A-2530, CP09-EN-TR8-A-2900 |  |  |  | -175d | 0d | Cost [181920]; Mason [160 h]; Labor [48 h]; Granit-Coping [70] | 181,920 |  | SP08 | TR08 | SP&MR | MS#04 | CON | HD |
| CP09-TR8-SW-2940 |  | Stanless Steel Ladders | 5d | 2026-07-12 | 2026-07-16 | CP09-TR8-SW-2900, CP09-TR8-SW-2910, CP09-TR8-SW-2920, CP09-TR8-SW-2930, CP09-EN-TR7-A-2550, CP09-EN-TR7-A-2540, CP09-PR-CV-DY-1050, CP09-EN-TR8-A-2910 |  |  |  | -175d | 0d | Cost [72767.9]; Labor [4 h]; Stanless Steel Ladders [2] | 72,768 |  | SP08 | TR08 | SP&MR | MS#04 | CON | HD |
| CP09-TR8-SW-2950 |  | Stanless Steel Handrial | 5d | 2026-07-18 | 2026-07-22 | CP09-TR8-SW-2940, CP09-EN-TR7-A-2550, CP09-PR-CV-DY-1060, CP09-EN-TR8-A-2920 |  |  |  | -175d | 45.06d | Cost [72767.9]; Labor [2 h]; Stanless Steel Handrial [1] | 72,768 |  | SP08 | TR08 | SP&MR | MS#04 | CON | HD |

| ID | WBS | Activity | Duration | Start | Finish | Predecessors | Complete | Remaining | Planned start | Planned finish | Total float | Free float | Resources | Cost | Actual cost | Swimming Pool | CP09_Terrace-7 | CP09-Trade | CP09_Milestone-7 | CP09_Discipline-7 | DES |
| --- | --- | --- | --- | --- | --- | --- | --- | --- | --- | --- | --- | --- | --- | --- | --- | --- | --- | --- | --- | --- | --- |
|  | 4 | **Machine Room_MR08** |  | 2025-11-03 | 2026-09-20 |  |  |  |  |  |  |  |  |  |  |  |  |  |  |  |  |
| CP09-TR8-SW-2960 |  | Excvation up to Formation Level | 5d | 2025-11-03 A | 2025-12-05 A | CP09-TR8-SW-2810 SS | 100% |  | 2025-11-09 | 2025-11-13 |  |  | Cost [60173.5]; EXCAVATOR [400 h]; LOADER [480 h]; TRUCK [480 h]; Labor [250 h]; Excavation [500 M3] | 60,173.53 | 60,174 | SP08 | TR08 | SP&MR | MS#04 | CON | HD |
| CP09-TR8-SW-2970 |  | Plain Concret for For Raft | 5d | 2025-12-01 A | 2025-12-05 A | CP09-TR8-SW-2960, CP09-EN-TR7-A-2490, CP09-EN-TR8-A-2860 | 100% |  | 2025-12-13 | 2025-12-17 |  |  | Cost [30086.8]; Mason [77 h]; Labor [48 h]; Plain Concrete [110 M3] | 30,086.77 | 30,087 | SP08 | TR08 | SP&MR | MS#04 | CON | HD |
| CP09-TR8-SW-2980 |  | Water Proofing with screed | 5d | 2026-01-05 A | 2026-01-09 A | CP09-TR8-SW-2970, CP09-EN-TR7-A-2510, CP09-PR-CV-DY-1010 | 100% |  | 2025-12-31 | 2026-01-05 |  |  | Cost [30086.8]; Mason [77 h]; Labor [48 h]; Waterproofing [110 M2] | 30,086.77 | 30,087 | SP08 | TR08 | SP&MR | MS#04 | CON | HD |
| CP09-TR8-SW-2990 |  | Reinforcement concrete for Raft | 5d | 2026-01-05 A | 2026-01-09 A | CP09-TR8-SW-2980, CP09-EN-TR7-A-2490, CP09-EN-TR7-A-2500, CP09-EN-TR8-A-2870 | 100% |  | 2026-01-06 | 2026-01-11 |  |  | Cost [180521]; Mason [48 h]; Steel Fixer [95 h]; Shutter [48 h]; Labor [48 h]; Reinforced Concrete [27 M3] | 180,520.59 | 180,521 | SP08 | TR08 | SP&MR | MS#04 | CON | HD |
| CP09-TR8-SW-3000 |  | Water Proofing for Raft with screed | 5d | 2026-01-05 A | 2026-01-09 A | CP09-TR8-SW-2990 | 100% |  | 2026-01-12 | 2026-01-17 |  |  | Cost [75216.9]; Mason [161 h]; Labor [48 h]; Waterproofing [230 M2] | 75,216.91 | 75,217 | SP08 | TR08 | SP&MR | MS#04 | CON | HD |
| CP09-TR8-SW-3010 |  | Reinforcement Concrete for Walls & Columns | 5d | 2026-01-05 A | 2026-02-06 A | CP09-TR8-SW-3000 | 100% |  | 2026-01-18 | 2026-01-22 |  |  | Cost [330954]; Mason [105 h]; Steel Fixer [280 h]; Shutter [140 h]; Labor [48 h]; Reinforced Concrete [35 M3] | 330,954.42 | 297,858.6 | SP08 | TR08 | SP&MR | MS#04 | CON | HD |
| CP09-TR8-SW-3020 |  | Reinforcement Concrete for Slab | 5d | 2026-02-02 A | 2026-02-06 A | CP09-TR8-SW-3010 | 100% |  | 2026-02-05 | 2026-02-10 |  |  | Cost [150434]; Mason [60 h]; Steel Fixer [160 h]; Shutter [80 h]; Labor [48 h]; Reinforced Concrete [20 M3] | 150,434 |  | SP08 | TR08 | SP&MR | MS#04 | CON | HD |
| CP09-TR8-SW-3030 |  | External Waterproofing with Protection | 5d | 2026-06-07 | 2026-06-11 | CP09-TR8-SW-3020 |  |  |  |  | -215d | 0d | Cost [270781]; Mason [119 h]; Labor [48 h]; Waterproofing [170 M2] | 270,781 |  | SP08 | TR08 | SP&MR | MS#04 | CON | HD |
| CP09-TR8-SW-3040 |  | Backfilling | 5d | 2026-06-13 | 2026-06-17 | CP09-TR8-SW-3030 |  |  |  |  | -170d | 5d | Cost [45130.2]; Labor [108 h]; Backfilling [180 M3] | 45,130 |  | SP08 | TR08 | SP&MR | MS#04 | CON | HD |
| CP09-TR8-SW-3130 |  | Plaster for Internal Walls | 5d | 2026-06-13 | 2026-06-17 | CP09-TR8-SW-3030, CP09-EN-TR7-A-2850, CP09-PR-CV-DY-1070, CP09-EN-TR8-A-3220 |  |  |  |  | -215d | 5.06d | Cost [45130.2]; Mason [144 h]; Labor [48 h]; Plaster [180] | 45,130 |  | SP08 | TR08 | SP&MR | MS#04 | CON | HD |
| CP09-TR8-SW-3140 |  | Emulsion Paint for Internal Wall | 5d | 2026-07-06 | 2026-07-12 | CP09-TR8-SW-3130, CP09-TR8-SW-3080, CP09-PR-CV-DY-1080 |  |  |  |  | -220.06d | 0d | Cost [30086.8]; Paint [180]; Labor [48 h]; Painter [160 h]; Epoxy for flooring | 30,087 |  | SP08 | TR08 | SP&MR | MS#04 | CON | HD |
| CP09-TR8-SW-3050 |  | Drainage Gravel including Geotextile & Geocomposit | 5d | 2026-07-12 | 2026-07-18 | CP09-TR8-SW-3140, CP09-PR-CV-DY-1090, CP09-PR-CV-DY-1100 |  |  |  |  | -170.06d | 50d | Cost [60173.5]; Drainage Gravel | 60,174 |  | SP08 | TR08 | SP&MR | MS#04 | CON | HD |
| CP09-TR8-SW-3160 |  | Metal Works | 5d | 2026-07-12 | 2026-07-18 | CP09-TR8-SW-3140 |  |  |  |  | -170.06d | 50d | Cost [120347]; Metals for MR | 120,347 |  | SP08 | TR08 | SP&MR | MS#04 | CON | HD |
| CP09-TR8-SW-3150 |  | Epoxy for flooring | 5d | 2026-09-14 | 2026-09-20 | CP09-TR8-SW-3140, CP09-TR8-SW-3160, CP09-TR8-SW-3050, CP09-TR8-SW-3070, CP09-TR8-SW-3110, CP09-TR8-SW-3120, CP09-PR-CV-DY-1110, CP09-TR8-SW-2950 |  |  |  |  | -220.06d | 12.88d | Cost [75216.9]; Mason [48 h]; Labor [48 h]; Epoxy for flooring [3.82] | 75,217 |  | SP08 | TR08 | SP&MR | MS#04 | CON | HD |
|  | 2 | **MEP Works for Swimmimg Pool & Machine Room** |  | 2025-12-22 | 2026-09-14 |  |  |  |  |  |  |  |  |  |  |  |  |  |  |  |  |
|  | 1 | **Mechnical Works** |  | 2025-12-22 | 2026-08-16 |  |  |  |  |  |  |  |  |  |  |  |  |  |  |  |  |
| CP09-TR8-SW-3060 |  | UPVC pipes, fitting, valves, | 15d | 2025-12-22 A | 2026-06-23 | CP09-TR8-SW-3130, CP09-EN-TR7-A-2560, CP09-PR-ME-DY-1000, CP09-PR-ME-DY-1010, CP09-EN-TR8-A-2930 | 40% | 15d | 2026-02-07 | 2026-02-23 | -180d | 15.06d | Cost [710030]; Labor [48 h] | 710,029.67 | 248,510.5 | SP08 | TR08 | SP&MR | MS#04 | CON | HD |
| CP09-TR8-SW-3070 |  | Mechnical Equipment (Valves, Pumps, Filtters, Controllers ,Dosinng,& Ventilation exahust fan) | 30d | 2026-07-12 | 2026-08-16 | CP09-TR8-SW-3140, CP09-TR8-SW-3060, CP09-EN-TR7-A-2560, CP09-PR-ME-DY-1020, CP09-PR-ME-DY-1030, CP09-PR-ME-DY-1040, CP09-PR-ME-DY-1050, CP09-PR-ME-DY-1060, CP09-PR-ME-DY-1070, CP09-PR-ME-DY-1080 |  |  |  |  | -195.06d | 25d | Cost [2369232]; Labor [48 h] | 2,369,232 |  | SP08 | TR08 | SP&MR | MS#04 | CON | HD |
|  | 2 | **Electrical Works-SW** |  | 2026-06-24 | 2026-09-14 |  |  |  |  |  |  |  |  |  |  |  |  |  |  |  |  |
| CP09-TR8-SW-3080 |  | Conduits, Cable tray | 10d | 2026-06-24 | 2026-07-06 | CP09-TR8-SW-3130, CP09-EN-TR7-A-2570, CP09-PR-EL-DY-1000, CP09-PR-EL-DY-1010, CP09-EN-TR8-A-2940 |  |  |  |  | -220.06d | 0d | Cost [174464]; Labor [48 h] | 174,464 |  | SP08 | TR08 | SP&MR | MS#04 | CON | HD |
| CP09-TR8-SW-3090 |  | Panel boards | 10d | 2026-07-12 | 2026-07-23 | CP09-TR8-SW-3080, CP09-TR8-SW-3140, CP09-EN-TR7-A-2570, CP09-PR-EL-DY-1020 |  |  |  |  | -220.06d | 0d | Cost [624381]; Labor [48 h] | 624,381 |  | SP08 | TR08 | SP&MR | MS#04 | CON | HD |
| CP09-TR8-SW-3100 |  | Power Cables & Wires | 15d | 2026-07-23 | 2026-08-10 | CP09-TR8-SW-3090, CP09-TR8-SW-3080, CP09-EN-TR7-A-2570, CP09-PR-EL-DY-1030 |  |  |  |  | -220.06d | 0d | Cost [8133]; Labor [48 h] | 8,133 |  | SP08 | TR08 | SP&MR | MS#04 | CON | HD |
| CP09-TR8-SW-3120 |  | Earthing System | 15d | 2026-07-23 | 2026-08-10 | CP09-TR8-SW-3100 SS, CP09-PR-EL-DY-1040 |  |  |  |  | -190.06d | 30d | Cost [52517.6]; Labor [48 h] | 52,518 |  | SP08 | TR08 | SP&MR | MS#04 | CON | HD |
| CP09-TR8-SW-3110 |  | (Lighting Outlets , Switches, Fixture ) | 30d | 2026-08-10 | 2026-09-14 | CP09-TR8-SW-3080, CP09-TR8-SW-3100, CP09-TR8-SW-3090, CP09-PR-EL-DY-1050, CP09-PR-EL-DY-1140 |  |  |  |  | -220.06d | 0d | Cost [572541]; Labor [48 h] | 572,541 |  | SP08 | TR08 | SP&MR | MS#04 | CON | HD |

| ID | WBS | Activity | Duration | Start | Finish | Predecessors | Complete | Remaining | Planned start | Planned finish | Total float | Free float | Resources | Cost | CP09_Terrace-7 | CP09-Trade | CP09_Milestone-7 | CP09_Discipline-7 | DES | Walls |
| --- | --- | --- | --- | --- | --- | --- | --- | --- | --- | --- | --- | --- | --- | --- | --- | --- | --- | --- | --- | --- |
|  | 6 | **Earth Work** |  | 2026-06-07 | 2026-06-29 |  |  |  |  |  |  |  |  |  |  |  |  |  |  |  |
|  | 1 | **Grading works** |  | 2026-06-07 | 2026-06-29 |  |  |  |  |  |  |  |  |  |  |  |  |  |  |  |
| CP09-TR8-EW-1120 |  | Excavation work to Reduce Level | 15d | 2026-06-07 | 2026-06-23 | CP09-TR8-SW-2600, CP09-CLD-1000, CP09-TR8-SW-2960, CP09-EN-TR8-A-2950 |  |  |  |  | -236.12d | 0d | Cost; EXCAVATOR; LOADER; TRUCK; Labor [48 h]; Excavation |  | TR08 | E-W | MS#04 | CON | HD |  |
| CP09-TR8-EW-1130 |  | Filling works to make up levels with Compacting | 15d | 2026-06-11 | 2026-06-29 | CP09-TR8-SW-2600, CP09-TR8-EW-1120 SS+4.69d, CP09-EN-TR7-A-2580, CP09-TR8-SW-2960, CP09-EN-TR8-A-2950 |  |  |  |  | -236.12d | 0d | Cost; Labor [48 h]; Filling |  | TR08 | E-W | MS#04 | CON | HD |  |
|  | 2 | **Planting** |  | 2026-06-11 | 2026-06-29 |  |  |  |  |  |  |  |  |  |  |  |  |  |  |  |
| CP09-TR8-EW-1140 |  | Excavation works for Planting Beds | 15d | 2026-06-11 | 2026-06-29 | CP09-TR8-EW-1120 SS, CP09-TR8-EW-1130 SS, CP09-EN-TR7-A-2580, CP09-EN-TR8-A-2950 |  |  |  |  | -236.12d | 0d | Cost [915350]; EXCAVATOR [4544 h]; LOADER [5456 h]; TRUCK [5456 h]; Labor [480 h]; Excavation [5681.88 M3] | 915,350 | TR08 | E-W | MS#04 | CON | HD |  |
|  | 9 | **Retaining & Cheek Walls** |  | 2026-05-04 | 2026-07-28 |  |  |  |  |  |  |  |  |  |  |  |  |  |  |  |
|  | 1 | **Soild Block Work Cheek Walls** |  | 2026-05-04 | 2026-07-28 |  |  |  |  |  |  |  |  |  |  |  |  |  |  |  |
| CP09-TR8-RW-1890 |  | Plaing Concrete with HPDE | 4.69d | 2026-05-04 A | 2026-06-14 | CP09-TR8-RW-1940 SS+2.81d, CP09-TR8-RW-1940 FF+2.81d, CP09-EN-TR7-A-2590, CP09-EN-TR8-A-2960 | 50% | 4.69d | 2026-02-25 | 2026-03-03 | -218d | 0d | Cost [25885]; Mason [27 h]; Labor [48 h]; Plain Concrete [38.81 M3]; HDPE | 25,885 | TR08 | RE&CW | MS#04 | CON | HD | CHW |
| CP09-TR8-RW-1900 |  | Reinforced Concrete for Footing | 6.56d | 2026-05-04 A | 2026-06-17 | CP09-TR8-RW-1890 SS+2.81d, CP09-TR8-RW-1890 FF+2.81d, CP09-EN-TR7-A-2600, CP09-EN-TR7-A-2590, CP09-EN-TR8-A-2970 | 50% | 6.56d | 2026-03-01 | 2026-03-08 | -218d | 0d | Cost [194137]; Mason [48 h]; Steel Fixer [45 h]; Shutter [48 h]; Labor [48 h]; Reinforced Concrete [12.94 M3] | 194,137 | TR08 | RE&CW | MS#04 | CON | HD | CHW |
| CP09-TR8-RW-1910 |  | Reinforced Concrete for Tie beam | 4.69d | 2026-05-04 A | 2026-06-21 | CP09-TR8-RW-1900 SS+2.81d, CP09-TR8-RW-1900 FF+2.81d | 50% | 4.69d | 2026-03-07 | 2026-03-11 | -218d | 0d | Cost [32356.2]; Mason [48 h]; Steel Fixer [48 h]; Shutter [48 h]; Labor [48 h]; Reinforced Concrete | 32,356 | TR08 | RE&CW | MS#04 | CON | HD | CHW |
| CP09-TR8-RW-1920 |  | Reinforced Concrete for Column | 5.62d | 2026-05-04 A | 2026-06-23 | CP09-TR8-RW-1910 SS+2.81d, CP09-TR8-RW-1910 FF+2.81d | 50% | 5.62d | 2026-03-09 | 2026-03-16 | -218d | 0d | Cost [32356.2]; Mason [48 h]; Steel Fixer [48 h]; Shutter [48 h]; Labor [48 h]; Reinforced Concrete | 32,356 | TR08 | RE&CW | MS#04 | CON | HD | CHW |
| CP09-TR8-RW-1930 |  | Soild Block Work | 5.62d | 2026-05-04 A | 2026-06-30 | CP09-TR8-RW-1920 SS+5.62d, CP09-TR8-RW-1920 FF+5.62d, CP09-EN-TR7-A-2620, CP09-PR-CV-DY-1020, CP09-EN-TR8-A-2990 | 50% | 5.62d | 2026-06-09 | 2026-06-16 | -218d | 0d | Cost [64712.5]; Mason [38 h]; Labor [48 h]; Blocks [10.35] | 64,712 | TR08 | RE&CW | MS#04 | CON | HD | CHW |
| CP09-TR8-RW-1940 |  | Excavation | 3.75d | 2026-05-04 A | 2026-06-10 | CP09-TR8-EW-1120, CP09-TR8-EW-1130 | 50% | 3.75d | 2026-05-23 | 2026-05-27 | -218d | 0d | Cost [19413.7]; EXCAVATOR [48 h]; LOADER [56 h]; TRUCK [56 h]; Labor [31 h]; Excavation [60.55 M3] | 19,414 | TR08 | RE&CW | MS#04 | CON | HD | CHW |
| CP09-TR8-RW-1950 |  | Reinforced Concrete for Beam | 7.5d | 2026-05-04 A | 2026-07-05 | CP09-TR8-RW-1930 SS+3.75d, CP09-TR8-RW-1930 FF+3.75d | 50% | 7.5d | 2026-06-14 | 2026-06-22 | -218d | 0d | Cost [64712.5]; Mason [12 h]; Steel Fixer [207 h]; Shutter [17 h]; Labor [48 h]; Reinforced Concrete [4.14 M3] | 64,712 | TR08 | RE&CW | MS#04 | CON | HD | CHW |
| CP09-TR8-RW-1960 |  | Waterproofing & Protection | 6.56d | 2026-05-04 A | 2026-07-13 | CP09-TR8-RW-1950 SS+7.5d, CP09-TR8-RW-1950 FF+7.5d, CP09-EN-TR7-A-2610, CP09-EN-TR8-A-2980 | 50% | 6.56d | 2026-06-23 | 2026-07-01 | -218d | 0d | Cost [25885]; Mason [10.08 h]; Labor [48 h]; Waterproofing [14.49 M2] | 25,885 | TR08 | RE&CW | MS#04 | CON | HD | CHW |
| CP09-TR8-RW-1970 |  | Backfilling | 5.62d | 2026-05-04 A | 2026-07-16 | CP09-TR8-RW-1960 SS+2.81d, CP09-TR8-RW-1960 FF+2.81d | 50% | 5.62d | 2026-06-28 | 2026-07-05 | -218d | 0d | Cost [25885]; Labor [96 h]; Backfilling [41.14 M3] | 25,885 | TR08 | RE&CW | MS#04 | CON | HD | CHW |
| CP09-TR8-RW-1980 |  | Marble Cladding | 6.56d | 2026-07-15 | 2026-07-23 | CP09-TR8-RW-1970 SS+5.62d, CP09-TR8-RW-1970 FF+5.62d, CP09-EN-TR7-A-2630, CP09-PR-CV-DY-1120, CP09-EN-TR8-A-3000 |  |  |  |  | -218d | 0d | Cost [129425]; Mason [88 h]; Labor [48 h]; Marble [31.05] | 129,425 | TR08 | RE&CW | MS#04 | CON | HD | CHW |
| CP09-TR8-RW-1990 |  | Marble Copping | 6.56d | 2026-07-21 | 2026-07-28 | CP09-TR8-RW-1980 SS+4.69d, CP09-TR8-RW-1980 FF+4.69d, CP09-EN-TR7-A-2630, CP09-PR-CV-DY-1120, CP09-EN-TR8-A-3000 |  |  |  |  | -218d | 0d | Cost [32356.2]; Mason [160 h]; Labor [48 h]; Marble Coping [25.88] | 32,356 | TR08 | RE&CW | MS#04 | CON | HD | CHW |
|  | 2 | **Solid Block Retaining Walls** |  | 2026-05-04 | 2026-07-28 |  |  |  |  |  |  |  |  |  |  |  |  |  |  |  |
| CP09-TR8-RW-2000 |  | Plaing Concrete with HPDE | 5d | 2026-05-04 A | 2026-06-14 | CP09-TR8-RW-2050 SS+2.81d, CP09-TR8-RW-2050 FF+2.81d, CP09-EN-TR7-A-2590, CP09-EN-TR8-A-2960 | 50% | 5d | 2026-03-11 | 2026-03-17 | -217.06d | 0d | Cost [7990.96]; Mason [27 h]; Labor [48 h]; Plain Concrete [38.81 M3]; HDPE | 7,991 | TR08 | RE&CW | MS#04 | CON | HD | RW |
| CP09-TR8-RW-2010 |  | Reinforced Concrete for Footing | 6.56d | 2026-05-04 A | 2026-06-17 | CP09-TR8-RW-2000 SS+2.81d, CP09-TR8-RW-2000 FF+2.81d, CP09-EN-TR7-A-2590, CP09-EN-TR7-A-2600, CP09-EN-TR8-A-2970 | 50% | 6.56d | 2026-03-15 | 2026-03-23 | -217.06d | 0d | Cost [59932.2]; Mason [48 h]; Steel Fixer [45 h]; Shutter [48 h]; Labor [48 h]; Reinforced Concrete [12.94 M3] | 59,932 | TR08 | RE&CW | MS#04 | CON | HD | RW |
| CP09-TR8-RW-2020 |  | Reinforced Concrete for Tie beam | 5d | 2026-05-04 A | 2026-06-21 | CP09-TR8-RW-2010 SS+2.81d, CP09-TR8-RW-2010 FF+2.81d | 50% | 5d | 2026-03-19 | 2026-03-25 | -217.06d | 0d | Cost [9988.7]; Mason [48 h]; Steel Fixer [48 h]; Shutter [48 h]; Labor [48 h]; Reinforced Concrete | 9,989 | TR08 | RE&CW | MS#04 | CON | HD | RW |
| CP09-TR8-RW-2030 |  | Reinforced Concrete for Column | 5.62d | 2026-05-04 A | 2026-06-23 | CP09-TR8-RW-2020 SS+2.81d, CP09-TR8-RW-2020 FF+2.81d | 50% | 5.62d | 2026-03-23 | 2026-03-30 | -217.06d | 0d | Cost [9988.7]; Mason [48 h]; Steel Fixer [48 h]; Shutter [48 h]; Labor [48 h]; Reinforced Concrete | 9,989 | TR08 | RE&CW | MS#04 | CON | HD | RW |
| CP09-TR8-RW-2040 |  | Soild Block Work | 5.62d | 2026-05-04 A | 2026-06-30 | CP09-TR8-RW-2030 SS+5.62d, CP09-TR8-RW-2030 FF+5.62d, CP09-EN-TR7-A-2620, CP09-EN-TR8-A-2990 | 50% | 5.62d | 2026-06-21 | 2026-06-27 | -217.06d | 0d | Cost [19977.4]; Mason [38 h]; Labor [48 h]; Blocks [10.35] | 19,977 | TR08 | RE&CW | MS#04 | CON | HD | RW |
| CP09-TR8-RW-2050 |  | Excavation | 3.75d | 2026-05-04 A | 2026-06-10 | CP09-TR8-EW-1120, CP09-TR8-EW-1130, CP09-TR8-RW-1900 | 50% | 3.75d | 2026-06-03 | 2026-06-07 | -217.06d | 0d | Cost [5993.22]; EXCAVATOR [48 h]; LOADER [56 h]; TRUCK [56 h]; Labor [31 h]; Excavation [60.55 M3] | 5,993 | TR08 | RE&CW | MS#04 | CON | HD | RW |
| CP09-TR8-RW-2060 |  | Reinforced Concrete for Beam | 7.5d | 2026-05-04 A | 2026-07-05 | CP09-TR8-RW-2040 SS+3.75d, CP09-TR8-RW-2040 FF+3.75d | 50% | 7.5d | 2026-06-24 | 2026-07-04 | -217.06d | 0d | Cost [19977.4]; Mason [12 h]; Steel Fixer [207 h]; Shutter [17 h]; Labor [48 h]; Reinforced Concrete [4.14 M3] | 19,977 | TR08 | RE&CW | MS#04 | CON | HD | RW |
| CP09-TR8-RW-2070 |  | Waterproofing & Protection | 6.56d | 2026-05-04 A | 2026-07-13 | CP09-TR8-RW-2060 SS+7.5d, CP09-TR8-RW-2060 FF+7.5d, CP09-EN-TR8-A-2980 | 50% | 6.56d | 2026-07-05 | 2026-07-12 | -217.06d | 0d | Cost [7990.96]; Mason [10.08 h]; Labor [48 h]; Waterproofing [14.49 M2] | 7,991 | TR08 | RE&CW | MS#04 | CON | HD | RW |
| CP09-TR8-RW-2080 |  | Backfilling | 5.62d | 2026-05-04 A | 2026-07-16 | CP09-TR8-RW-2070 SS+2.81d, CP09-TR8-RW-2070 FF+2.81d | 50% | 5.62d | 2026-07-09 | 2026-07-15 | -217.06d | 0d | Cost [7990.96]; Labor [96 h]; Backfilling [41.14 M3] | 7,991 | TR08 | RE&CW | MS#04 | CON | HD | RW |
| CP09-TR8-RW-2090 |  | Marble Cladding | 6.56d | 2026-07-14 | 2026-07-22 | CP09-TR8-RW-2080 SS+4.69d, CP09-TR8-RW-2080 FF+4.69d, CP09-EN-TR7-A-2630, CP09-PR-CV-DY-1120, CP09-EN-TR8-A-3000 |  |  |  |  | -217.06d | 0d | Cost [39954.8]; Mason [88 h]; Labor [48 h]; Marble [31.05] | 39,955 | TR08 | RE&CW | MS#04 | CON | HD | RW |
| CP09-TR8-RW-2100 |  | Marble Copping | 6.56d | 2026-07-20 | 2026-07-28 | CP09-TR8-RW-2090 SS+4.69d, CP09-TR8-RW-2090 FF+4.69d, CP09-EN-TR7-A-2630, CP09-PR-CV-DY-1120, CP09-EN-TR8-A-3000 |  |  |  |  | -217.06d | 0d | Cost [9988.7]; Mason [160 h]; Labor [48 h]; Marble Coping [25.88] | 9,989 | TR08 | RE&CW | MS#04 | CON | HD | RW |

| ID | WBS | Activity | Duration | Start | Finish | Predecessors | Complete | Remaining | Planned start | Planned finish | Total float | Free float | Resources | Cost | Actual cost | Networks | CP09_Terrace-7 | CP09-Trade | CP09_Milestone-7 | CP09_Discipline-7 | DES | Hardscape |
| --- | --- | --- | --- | --- | --- | --- | --- | --- | --- | --- | --- | --- | --- | --- | --- | --- | --- | --- | --- | --- | --- | --- |
|  | 1 | **Irrigation Works** |  | 2026-01-12 | 2026-07-15 |  |  |  |  |  |  |  |  |  |  |  |  |  |  |  |  |  |
|  | 1 | **Sub-Main & Lateral** |  | 2026-01-12 | 2026-06-21 |  |  |  |  |  |  |  |  |  |  |  |  |  |  |  |  |  |
| CP09-TR8-IR-1440 |  | Excavation for Sub-main & Lateral Pieps | 4d | 2026-01-12 A | 2026-06-10 | CP09-EN-TR7-A-2820, CP09-TR8-HD-4810, CP09-TR4-IR-1140, CP09-EN-TR8-A-3190, CP09-EN-TR8-A-3200 | 60% | 4d | 2026-03-12 | 2026-03-17 | -226.44d | 0d | Cost [484535]; EXCAVATOR [4784 h]; LOADER [5744 h]; TRUCK [5744 h]; Excavation [7977.8 M3] | 484,535.36 | 145,360.5 | IRR | TR08 | IRR-W | MS#04 | CON | SO |  |
| CP09-TR8-IR-1450 |  | Sub-main & Lateral Pieps laying out and installation | 5d | 2026-01-12 A | 2026-06-16 | CP09-TR8-IR-1440 SS+2d, CP09-TR8-IR-1440 FF+5d, CP09-PR-IR-DY-1000 | 60% | 5d | 2026-03-17 | 2026-03-23 | -226.44d | 0d | Cost [872164]; PipeFitter [280 h]; Labor [48 h]; UPVC Pipes [7977.8 M] | 872,163.65 | 261,649.2 | IRR | TR08 | IRR-W | MS#04 | CON | SO |  |
| CP09-TR8-IR-1460 |  | Sub-main & Lateral Pieps Testing | 3d | 2026-01-12 A | 2026-06-18 | CP09-TR8-IR-1450 SS+2d, CP09-TR8-IR-1450 FF+2d | 60% | 3d | 2026-03-22 | 2026-03-25 | -226.44d | 0d | Cost [96907.1] | 96,907.07 | 29,072.1 | IRR | TR08 | IRR-W | MS#04 | CON | SO |  |
| CP09-TR8-IR-1470 |  | Backfilling forSub-main & Lateral Pieps | 4d | 2026-01-12 A | 2026-06-21 | CP09-TR8-IR-1460 SS+2d, CP09-TR8-IR-1460 FF+2d | 60% | 4d | 2026-03-24 | 2026-03-29 | -226.44d | 6.69d | Cost [484535]; Labor [96 h]; Backfilling [7977.8 M3] | 484,535.36 | 145,360.5 | IRR | TR08 | IRR-W | MS#04 | CON | SO |  |
|  | 2 | **Fittings & Accessories** |  | 2026-06-30 | 2026-07-15 |  |  |  |  |  |  |  |  |  |  |  |  |  |  |  |  |  |
| CP09-TR8-IR-1480 |  | Installation of Dripline | 12d | 2026-06-30 | 2026-07-13 | CP09-PR-IR-DY-1010, CP09-TR8-SF-1640, CP09-TR8-SF-1650 SS+2d, CP09-TR8-IR-1460 |  |  |  |  | -189.38d | 0d | Cost [789420]; Labor [280 h]; Dripline [29500 Nos_] | 789,420 |  | IRR | TR08 | IRR-W | MS#04 | CON | SO |  |
| CP09-TR8-IR-1490 |  | Installation of Sprinklers | 12d | 2026-06-30 | 2026-07-13 | CP09-TR8-IR-1480 SS, CP09-PR-IR-DY-1040 |  |  |  |  | -189.38d | 0d | Cost [57038.3]; Labor [48 h]; Sprinkle [84.1 Nos_] | 57,038 |  | IRR | TR08 | IRR-W | MS#04 | CON | SO |  |
| CP09-TR8-IR-1500 |  | Installation Valves & Rings | 7d | 2026-06-30 | 2026-07-07 | CP09-TR8-IR-1490 SS, CP09-PR-IR-DY-1030, CP09-PR-IR-DY-1020 |  |  |  |  | -189.38d | 0d | Cost [208328]; Valves [715.1]; Labor [48 h] | 208,328 |  | IRR | TR08 | IRR-W | MS#04 | CON | SO |  |
| CP09-TR8-IR-1510 |  | Installation of Electrical solenoid valve | 7d | 2026-06-30 | 2026-07-07 | CP09-TR8-IR-1500 SS, CP09-PR-IR-DY-1050 |  |  |  |  | -182.38d | 7d | Cost [439801]; Solenoid valve [22.4]; Labor [48 h] | 439,801 |  | IRR | TR08 | IRR-W | MS#04 | CON | SO |  |
| CP09-TR8-IR-1520 |  | Installation of Controller (decoder system plastic pedestal) | 7d | 2026-07-08 | 2026-07-15 | CP09-TR8-IR-1500, CP09-TR8-IR-1510 SS, CP09-PR-IR-DY-1060 |  |  |  |  | -189.38d | 0d | Cost [262719]; Controller [1]; Labor [48 h] | 262,719 |  | IRR | TR08 | IRR-W | MS#04 | CON | SO |  |
| CP09-TR8-IR-1530 |  | Installation of Controller decoder cables | 7d | 2026-07-08 | 2026-07-15 | CP09-TR8-IR-1520 SS, CP09-PR-IR-DY-1070 |  |  |  |  | -189.38d | 0d | Cost [198024]; Controller Cable [1850]; Labor [48 h] | 198,024 |  | IRR | TR08 | IRR-W | MS#04 | CON | SO |  |
| CP09-TR8-IR-1540 |  | Installation of Decoder one station | 5d | 2026-07-08 | 2026-07-13 | CP09-TR8-IR-1530 SS, CP09-PR-IR-DY-1080 |  |  |  |  | -187.38d | 2d | Cost [212404]; Decoder station [28.4]; Labor [48 h] | 212,404 |  | IRR | TR08 | IRR-W | MS#04 | CON | SO |  |
|  | 4 | **Electrical Works** |  | 2026-06-29 | 2026-08-23 |  |  |  |  |  |  |  |  |  |  |  |  |  |  |  |  |  |
|  | 1 | **Power Cable & Pillars** |  | 2026-06-29 | 2026-08-23 |  |  |  |  |  |  |  |  |  |  |  |  |  |  |  |  |  |
| CP09-TR8-EL-1160 |  | Excavation | 5d | 2026-06-29 | 2026-07-05 | CP09-TR8-EW-1120, CP09-TR8-EW-1130, CP09-TR8-IR-1470, CP09-EN-TR7-A-2780, CP09-TR4-EL-1060, CP09-EN-TR8-A-3150 |  |  |  |  | -233.12d | 0d | Cost [374565]; EXCAVATOR [3344 h]; LOADER [4016 h]; TRUCK [4016 h]; Excavation [6974.38 M3] | 374,565 |  | ELEC | TR08 | EL-W | MS#04 | CON | HD |  |
| CP09-TR8-EL-1170 |  | Installation of Power Cables | 4d | 2026-07-02 | 2026-07-07 | CP09-TR8-EL-1160 SS+2d, CP09-TR8-EL-1160 FF+2d, CP09-EN-TR7-A-2780, CP09-EN-TR7-A-2790, CP09-PR-EL-DY-1060 |  |  |  |  | -233.12d | 0d | Cost [898956]; Electrical Cable [6974.38]; Electrican [280 h]; Labor [48 h] | 898,956 |  | ELEC | TR08 | EL-W | MS#04 | CON | HD |  |
| CP09-TR8-EL-1180 |  | Backfilling for Power Cables | 4d | 2026-07-05 | 2026-07-09 | CP09-TR8-EL-1170 SS+2d, CP09-TR8-EL-1170 FF+2d |  |  |  |  | -233.12d | 0d | Cost [224739]; Backfilling [6974.38 M3] | 224,739 |  | ELEC | TR08 | EL-W | MS#04 | CON | HD |  |
| CP09-TR8-EL-1190 |  | Installation of Connecting Pillars | 15d | 2026-08-05 | 2026-08-23 | CP09-PR-EL-DY-1070, CP09-EN-TR8-A-3160, CP09-TR8-HD-4560 |  |  |  |  | -202.5d | 33.62d | Cost [428687]; Pillars [3]; Electrican [48 h]; Labor [48 h] | 428,687 |  | ELEC | TR08 | EL-W | MS#04 | CON | HD |  |
|  | 3 | **Hardscape** |  | 2026-02-02 | 2026-10-04 |  |  |  |  |  |  |  |  |  |  |  |  |  |  |  |  |  |
|  | 6 | **Concrete Curb** |  | 2026-06-29 | 2026-07-30 |  |  |  |  |  |  |  |  |  |  |  |  |  |  |  |  |  |
| CP09-TR8-HD-4510 |  | Excavation | 5d | 2026-06-29 | 2026-07-05 | CP09-TR8-EW-1120, CP09-TR8-EW-1130, CP09-TR8-EW-1140, CP09-TR4-HD-2380 |  |  |  |  | -236.12d | 0d | Cost [158617]; EXCAVATOR [312 h]; LOADER [368 h]; TRUCK [368 h]; Excavation [384.51 M3] | 158,617 |  |  | TR08 | HS | MS#04 | CON | HD | CURB |
| CP09-TR8-HD-4520 |  | Plains Concrete with HDPE waterproofing | 5d | 2026-07-05 | 2026-07-11 | CP09-TR8-HD-4510, CP09-EN-TR7-A-2710, CP09-EN-TR8-A-3080 |  |  |  |  | -236.12d | 0d | Cost [475850]; Plain Concrete [1121.49 M3]; HDPE | 475,850 |  |  | TR08 | HS | MS#04 | CON | HD | CURB |
| CP09-TR8-HD-4790 |  | Under Paving Reinforced Concrete Curb | 10d | 2026-07-07 | 2026-07-19 | CP09-TR8-HD-4520 SS+1.88d, CP09-TR8-HD-4520 FF+1.88d |  |  |  |  | -236.12d | 0d | Cost [951701]; Mason [385 h]; Steel Fixer [269 h]; Shutter [513 h]; Labor [48 h]; Reinforced Concrete [128.17 M3] | 951,701 |  |  | TR08 | HS | MS#04 | CON | HD | CURB |
| CP09-TR8-HD-4810 |  | Instal Flush Curb | 7d | 2026-07-22 | 2026-07-30 | CP09-EN-TR7-A-2710, CP09-PR-HD-DY-1080, CP09-TR8-HD-4790 FS+3d, CP09-TR8-HD-4790 FF+3d |  |  |  |  | -236.12d | 0d | Cost [116047]; Mason [160 h]; Labor [48 h]; Flush Curb [360.25] | 116,047 |  |  | TR08 | HS | MS#04 | CON | HD | CURB |

| ID | WBS | Activity | Duration | Start | Finish | Predecessors | Complete | Remaining | Planned start | Planned finish | Total float | Free float | Resources | Cost | Hardscape | CP09_Terrace-7 | CP09-Trade | CP09_Milestone-7 | CP09_Discipline-7 | DES |
| --- | --- | --- | --- | --- | --- | --- | --- | --- | --- | --- | --- | --- | --- | --- | --- | --- | --- | --- | --- | --- |
|  | 1 | **Side wake & Plazes** |  | 2026-02-02 | 2026-09-07 |  |  |  |  |  |  |  |  |  |  |  |  |  |  |  |
|  | 8 | **Interlocking Paving** |  | 2026-07-09 | 2026-08-05 |  |  |  |  |  |  |  |  |  |  |  |  |  |  |  |
| CP09-TR8-HD-4530 |  | Crush Stone for Interlock Types IL-(01,02,06,07) | 6.56d | 2026-07-09 | 2026-07-18 | CP09-EN-TR7-A-2720, CP09-TR8-EW-1120, CP09-TR8-EW-1130, CP09-TR8-IR-1470, CP09-TR8-EL-1180, CP09-PR-HD-DY-1090, CP09-TR4-HD-2130, CP09-EN-TR8-A-3090 |  |  |  |  | -233.12d | 0d | Cost [410521]; Mason [280 h]; Labor [48 h]; Crushed Stone [2325.12] | 410,521 | INTK | TR08 | HS | MS#04 | CON | HD |
| CP09-TR8-HD-4540 |  | Sand Layer for Interlock Types IL-(01,02,06,07) | 10d | 2026-07-15 | 2026-07-27 | CP09-TR8-HD-4530 SS+5d, CP09-TR8-HD-4530 FF+5d, CP09-EN-TR7-A-2720, CP09-EN-TR8-A-3090 |  |  |  |  | -233.12d | 0d | Cost [279178]; Mason [48 h]; Labor [280 h]; Clean sand [2321.5] | 279,178 | INTK | TR08 | HS | MS#04 | CON | HD |
| CP09-TR8-HD-4550 |  | Motar Bed Interlock Types IL-(03,04,08,09,10) | 10d | 2026-07-15 | 2026-07-27 | CP09-TR8-HD-4540 SS, CP09-EN-TR7-A-2720 |  |  |  |  | -233.12d | 0d | Cost [68357.3]; Mason [48 h]; Labor [48 h] | 68,357 | INTK | TR08 | HS | MS#04 | CON | HD |
| CP09-TR8-HD-4560 |  | Interlocking Paving | 15d | 2026-07-19 | 2026-08-05 | CP09-TR8-HD-4540 SS+2.81d, CP09-TR8-HD-4550 SS+2.81d, CP09-TR8-HD-4540 FF+2.81d, CP09-TR8-HD-4550 FF+2.81d, CP09-EN-TR7-A-2720, CP09-PR-HD-DY-1180 |  |  |  |  | -233.12d | 0d | Cost [521304]; Mason [280 h]; Labor [48 h]; Interlock [2966] | 521,304 | INTK | TR08 | HS | MS#04 | CON | HD |
|  | 2 | **Concrete in Situ** |  | 2026-02-02 | 2026-06-23 |  |  |  |  |  |  |  |  |  |  |  |  |  |  |  |
|  | 1 | **Slab on Garde** |  | 2026-02-02 | 2026-06-17 |  |  |  |  |  |  |  |  |  |  |  |  |  |  |  |
| CP09-TR8-HD-4300 |  | Plain Concrete with HDPE | 7d | 2026-02-02 A | 2026-06-14 | CP09-TR8-EW-1120, CP09-TR8-EW-1130, CP09-TR8-IR-1470, CP09-TR8-EL-1180, CP09-EN-TR7-A-2640, CP09-TR8-HD-4560 | 50% | 7d | 2026-04-02 | 2026-04-11 | -115d | 134.06d | Cost [577969]; Mason [128 h]; Labor [48 h]; Plain Concrete [3339.88 M3]; HDPE | 577,969 | CON | TR08 | HS | MS#04 | CON | HD |
| CP09-TR8-HD-4310 |  | Reinfored Concrete slab on grade | 10d | 2026-05-18 A | 2026-06-17 | CP09-TR8-HD-4300 | 30% | 10d | 2026-05-25 | 2026-06-04 | -118d | 131.06d | Cost [1444922]; Mason [48 h]; Steel Fixer [280 h]; Shutter [48 h]; Labor [48 h]; Reinforced Concrete [333.99 M3] | 1,444,922 | CON | TR08 | HS | MS#04 | CON | HD |
| CP09-TR8-HD-4320 |  | Waterproofing & Screed | 6d | 2026-05-18 A | 2026-06-13 | CP09-TR8-HD-4310 | 30% | 6d | 2026-06-06 | 2026-06-11 | -114d | 135.06d | Cost [288984]; Mason [280 h]; Labor [48 h]; Waterproofing [3339.88 M2] | 288,984 | CON | TR08 | HS | MS#04 | CON | HD |
|  | 2 | **Concrete In-situ w./Exposed Aggregate Finish** |  | 2026-05-18 | 2026-06-23 |  |  |  |  |  |  |  |  |  |  |  |  |  |  |  |
| CP09-TR8-HD-4330 |  | Concrete casting (including Joints & Wire Mish) | 15d | 2026-05-18 A | 2026-06-23 | CP09-TR8-HD-4320, CP09-TR8-HD-4810, CP09-EN-TR7-A-2640, CP09-PR-HD-DY-1000, CP09-EN-TR8-A-3010 | 30% | 15d | 2026-07-09 | 2026-07-27 | -123d | 126.06d | Cost [2600859]; Mason [128 h]; Labor [48 h]; Concrete /Exposed Aggregate [3339.88] | 2,600,859 | CON | TR08 | HS | MS#04 | CON | HD |
| CP09-TR8-HD-4340 |  | Finishing Concrete Surface | 6d | 2026-05-18 A | 2026-06-13 | CP09-TR8-HD-4330, CP09-TR8-RW-1980, CP09-TR8-RW-1990, CP09-TR8-RW-2090, CP09-TR8-RW-2100 | 30% | 6d | 2026-07-27 | 2026-08-03 | -151.38d | 47.56d | Cost [866953]; Mason [48 h]; Labor [48 h] | 866,953 | CON | TR08 | HS | MS#04 | CON | HD |
|  | 1 | **Marble Paving** |  | 2026-02-02 | 2026-06-22 |  |  |  |  |  |  |  |  |  |  |  |  |  |  |  |
|  | 1 | **Slab on Garde** |  | 2026-02-02 | 2026-06-17 |  |  |  |  |  |  |  |  |  |  |  |  |  |  |  |
| CP09-TR8-HD-4250 |  | Plain Concrete with HDPE | 5d | 2026-02-02 A | 2026-06-11 | CP09-TR8-EW-1120, CP09-TR8-EW-1140, CP09-TR8-IR-1470, CP09-TR8-EL-1180 FS+5d, CP09-EN-TR7-A-2650, CP09-TR8-HD-4560 | 75% | 5d | 2026-04-02 | 2026-04-08 | -113d | 136.06d | Cost [173552]; Mason [160 h]; Labor [48 h]; Plain Concrete [808.88 M3]; HDPE | 173,552 | MRB | TR08 | HS | MS#04 | CON | HD |
| CP09-TR8-HD-4260 |  | Reinfored Concrete slab on grade | 10d | 2026-05-04 A | 2026-06-17 | CP09-TR8-HD-4250 | 50% | 10d | 2026-05-06 | 2026-05-17 | -118d | 131.06d | Cost [416525]; Mason [48 h]; Steel Fixer [170 h]; Shutter [48 h]; Labor [48 h]; Reinforced Concrete [80.89 M3] | 416,525 | MRB | TR08 | HS | MS#04 | CON | HD |
| CP09-TR8-HD-4270 |  | Waterproofing & Screed | 7d | 2026-05-04 A | 2026-06-14 | CP09-TR8-HD-4260 | 50% | 7d | 2026-05-18 | 2026-05-25 | -115d | 134.06d | Cost [104131]; Mason [160 h]; Labor [48 h]; Waterproofing [808.88 M2] | 104,131 | MRB | TR08 | HS | MS#04 | CON | HD |
|  | 2 | **Marble Tiles** |  | 2026-05-04 | 2026-06-22 |  |  |  |  |  |  |  |  |  |  |  |  |  |  |  |
| CP09-TR8-HD-4280 |  | Marble Fixiation | 14d | 2026-05-04 A | 2026-06-22 | CP09-TR8-HD-4270, CP09-TR8-HD-4810, CP09-EN-TR7-A-2650, CP09-PR-HD-DY-1010, CP09-EN-TR8-A-3020 | 50% | 14d | 2026-06-23 | 2026-07-09 | -122d | 127.06d | Cost [2283133]; Mason [256 h]; Labor [48 h]; Marble [1120.38] | 2,283,133 | MRB | TR08 | HS | MS#04 | CON | HD |
| CP09-TR8-HD-4290 |  | Marble Surfcae Finishing | 7d | 2026-05-04 A | 2026-06-14 | CP09-TR8-HD-4280, CP09-TR8-HD-4340 SS | 50% | 7d | 2026-07-27 | 2026-08-04 | -146.38d | 52.56d | Cost [402906]; Mason [48 h]; Labor [48 h] | 402,906 | MRB | TR08 | HS | MS#04 | CON | HD |
|  | 3 | **Wooden Floor Boards** |  | 2026-07-09 | 2026-08-15 |  |  |  |  |  |  |  |  |  |  |  |  |  |  |  |
|  | 1 | **Slab on Garde** |  | 2026-07-09 | 2026-07-29 |  |  |  |  |  |  |  |  |  |  |  |  |  |  |  |
| CP09-TR8-HD-4350 |  | Plain Concrete with HDPE | 5d | 2026-07-09 | 2026-07-15 | CP09-TR8-EW-1120, CP09-TR8-EW-1130, CP09-TR8-IR-1470, CP09-TR8-EL-1180, CP09-EN-TR7-A-2660 |  |  |  |  | -198.06d | 0d | Cost [116181]; Mason [277 h]; Labor [48 h]; Plain Concrete [395.25 M3]; HDPE | 116,181 | WPC | TR08 | HS | MS#04 | CON | HD |
| CP09-TR8-HD-4360 |  | Reinfored Concrete slab on grade | 7d | 2026-07-15 | 2026-07-23 | CP09-TR8-HD-4350 |  |  |  |  | -198.06d | 0d | Cost [278834]; Mason [48 h]; Steel Fixer [83 h]; Shutter [48 h]; Labor [48 h]; Reinforced Concrete [39.52 M3] | 278,834 | WPC | TR08 | HS | MS#04 | CON | HD |
| CP09-TR8-HD-4370 |  | Waterproofing & Screed | 5d | 2026-07-23 | 2026-07-29 | CP09-TR8-HD-4360 |  |  |  |  | -198.06d | 0.88d | Cost [69708.4]; Mason [276.64 h]; Labor [48 h]; Waterproofing [395.25 M2] | 69,708 | WPC | TR08 | HS | MS#04 | CON | HD |

| ID | WBS | Activity | Duration | Start | Finish | Predecessors | Total float | Free float | Resources | Cost | Hardscape | CP09_Terrace-7 | CP09-Trade | CP09_Milestone-7 | CP09_Discipline-7 | DES |
| --- | --- | --- | --- | --- | --- | --- | --- | --- | --- | --- | --- | --- | --- | --- | --- | --- |
|  | 2 | **Wood- Plastic Composit** |  | 2026-07-30 | 2026-08-15 |  |  |  |  |  |  |  |  |  |  |  |
| CP09-TR8-HD-4380 |  | WPC Installation | 7d | 2026-07-30 | 2026-08-08 | CP09-TR8-HD-4370, CP09-TR8-HD-4810, CP09-EN-TR7-A-2660, CP09-PR-HD-DY-1020, CP09-EN-TR8-A-3030 | -198.94d | 0d | Cost [1816040]; WPC [528] | 1,816,040 | WPC | TR08 | HS | MS#04 | CON | HD |
| CP09-TR8-HD-4390 |  | WPC surface finishing & Accessories | 6d | 2026-08-08 | 2026-08-15 | CP09-TR8-HD-4380, CP09-TR8-HD-4290 FF, CP09-TR8-HD-4340 | -198.94d | 21d | Cost [454010] | 454,010 | WPC | TR08 | HS | MS#04 | CON | HD |
|  | 4 | **Gravel layer** |  | 2026-07-09 | 2026-08-17 |  |  |  |  |  |  |  |  |  |  |  |
|  | 1 | **Slab on Garde** |  | 2026-07-09 | 2026-07-19 |  |  |  |  |  |  |  |  |  |  |  |
| CP09-TR8-HD-4400 |  | Plain Concrete with HDPE | 3d | 2026-07-09 | 2026-07-13 | CP09-TR8-EW-1120, CP09-TR8-EW-1130, CP09-TR8-IR-1470, CP09-TR8-EL-1180, CP09-EN-TR7-A-2670 | -218.06d | 0d | Cost [7507.48]; Mason [90 h]; Labor [48 h]; Plain Concrete [128.88 M3]; HDPE | 7,507 | GRV | TR08 | HS | MS#04 | CON | HD |
| CP09-TR8-HD-4420 |  | Mortar bed | 5d | 2026-07-13 | 2026-07-19 | CP09-TR8-HD-4400 | -218.06d | 9.88d | Cost [7507.48]; Mason [48 h]; Labor [48 h] | 7,507 | GRV | TR08 | HS | MS#04 | CON | HD |
|  | 2 | **Gravel Layer, w./Earth Colors** |  | 2026-07-30 | 2026-08-17 |  |  |  |  |  |  |  |  |  |  |  |
| CP09-TR8-HD-4430 |  | Furnish & install Garvel Layer | 15d | 2026-07-30 | 2026-08-17 | CP09-TR8-HD-4420, CP09-TR8-HD-4810, CP09-EN-TR7-A-2670, CP09-PR-HD-DY-1030, CP09-EN-TR8-A-3040 | -227.94d | 0d | Cost [35034.9]; Mason [77 h]; Labor [48 h]; Gravel Layer [128.88] | 35,035 | GRV | TR08 | HS | MS#04 | CON | HD |
|  | 5 | **Crushed Stone** |  | 2026-07-13 | 2026-08-31 |  |  |  |  |  |  |  |  |  |  |  |
|  | 1 | **Slab on Garde** |  | 2026-07-13 | 2026-08-10 |  |  |  |  |  |  |  |  |  |  |  |
| CP09-TR8-HD-4440 |  | Geotextile membrane | 12d | 2026-07-13 | 2026-07-27 | CP09-TR8-EW-1120, CP09-TR8-EW-1130, CP09-TR8-IR-1470, CP09-TR8-EL-1180, CP09-EN-TR7-A-2680, CP09-TR8-HD-4400 | -210.06d | 0d | Cost [3164.14]; Mason [48 h]; Labor [4 h]; Geotextile Sheets [13.25] | 3,164 | CRST | TR08 | HS | MS#04 | CON | HD |
| CP09-TR8-HD-4460 |  | Gravel fix sheets | 12d | 2026-07-27 | 2026-08-10 | CP09-TR8-HD-4440 | -210.06d | 17.88d | Cost [3164.14]; Waterproofing | 3,164 | CRST | TR08 | HS | MS#04 | CON | HD |
|  | 2 | **Crushed Dolomite Stone** |  | 2026-08-17 | 2026-08-31 |  |  |  |  |  |  |  |  |  |  |  |
| CP09-TR8-HD-4470 |  | Furnish & Install Crushed Dolomite stone , w./ mixed colors | 12d | 2026-08-17 | 2026-08-31 | CP09-TR8-HD-4460 SS, CP09-TR8-HD-4430, CP09-TR8-HD-4810, CP09-EN-TR7-A-2680, CP09-PR-HD-DY-1040, CP09-EN-TR8-A-3050, CP09-TR8-HD-4460 FF | -227.94d | 0d | Cost [14766]; Mason [37 h]; Labor [48 h]; Crushed Dolomite stone [13.25] | 14,766 | CRST | TR08 | HS | MS#04 | CON | HD |
|  | 6 | **Loose Gravel** |  | 2026-07-30 | 2026-08-13 |  |  |  |  |  |  |  |  |  |  |  |
|  | 2 | **Loose Gravel 50mm** |  | 2026-07-30 | 2026-08-13 |  |  |  |  |  |  |  |  |  |  |  |
| CP09-TR8-HD-4480 |  | Furnish & Install loose gravel w./earth colors. | 12d | 2026-07-30 | 2026-08-13 | CP09-TR8-HD-4810, CP09-TR8-IR-1470, CP09-TR8-EL-1180, CP09-EN-TR7-A-2690, CP09-PR-HD-DY-1050, CP09-EN-TR8-A-3060, CP09-TR8-HD-4400 | -226.94d | 0d | Cost [8429.21]; Mason [19 h]; Labor [48 h]; Loose gravel [31.38] | 8,429 | LGRV | TR08 | HS | MS#04 | CON | HD |
|  | 7 | **Clean Sand Layer** |  | 2026-08-13 | 2026-09-07 |  |  |  |  |  |  |  |  |  |  |  |
|  | 1 | **Kids & Fitness Area** |  | 2026-08-13 | 2026-09-07 |  |  |  |  |  |  |  |  |  |  |  |
| CP09-TR8-HD-4490 |  | Geotextile Sheets | 6d | 2026-08-13 | 2026-08-20 | CP09-TR8-EW-1120, CP09-TR8-EW-1130, CP09-TR8-HD-4810, CP09-TR8-IR-1470, CP09-TR8-EL-1180, CP09-EN-TR7-A-2700, CP09-EN-TR8-A-3070, CP09-TR8-HD-4480 | -226.94d | 0d | Cost [65290.1]; Geotextile Sheets [1227.62] | 65,290 | SND | TR08 | HS | MS#04 | CON | HD |
| CP09-TR8-HD-4500 |  | Install Clean sand layer | 15d | 2026-08-20 | 2026-09-07 | CP09-TR8-HD-4490, CP09-TR8-HD-4480, CP09-TR8-HD-4810, CP09-EN-TR7-A-2700, CP09-PR-HD-DY-1070 | -226.94d | 0d | Cost [261160]; Clean sand [1227.62] | 261,160 | SND | TR08 | HS | MS#04 | CON | HD |
|  | 2 | **Site Improvments** |  | 2026-02-02 | 2026-10-04 |  |  |  |  |  |  |  |  |  |  |  |
|  | 6 | **Pools Shower -05** |  | 2026-08-02 | 2026-09-30 |  |  |  |  |  |  |  |  |  |  |  |
| CP09-TR8-HD-5060 |  | Plain Concrete Basin | 3d | 2026-08-02 | 2026-08-05 | CP09-EN-TR1-A-1640, CP09-TR8-EL-1180, CP09-TR8-HD-4810, CP09-TR8-HD-4790, CP09-EN-TR2-A-1910, CP09-EN-TR7-A-2750, CP09-EN-TR8-A-3120, CP09-TR8-HD-4560 FF | -233.12d | 0d | Cost [5183.94]; Mason [5 h]; Labor [48 h]; Plain Concrete [7 M3] | 5,184 | PLSHW | TR08 | HS | MS#04 | CON | HD |
| CP09-TR8-HD-5070 |  | R.Concrete Basin | 5d | 2026-08-05 | 2026-08-11 | CP09-TR8-HD-5060 | -233.12d | 0d | Cost [20735.8]; Mason [48 h]; Steel Fixer [5 h]; Shutter [48 h]; Labor [48 h]; Reinforced Concrete [1.5 M3] | 20,736 | PLSHW | TR08 | HS | MS#04 | CON | HD |
| CP09-TR8-HD-5080 |  | Solid Block Work | 5d | 2026-08-11 | 2026-08-17 | CP09-TR8-HD-5070 | -233.12d | 0d | Cost [2073.57]; Mason [48 h]; Labor [48 h]; Blocks [0.25] | 2,074 | PLSHW | TR08 | HS | MS#04 | CON | HD |
| CP09-TR8-HD-5090 |  | Water Proofing | 2.81d | 2026-08-17 | 2026-08-20 | CP09-TR8-HD-5080 | -233.12d | 0d | Cost [2591.97]; Mason [5.04 h]; Labor [48 h] | 2,592 | PLSHW | TR08 | HS | MS#04 | CON | HD |
| CP09-TR8-HD-5100 |  | Backfilling | 5d | 2026-08-20 | 2026-08-26 | CP09-TR8-HD-5090 | -233.12d | 0d | Cost [1555.18]; Labor [96 h] | 1,555 | PLSHW | TR08 | HS | MS#04 | CON | HD |
| CP09-TR8-HD-5110 |  | Mica Stone Cladding | 7d | 2026-08-26 | 2026-09-03 | CP09-TR8-HD-5100, CP09-PR-HD-DY-1120 | -233.12d | 0d | Cost [20735.8]; Mason [11 h]; Labor [48 h] | 20,736 | PLSHW | TR08 | HS | MS#04 | CON | HD |
| CP09-TR8-HD-5120 |  | Mica Stone Capping | 5d | 2026-09-03 | 2026-09-09 | CP09-TR8-HD-5110, CP09-PR-HD-DY-1120 | -233.12d | 0d | Cost [2073.57]; Mason [1 h]; Labor [48 h] | 2,074 | PLSHW | TR08 | HS | MS#04 | CON | HD |
| CP09-TR8-HD-5130 |  | Drainage Cover with Geotextile | 2.81d | 2026-09-09 | 2026-09-13 | CP09-TR8-HD-5120, CP09-PR-HD-DY-1060 | -233.12d | 0d | Cost [12441.5] | 12,441 | PLSHW | TR08 | HS | MS#04 | CON | HD |
| CP09-TR8-HD-5140 |  | Blast stone blocks for Flooring | 3d | 2026-09-13 | 2026-09-16 | CP09-TR8-HD-5130, CP09-PR-HD-DY-1130 | -233.12d | 0d | Cost [15551.8]; Mason [9 h]; Labor [48 h] | 15,552 | PLSHW | TR08 | HS | MS#04 | CON | HD |
| CP09-TR8-HD-5150 |  | Blast Stone Blocks Capping | 5d | 2026-09-16 | 2026-09-22 | CP09-TR8-HD-5140, CP09-PR-HD-DY-1130 | -233.12d | 0d | Cost [5183.94]; Mason [16 h]; Labor [48 h] | 5,184 | PLSHW | TR08 | HS | MS#04 | CON | HD |
| CP09-TR8-HD-5160 |  | Loose Rounded Pebbles | 5d | 2026-09-22 | 2026-09-28 | CP09-TR8-HD-5150, CP09-PR-HD-DY-1140 | -233.12d | 0d | Cost [5183.94]; Mason [48 h]; Labor [48 h] | 5,184 | PLSHW | TR08 | HS | MS#04 | CON | HD |
| CP09-TR8-HD-5170 |  | Shower Head Fixation | 2.81d | 2026-09-28 | 2026-09-30 | CP09-TR8-HD-5160, CP09-TR8-HD-5140, CP09-TR8-HD-5150, CP09-PR-HD-DY-1150 | -229.94d | 3d | Cost [10367.9] | 10,368 | PLSHW | TR08 | HS | MS#04 | CON | HD |

| ID | WBS | Activity | Duration | Start | Finish | Predecessors | Complete | Remaining | Planned start | Planned finish | Total float | Free float | Resources | Cost | Hardscape | CP09_Terrace-7 | CP09-Trade | CP09_Milestone-7 | CP09_Discipline-7 | DES |
| --- | --- | --- | --- | --- | --- | --- | --- | --- | --- | --- | --- | --- | --- | --- | --- | --- | --- | --- | --- | --- |
|  | 3 | **Pools Shower -06** |  | 2026-07-30 | 2026-10-04 |  |  |  |  |  |  |  |  |  |  |  |  |  |  |  |
| CP09-TR8-HD-2240 |  | Plain Concrete Basin | 3d | 2026-07-30 | 2026-08-03 | CP09-EN-TR1-A-1640, CP09-TR8-EL-1180, CP09-TR8-HD-4810, CP09-TR8-HD-4790, CP09-EN-TR2-A-1910, CP09-EN-TR7-A-2750, CP09-EN-TR8-A-3120 |  |  |  |  | -236.12d | 0d | Cost [5183.94]; Mason [5 h]; Labor [48 h]; Plain Concrete [7 M3] | 5,184 | PLSHW | TR08 | HS | MS#04 | CON | HD |
| CP09-TR8-HD-2250 |  | R.Concrete Basin | 5d | 2026-08-03 | 2026-08-09 | CP09-TR8-HD-2240 |  |  |  |  | -236.12d | 0d | Cost [20735.8]; Mason [48 h]; Steel Fixer [5 h]; Shutter [48 h]; Labor [48 h]; Reinforced Concrete [1.5 M3] | 20,736 | PLSHW | TR08 | HS | MS#04 | CON | HD |
| CP09-TR8-HD-2260 |  | Solid Block Work | 5d | 2026-08-09 | 2026-08-15 | CP09-TR8-HD-2250 |  |  |  |  | -236.12d | 0d | Cost [2073.57]; Mason [48 h]; Labor [48 h]; Blocks [0.25] | 2,074 | PLSHW | TR08 | HS | MS#04 | CON | HD |
| CP09-TR8-HD-2270 |  | Water Proofing | 2.81d | 2026-08-15 | 2026-08-18 | CP09-TR8-HD-2260 |  |  |  |  | -236.12d | 0d | Cost [2591.97]; Mason [5.04 h]; Labor [48 h] | 2,592 | PLSHW | TR08 | HS | MS#04 | CON | HD |
| CP09-TR8-HD-2280 |  | Backfilling | 5d | 2026-08-18 | 2026-08-24 | CP09-TR8-HD-2270 |  |  |  |  | -236.12d | 0d | Cost [1555.18]; Labor [96 h] | 1,555 | PLSHW | TR08 | HS | MS#04 | CON | HD |
| CP09-TR8-HD-2290 |  | Mica Stone Cladding | 7d | 2026-08-24 | 2026-09-01 | CP09-TR8-HD-2280, CP09-PR-HD-DY-1120 |  |  |  |  | -236.12d | 0d | Cost [20735.8]; Mason [11 h]; Labor [48 h] | 20,736 | PLSHW | TR08 | HS | MS#04 | CON | HD |
| CP09-TR8-HD-2300 |  | Mica Stone Capping | 5d | 2026-09-01 | 2026-09-07 | CP09-TR8-HD-2290, CP09-PR-HD-DY-1120 |  |  |  |  | -236.12d | 0d | Cost [2073.57]; Mason [1 h]; Labor [48 h] | 2,074 | PLSHW | TR08 | HS | MS#04 | CON | HD |
| CP09-TR8-HD-2310 |  | Drainage Cover with Geotextile | 5d | 2026-09-07 | 2026-09-13 | CP09-TR8-HD-2300, CP09-PR-HD-DY-1060 |  |  |  |  | -236.12d | 0d | Cost [12441.5] | 12,441 | PLSHW | TR08 | HS | MS#04 | CON | HD |
| CP09-TR8-HD-2320 |  | Blast stone blocks for Flooring | 7d | 2026-09-13 | 2026-09-21 | CP09-TR8-HD-2310, CP09-PR-HD-DY-1130 |  |  |  |  | -236.12d | 0d | Cost [15551.8]; Mason [9 h]; Labor [48 h] | 15,552 | PLSHW | TR08 | HS | MS#04 | CON | HD |
| CP09-TR8-HD-2330 |  | Blast Stone Blocks Capping | 5d | 2026-09-21 | 2026-09-27 | CP09-TR8-HD-2320, CP09-PR-HD-DY-1130 |  |  |  |  | -236.12d | 0d | Cost [5183.94]; Mason [16 h]; Labor [48 h] | 5,184 | PLSHW | TR08 | HS | MS#04 | CON | HD |
| CP09-TR8-HD-2340 |  | Loose Rounded Pebbles | 3.75d | 2026-09-27 | 2026-10-01 | CP09-TR8-HD-2330, CP09-PR-HD-DY-1140 |  |  |  |  | -236.12d | 0d | Cost [5183.94]; Mason [48 h]; Labor [48 h] | 5,184 | PLSHW | TR08 | HS | MS#04 | CON | HD |
| CP09-TR8-HD-2350 |  | Shower Head Fixation | 2.81d | 2026-10-01 | 2026-10-04 | CP09-TR8-HD-2340, CP09-TR8-HD-2320, CP09-TR8-HD-2330, CP09-PR-HD-DY-1150 |  |  |  |  | -232.94d | 0d | Cost [10367.9] | 10,368 | PLSHW | TR08 | HS | MS#04 | CON | HD |
|  | 1 | **Marble Steps** |  | 2026-07-28 | 2026-08-17 |  |  |  |  |  |  |  |  |  |  |  |  |  |  |  |
| CP09-TR8-HD-4570 |  | Reinforecd Concrete Step. | 10d | 2026-07-28 | 2026-08-09 | CP09-TR8-EW-1120, CP09-TR8-EW-1130, CP09-EN-TR7-A-2730, CP09-TR8-IR-1470, CP09-TR8-EL-1180, CP09-EN-TR8-A-3100, CP09-TR8-RW-2090, CP09-TR8-RW-2100 |  |  |  |  | -198.5d | 0d | Cost [255883]; Mason [48 h]; Steel Fixer [48 h]; Shutter [48 h]; Labor [48 h]; Reinforced Concrete | 255,883 | STP | TR08 | HS | MS#04 | CON | HD |
| CP09-TR8-HD-4580 |  | Install Marble Blocks | 6.56d | 2026-08-04 | 2026-08-11 | CP09-TR8-HD-4570 SS+2.81d, CP09-TR8-HD-4570 FF+2.81d, CP09-PR-HD-DY-1100 |  |  |  |  | -198.5d | 0d | Cost [162834]; Marble Step [6.38] | 162,834 | STP | TR08 | HS | MS#04 | CON | HD |
| CP09-TR8-HD-4590 |  | Finishing Marble Surface | 5d | 2026-08-11 | 2026-08-17 | CP09-TR8-HD-4580, CP09-TR8-RW-1980, CP09-TR8-RW-1990, CP09-TR8-RW-2090, CP09-TR8-RW-2100 |  |  |  |  | -197.88d | 38.25d | Cost [46524.1] | 46,524 | STP | TR08 | HS | MS#04 | CON | HD |
|  | 4 | **Handrails** |  | 2026-08-11 | 2026-08-18 |  |  |  |  |  |  |  |  |  |  |  |  |  |  |  |
| CP09-TR8-HD-4820 |  | Install & Fix Stainless Handrail (500 mm height) | 5.62d | 2026-08-11 | 2026-08-18 | CP09-TR8-HD-4580, CP09-TR8-HD-4660, CP09-EN-TR7-A-2760, CP09-PR-HD-DY-1160, CP09-EN-TR8-A-3130, CP09-EN-TR8-A-3140 |  |  |  |  | -198.5d | 37.62d | Cost [131128]; Labor [51 h]; Stanless Steel Handrial [25.62] | 131,128 | HND | TR08 | HS | MS#04 | CON | HD |
| CP09-TR8-HD-4830 |  | Install & Fix Glass Handrail (900mm height) | 5.62d | 2026-08-11 | 2026-08-18 | CP09-TR8-HD-4580, CP09-TR8-HD-4660, CP09-EN-TR7-A-2760, CP09-PR-HD-DY-1170, CP09-EN-TR8-A-3130, CP09-EN-TR8-A-3140 |  |  |  |  | -198.5d | 37.62d | Cost [44178.5]; Glass Handrail [3.5]; Labor [7 h] | 44,179 | HND | TR08 | HS | MS#04 | CON | HD |
|  | 2 | **Curvelinear Block Seat** |  | 2026-02-02 | 2026-08-04 |  |  |  |  |  |  |  |  |  |  |  |  |  |  |  |
| CP09-TR8-HD-4600 |  | Excavation | 2.81d | 2026-02-02 A | 2026-06-09 | CP09-TR8-EW-1120, CP09-TR8-EW-1130, CP09-EN-TR7-A-2740, CP09-TR8-EL-1180, CP09-EN-TR8-A-3110, CP09-TR8-RW-2090, CP09-TR8-RW-2100 | 30% | 2.81d | 2026-05-06 | 2026-05-09 | -110.81d | 138.25d | Cost [9988.94]; EXCAVATOR [48 h]; LOADER [56 h]; TRUCK [56 h]; Excavation [59.96 M3] | 9,989 | SEAT | TR08 | HS | MS#04 | CON | HD |
| CP09-TR8-HD-4610 |  | Plaing Concrete with HPDE | 3.75d | 2026-02-02 A | 2026-06-10 | CP09-TR8-HD-4600 | 30% | 3.75d | 2026-05-10 | 2026-05-13 | -111.75d | 137.31d | Cost [12486.2]; Mason [24 h]; Labor [48 h]; Plain Concrete [34.59 M3]; HDPE | 12,486 | SEAT | TR08 | HS | MS#04 | CON | HD |
| CP09-TR8-HD-4620 |  | Reinforced Concrete for Footing | 5.62d | 2026-02-02 A | 2026-06-13 | CP09-TR8-HD-4610 | 30% | 5.62d | 2026-05-13 | 2026-05-20 | -113.62d | 135.44d | Cost [74917.1]; Mason [48 h]; Steel Fixer [31 h]; Shutter [48 h]; Labor [48 h]; Reinforced Concrete [8.84 M3] | 74,917 | SEAT | TR08 | HS | MS#04 | CON | HD |
| CP09-TR8-HD-4630 |  | Reinforced Concrete for beam | 5d | 2026-02-02 A | 2026-06-11 | CP09-TR8-HD-4620 | 30% | 5d | 2026-05-20 | 2026-05-26 | -113d | 136.06d | Cost [24972.4]; Mason [5 h]; Steel Fixer [77 h]; Shutter [6 h]; Labor [48 h]; Reinforced Concrete [1.54 M3] | 24,972 | SEAT | TR08 | HS | MS#04 | CON | HD |
| CP09-TR8-HD-4640 |  | Waterproofing & Protection | 3.75d | 2026-02-02 A | 2026-06-10 | CP09-TR8-HD-4630 | 30% | 3.75d | 2026-05-26 | 2026-05-31 | -111.75d | 137.31d | Cost [24972.4]; Waterproofing [9.22 M2] | 24,972 | SEAT | TR08 | HS | MS#04 | CON | HD |
| CP09-TR8-HD-4650 |  | Backfilling | 2.81d | 2026-02-02 A | 2026-06-09 | CP09-TR8-HD-4640 | 30% | 2.81d | 2026-05-31 | 2026-06-02 | -175.81d | 42.19d | Cost [14983.4]; Backfilling [40.74 M3] | 14,983 | SEAT | TR08 | HS | MS#04 | CON | HD |
| CP09-TR8-HD-4660 |  | Marble Capping | 5.62d | 2026-07-29 | 2026-08-04 | CP09-TR8-RW-2090, CP09-TR8-RW-2100, CP09-TR8-RW-1980, CP09-TR8-RW-1990, CP09-TR8-HD-4650, CP09-PR-HD-DY-1110 |  |  |  |  | -218d | 0.88d | Cost [87403.2]; Mason [160 h]; Labor [48 h]; Marble Coping [25.62] | 87,403 | SEAT | TR08 | HS | MS#04 | CON | HD |

| ID | WBS | Activity | Duration | Start | Finish | Predecessors | Complete | Remaining | Planned start | Planned finish | Total float | Free float | Resources | Cost | Hardscape | CP09_Terrace-7 | CP09-Trade | CP09_Milestone-7 | CP09_Discipline-7 | DES | Softscape |
| --- | --- | --- | --- | --- | --- | --- | --- | --- | --- | --- | --- | --- | --- | --- | --- | --- | --- | --- | --- | --- | --- |
|  | 11 | **Sinage** |  | 2026-08-05 | 2026-09-17 |  |  |  |  |  |  |  |  |  |  |  |  |  |  |  |  |
| CP09-TR8-SN-4950 |  | Excavation | 6d | 2026-08-05 | 2026-08-12 | CP09-TR8-HD-4560, CP09-EN-TR7-A-2800, CP09-EN-TR8-A-3170, CP09-TR8-HD-4660 |  |  |  |  | -218.88d | 0d | Cost [21369.8]; EXCAVATOR [72 h]; LOADER [88 h]; TRUCK [88 h]; Excavation [92.06 M3] | 21,370 | SING | TR08 | SIN | MS#04 | CON | HD |  |
| CP09-TR8-SN-4960 |  | Plain Concrete with HDPE | 6d | 2026-08-08 | 2026-08-15 | CP09-TR8-SN-4950 SS+2d, CP09-TR8-SN-4950 FF+2d |  |  |  |  | -218.88d | 0d | Cost [32054.7]; Mason [4 h]; Labor [48 h]; Plain Concrete [6.14 M3] | 32,055 | SING | TR08 | SIN | MS#04 | CON | HD |  |
| CP09-TR8-SN-4970 |  | Reinforced Concrete | 6d | 2026-08-10 | 2026-08-17 | CP09-TR8-SN-4960 SS+2d, CP09-TR8-SN-4960 FF+2d |  |  |  |  | -218.88d | 0d | Cost [117534]; Mason [92 h]; Steel Fixer [280 h]; Shutter [123 h]; Labor [48 h]; Reinforced Concrete [30.69 M3] | 117,534 | SING | TR08 | SIN | MS#04 | CON | HD |  |
| CP09-TR8-SN-4980 |  | Waterproofing | 6d | 2026-08-13 | 2026-08-20 | CP09-TR8-SN-4970 SS+3d, CP09-TR8-SN-4970 FF+3d |  |  |  |  | -218.88d | 0d | Cost [21369.8]; Mason [128.8 h]; Labor [48 h]; Waterproofing [184.12 M2] | 21,370 | SING | TR08 | SIN | MS#04 | CON | HD |  |
| CP09-TR8-SN-4990 |  | Grouting | 6d | 2026-08-16 | 2026-08-23 | CP09-TR8-SN-4980 SS+2d, CP09-TR8-SN-4980 FF+2d |  |  |  |  | -218.88d | 11d | Cost [21369.8] | 21,370 | SING | TR08 | SIN | MS#04 | CON | HD |  |
| CP09-TR8-SN-5000 |  | STREET DIRECTIONAL SIGN | 6d | 2026-09-03 | 2026-09-10 | CP09-TR8-SN-4990 SS+5d, CP09-PR-SN-DY-1000, CP09-TR8-SN-4990 FF+5d, CP09-TR8-SF-1730 |  |  |  |  | -229.88d | 0d | Cost [124876]; Sign [41.25] | 124,876 | SING | TR08 | SIN | MS#04 | CON | HD |  |
| CP09-TR8-SN-5010 |  | DIRECTIONAL SIGN FOR VEHICULAR | 6d | 2026-09-03 | 2026-09-10 | CP09-TR8-SN-4990 SS+5d, CP09-PR-SN-DY-1010, CP09-TR8-SN-4990 FF+5d, CP09-TR8-SF-1730 |  |  |  |  | -229.88d | 0d | Cost [227367]; Sign [3.88] | 227,367 | SING | TR08 | SIN | MS#04 | CON | HD |  |
| CP09-TR8-SN-5040 |  | RULES SIGN | 6d | 2026-09-03 | 2026-09-10 | CP09-TR8-SN-4990 SS+5d, CP09-PR-SN-DY-1030, CP09-TR8-SN-4990 FF+5d, CP09-TR8-SF-1730 |  |  |  |  | -227.88d | 0d | Cost [102164]; Sign [10.38] | 102,164 | SING | TR08 | SIN | MS#04 | CON | HD |  |
| CP09-TR8-SN-5020 |  | UNIT ID SIGN (FRONT YARD) | 6d | 2026-09-10 | 2026-09-17 | CP09-TR8-SN-4990, CP09-PR-SN-DY-1020, CP09-TR8-SN-5010, CP09-TR8-SN-5000, CP09-TR8-SN-5040 |  |  |  |  | -227.88d | 21.56d | Cost [81022.5]; Sign [2.25] | 81,023 | SING | TR08 | SIN | MS#04 | CON | HD |  |
| CP09-TR8-SN-5030 |  | UNIT ID SIGN (BACK YARD) | 6d | 2026-09-10 | 2026-09-17 | CP09-TR8-SN-4990, CP09-PR-SN-DY-1020, CP09-TR8-SN-5010, CP09-TR8-SN-5000, CP09-TR8-SN-5040 |  |  |  |  | -227.88d | 21.56d | Cost [55703]; Sign [5] | 55,703 | SING | TR08 | SIN | MS#04 | CON | HD |  |
| CP09-TR8-SN-5050 |  | IDENTIFICATION SIGN | 6d | 2026-09-10 | 2026-09-17 | CP09-TR8-SN-4990, CP09-PR-SN-DY-1040, CP09-TR8-SN-5010, CP09-TR8-SN-5000, CP09-TR8-SN-5040 |  |  |  |  | -227.88d | 21.56d | Cost [49962.7]; Sign [60] | 49,963 | SING | TR08 | SIN | MS#04 | CON | HD |  |
|  | 12 | **Landscape Furntiure** |  | 2026-08-31 | 2026-09-17 |  |  |  |  |  |  |  |  |  |  |  |  |  |  |  |  |
| CP09-TR8-FN-4840 |  | Install & Fix Pitch Pine Picnic Table | 15d | 2026-08-31 | 2026-09-17 | CP09-TR8-HD-4560, CP09-TR8-HD-4480, CP09-TR8-HD-4470, CP09-TR8-HD-4430, CP09-TR8-HD-4290 FF, CP09-TR8-HD-4340 FF, CP09-EN-TR7-A-2770, CP09-PR-FN-DY-1000, CP09-EN-TR8-A-3140 |  |  |  |  | -227.94d | 21.5d | Cost [93998.3]; Pitch Pine Picnic Table [1] | 93,998 |  | TR08 | LA-F | MS#04 | CON | SO | FRNT |
| CP09-TR8-FN-4850 |  | Install & Fix Crcular Cast-iron tree grate | 15d | 2026-08-31 | 2026-09-17 | CP09-TR8-HD-4560, CP09-TR8-HD-4480, CP09-TR8-HD-4470, CP09-TR8-HD-4430, CP09-TR8-HD-4390 FF, CP09-TR8-HD-4290 FF, CP09-TR8-HD-4340 FF, CP09-EN-TR7-A-2770, CP09-PR-FN-DY-1010, CP09-EN-TR8-A-3140 |  |  |  |  | -227.94d | 21.5d | Cost [655486]; Crcular Cast-iron tree grate [23.38] | 655,486 |  | TR08 | LA-F | MS#04 | CON | SO | FRNT |
| CP09-TR8-FN-4860 |  | Install & Fix Aluminium Cabana for Pool Shading | 7d | 2026-08-31 | 2026-09-08 | CP09-TR8-HD-4560, CP09-TR8-HD-4480, CP09-TR8-HD-4470, CP09-TR8-HD-4430, CP09-TR8-HD-4390 FF, CP09-TR8-HD-4290 FF, CP09-TR8-HD-4340 FF, CP09-EN-TR7-A-2770, CP09-PR-FN-DY-1020, CP09-EN-TR8-A-3140 |  |  |  |  | -219.94d | 0d | Cost [217421]; Aluminium Cabana [2] | 217,421 |  | TR08 | LA-F | MS#04 | CON | SO | FRNT |
| CP09-TR8-FN-4870 |  | Install & Fix Pitch Pine Benchs | 15d | 2026-08-31 | 2026-09-17 | CP09-TR8-HD-4560, CP09-TR8-HD-4480, CP09-TR8-HD-4470, CP09-TR8-HD-4430, CP09-TR8-HD-4390 FF, CP09-TR8-HD-4290 FF, CP09-TR8-HD-4340 FF, CP09-EN-TR7-A-2770, CP09-PR-FN-DY-1030, CP09-EN-TR8-A-3140 |  |  |  |  | -227.94d | 21.5d | Cost [316796]; Pitch Pine Benchs [9.5] | 316,796 |  | TR08 | LA-F | MS#04 | CON | SO | FRNT |
| CP09-TR8-FN-4880 |  | Install & Fix Polyester Hammocks | 15d | 2026-08-31 | 2026-09-17 | CP09-TR8-HD-4560, CP09-TR8-HD-4480, CP09-TR8-HD-4470, CP09-TR8-HD-4430, CP09-TR8-HD-4390 FF, CP09-TR8-HD-4290 FF, CP09-TR8-HD-4340 FF, CP09-PR-FN-DY-1040, CP09-EN-TR8-A-3140 |  |  |  |  | -227.94d | 21.5d | Cost [40144.4]; Polyester Hammocks [1] | 40,144 |  | TR08 | LA-F | MS#04 | CON | SO | FRNT |
| CP09-TR8-FN-4890 |  | Install & Fix Adult Play Swing | 15d | 2026-08-31 | 2026-09-17 | CP09-TR8-HD-4560, CP09-TR8-HD-4480, CP09-TR8-HD-4470, CP09-TR8-HD-4430, CP09-TR8-HD-4390 FF, CP09-TR8-HD-4290 FF, CP09-TR8-HD-4340 FF, CP09-EN-TR7-A-2770, CP09-PR-FN-DY-1050, CP09-EN-TR8-A-3140, CP09-TR8-SN-5000 FF |  |  |  |  | -227.94d | 21.5d | Cost [30435]; Adult Play Swing [1] | 30,435 |  | TR08 | LA-F | MS#04 | CON | SO | FRNT |
| CP09-TR8-FN-4900 |  | Install & Fix Aluminum Trash Bin | 15d | 2026-08-31 | 2026-09-17 | CP09-TR8-HD-4560, CP09-TR8-HD-4480, CP09-TR8-HD-4470, CP09-TR8-HD-4430, CP09-TR8-HD-4390 FF, CP09-TR8-HD-4290 FF, CP09-TR8-HD-4340 FF, CP09-EN-TR7-A-2770, CP09-PR-FN-DY-1060, CP09-EN-TR8-A-3140, CP09-TR8-SN-5000 FF |  |  |  |  | -227.94d | 21.5d | Cost [896214]; Aluminum Trash Bin [14] | 896,214 |  | TR08 | LA-F | MS#04 | CON | SO | FRNT |
| CP09-TR8-FN-4910 |  | Install & Fix tensile Teflon Tent | 15d | 2026-08-31 | 2026-09-17 | CP09-TR8-HD-4560, CP09-TR8-HD-4480, CP09-TR8-HD-4470, CP09-TR8-HD-4430, CP09-TR8-HD-4390 FF, CP09-TR8-HD-4290 FF, CP09-TR8-HD-4340 FF, CP09-EN-TR7-A-2770, CP09-PR-FN-DY-1070, CP09-EN-TR8-A-3140, CP09-TR8-SN-5000 FF |  |  |  |  | -227.94d | 21.5d | Cost [555836]; tensile Teflon Tent [2.5] | 555,836 |  | TR08 | LA-F | MS#04 | CON | SO | FRNT |
| CP09-TR8-FN-4920 |  | Lanscape Edging ( Rubber) | 15d | 2026-08-31 | 2026-09-17 | CP09-TR8-HD-4560, CP09-TR8-HD-4480, CP09-TR8-HD-4470, CP09-TR8-HD-4430 FF, CP09-TR8-HD-4390 FF, CP09-TR8-HD-4290 FF, CP09-TR8-HD-4340 FF, CP09-PR-FN-DY-1080, CP09-EN-TR8-A-3140, CP09-TR8-SN-5000 FF |  |  |  |  | -227.94d | 21.5d | Cost [65739.9]; Lanscape Edging ( Rubber) [236.5] | 65,740 |  | TR08 | LA-F | MS#04 | CON | SO | FRNT |
|  | 10 | **Play Field Equipment** |  | 2026-02-02 | 2026-09-20 |  |  |  |  |  |  |  |  |  |  |  |  |  |  |  |  |
| CP09-TR8-PE-4940 |  | Kids playground equipment | 8d | 2026-02-02 A | 2026-06-15 | CP09-TR8-HD-4500, CP09-PR-PE-DY-1040, CP09-PR-PE-DY-1050, CP09-PR-PE-DY-1060, CP09-PR-PE-DY-1070, CP09-PR-PE-DY-1080, CP09-PR-PE-DY-1090, CP09-PR-PE-DY-1100, CP09-EN-TR8-A-3180, CP09-TR8-SN-5000, CP09-TR8-SN-5010 | 15% | 8d | 2026-07-02 | 2026-07-12 | -147.38d | 102.06d | Cost [1256494]; Kids equipment [6] | 1,256,494 |  | TR08 | PF-E | MS#04 | CON | SO | P.EQ |
| CP09-TR8-PE-4930 |  | Fitness areas equipment | 8d | 2026-09-10 | 2026-09-20 | CP09-TR8-HD-4500, CP09-EN-TR7-A-2810, CP09-PR-PE-DY-1000, CP09-PR-PE-DY-1010, CP09-PR-PE-DY-1020, CP09-PR-PE-DY-1030, CP09-EN-TR8-A-3180, CP09-TR8-SN-5000, CP09-TR8-SN-5010 |  |  |  |  | -229.88d | 19.56d | Cost [1442780]; Fitness equipment [5] | 1,442,780 |  | TR08 | PF-E | MS#04 | CON | SO | P.EQ |

| ID | WBS | Activity | Duration | Start | Finish | Predecessors | Complete | Remaining | Planned start | Planned finish | Total float | Free float | Resources | Cost | Softscape | CP09_Terrace-7 | CP09-Trade | CP09_Milestone-7 | CP09_Discipline-7 | DES |
| --- | --- | --- | --- | --- | --- | --- | --- | --- | --- | --- | --- | --- | --- | --- | --- | --- | --- | --- | --- | --- |
|  | 7 | **Lighting for Softscape** |  | 2026-07-12 | 2026-09-14 |  |  |  |  |  |  |  |  |  |  |  |  |  |  |  |
|  | 1 | **Exterior Lighting** |  | 2026-07-12 | 2026-09-14 |  |  |  |  |  |  |  |  |  |  |  |  |  |  |  |
| CP09-TR8-SF-1750 |  | Install Diffused Wall Recessed Step | 10d | 2026-07-12 | 2026-07-22 | CP09-EN-TR7-A-2840, CP09-PR-EL-DY-1110 |  |  |  |  | -179.38d | 70.06d | Cost [194419]; Diffused Wall [47]; Electrican [25 h] | 194,419 | LHT | TR08 | LFS | MS#04 | CON | HD |
| CP09-TR8-SF-1760 |  | Install Inground Uplight For Palms | 7d | 2026-07-27 | 2026-08-03 | CP09-TR8-SF-1770 FF, CP09-EN-TR7-A-2840, CP09-PR-EL-DY-1120 |  |  |  |  | -189.38d | 60.06d | Cost [393484]; Inground Uplight [86]; Electrican [25 h] | 393,484 | LHT | TR08 | LFS | MS#04 | CON | HD |
| CP09-TR8-SF-1770 |  | Install Projectors for Trees | 3d | 2026-08-01 | 2026-08-03 | CP09-TR8-SF-1660, CP09-TR8-SF-1670, CP09-TR8-SF-1680, CP09-TR8-SF-1690, CP09-TR8-SF-1700, CP09-TR8-SF-1710, CP09-TR8-SF-1720, CP09-EN-TR7-A-2840, CP09-PR-EL-DY-1130 |  |  |  |  | -189.38d | 0d | Cost [484837]; Projectors For Trees [120]; Electrican [25 h] | 484,837 | LHT | TR08 | LFS | MS#04 | CON | HD |
| CP09-TR8-SF-1730 |  | Install Landscape Lighting Pole | 25d | 2026-08-05 | 2026-09-03 | CP09-TR8-EL-1170, CP09-EN-TR7-A-2840, CP09-PR-EL-DY-1080, CP09-TR8-HD-4560 |  |  |  |  | -229.88d | 0d | Cost [97302.1]; Lighting Pole [4]; Electrican [25 h] | 97,302 | LHT | TR08 | LFS | MS#04 | CON | HD |
| CP09-TR8-SF-1780 |  | Install Surface Mountaed Down Light for Pool Cabans | 7d | 2026-08-31 | 2026-09-08 | CP09-TR8-FN-4860 FF, CP09-EN-TR7-A-2840, CP09-PR-EL-DY-1100 |  |  |  |  | -219.94d | 29.5d | Cost [25595]; Surface Mountaed Light [6]; Electrican [25 h] | 25,595 | LHT | TR08 | LFS | MS#04 | CON | HD |
| CP09-TR8-SF-1740 |  | Install Bollard for Walkways | 6d | 2026-09-07 | 2026-09-14 | CP09-TR8-EL-1170, CP09-TR8-HD-4560, CP09-TR8-HD-4340, CP09-TR8-HD-4290 FF, CP09-TR8-HD-4390 FF, CP09-TR8-HD-4430, CP09-TR8-HD-4470, CP09-TR8-HD-4480, CP09-TR8-HD-4500, CP09-EN-TR7-A-2840, CP09-PR-EL-DY-1090, CP09-TR8-SF-1730 |  |  |  |  | -224.94d | 0d | Cost [1108355]; Bollard [258]; Electrican [25 h] | 1,108,355 | LHT | TR08 | LFS | MS#04 | CON | HD |
|  | 2 | **Outlet Lighting Fixtures** |  | 2026-09-08 | 2026-09-14 |  |  |  |  |  |  |  |  |  |  |  |  |  |  |  |
| CP09-TR8-SF-1790 |  | Install outlet lighting fixtures | 5d | 2026-09-08 | 2026-09-14 | CP09-TR8-SF-1740 FF, CP09-EN-TR7-A-2840, CP09-PR-EL-DY-1150, CP09-EN-TR8-A-3210 |  |  |  |  | -224.94d | 24.5d | Cost [357578]; Outlet Lighting Fixtiure [520]; Electrican [25 h] | 357,578 | LHT | TR08 | LFS | MS#04 | CON | HD |
|  | 2 | **Softscape** |  | 2026-04-13 | 2026-07-30 |  |  |  |  |  |  |  |  |  |  |  |  |  |  |  |
|  | 1 | **Planting** |  | 2026-04-13 | 2026-07-30 |  |  |  |  |  |  |  |  |  |  |  |  |  |  |  |
| CP09-TR8-SF-1640 |  | Sweet sand for all plants | 20d | 2026-04-13 A | 2026-06-29 | CP09-TR8-EW-1140, CP09-TR8-HD-4810, CP09-TR8-HD-4560, CP09-EN-TR7-A-2830, CP09-PR-PN-DY-1000, CP09-TR4-SF-1160, CP09-TR4-SF-1170, CP09-EN-TR8-A-3200 | 10% | 20d | 2026-06-10 | 2026-07-04 | -189.38d | 0d | Cost [1296918]; Sweet sand [3702.2] | 1,296,918 | PLNT | TR08 | SS | MS#04 | CON | SO |
| CP09-TR8-SF-1650 |  | Organic Manure | 20d | 2026-04-13 A | 2026-06-29 | CP09-TR8-SF-1640 SS+5d, CP09-EN-TR7-A-2830, CP09-PR-PN-DY-1010, CP09-EN-TR8-A-3200 | 10% | 20d | 2026-06-16 | 2026-07-09 | -175.38d | 14d | Cost [841200]; Organic Manure [843.3] | 841,200 | PLNT | TR08 | SS | MS#04 | CON | SO |
| CP09-TR8-SF-1660 |  | Large Trees | 10d | 2026-07-16 | 2026-07-27 | CP09-TR8-SF-1650, CP09-TR8-SF-1640, CP09-PR-PN-DY-1020, CP09-TR8-IR-1480, CP09-TR8-IR-1490, CP09-TR8-IR-1500, CP09-TR8-IR-1510, CP09-TR8-IR-1520, CP09-TR8-IR-1530, CP09-TR8-IR-1540 |  |  |  |  | -189.38d | 0d | Cost [1933001]; Large Trees [706] | 1,933,001 | PLNT | TR08 | SS | MS#04 | CON | SO |
| CP09-TR8-SF-1670 |  | Shrubs | 10d | 2026-07-20 | 2026-07-30 | CP09-TR8-SF-1650, CP09-TR8-SF-1640, CP09-TR8-SF-1660 SS+3d, CP09-TR8-SF-1660 FF+3d, CP09-PR-PN-DY-1060 |  |  |  |  | -189.38d | 0d | Cost [758721]; Shrubs [5056] | 758,721 | PLNT | TR08 | SS | MS#04 | CON | SO |
| CP09-TR8-SF-1680 |  | Ground Covers | 10d | 2026-07-20 | 2026-07-30 | CP09-TR8-SF-1650, CP09-TR8-SF-1640, CP09-TR8-SF-1660 SS+3d, CP09-TR8-SF-1660 FF+3d, CP09-PR-PN-DY-1070 |  |  |  |  | -189.38d | 0d | Cost [840914]; Ground Covers [41638] | 840,914 | PLNT | TR08 | SS | MS#04 | CON | SO |
| CP09-TR8-SF-1690 |  | Succulents | 10d | 2026-07-20 | 2026-07-30 | CP09-TR8-SF-1650, CP09-TR8-SF-1640, CP09-TR8-SF-1660 SS+3d, CP09-TR8-SF-1660 FF+3d, CP09-PR-PN-DY-1080 |  |  |  |  | -189.38d | 0d | Cost [363438]; Succulents [1300] | 363,438 | PLNT | TR08 | SS | MS#04 | CON | SO |
| CP09-TR8-SF-1700 |  | Vines & Climbers | 10d | 2026-07-20 | 2026-07-30 | CP09-TR8-SF-1650, CP09-TR8-SF-1640, CP09-TR8-SF-1660 SS+3d, CP09-TR8-SF-1660 FF+3d, CP09-PR-PN-DY-1030 |  |  |  |  | -189.38d | 0d | Cost [26566.1]; Vines & Climbers [241] | 26,566 | PLNT | TR08 | SS | MS#04 | CON | SO |
| CP09-TR8-SF-1710 |  | Ornamental grass | 10d | 2026-07-20 | 2026-07-30 | CP09-TR8-SF-1650, CP09-TR8-SF-1640, CP09-TR8-SF-1660 SS+3d, CP09-TR8-SF-1660 FF+3d, CP09-PR-PN-DY-1050 |  |  |  |  | -189.38d | 0d | Cost [502971]; Ornamental grass [13594] | 502,971 | PLNT | TR08 | SS | MS#04 | CON | SO |
| CP09-TR8-SF-1720 |  | Lawn | 10d | 2026-07-20 | 2026-07-30 | CP09-TR8-SF-1650, CP09-TR8-SF-1640, CP09-TR8-SF-1660 SS+3d, CP09-TR8-SF-1660 FF+3d, CP09-PR-PN-DY-1040 |  |  |  |  | -189.38d | 0d | Cost [83925.4]; Lawn [1476] | 83,925 | PLNT | TR08 | SS | MS#04 | CON | SO |
|  | 5 | **Testing & Commissioning** |  | 2026-07-15 | 2026-11-05 |  |  |  |  |  |  |  |  |  |  |  |  |  |  |  |
|  | 4 | **Milestone # 01** |  | 2026-07-15 | 2026-07-28 |  |  |  |  |  |  |  |  |  |  |  |  |  |  |  |
|  | 2 | **Hardscape** |  | 2026-07-15 | 2026-07-28 |  |  |  |  |  |  |  |  |  |  |  |  |  |  |  |
| CP09-TC-MS1-HD-1040 |  | Pre-Commissioning of Hardscape Works | 5d | 2026-07-15 | 2026-07-20 | CP09-TR2-RW-1540, CP09-TR2-RW-1550, CP09-TR2-RW-1650, CP09-TR2-RW-1660, CP09-TR2-EL-1110, CP09-TR2-HD-3040, CP09-TR2-HD-2920, CP09-TR2-HD-2720, CP09-TR2-HD-2670, CP09-TR2-HD-2800, CP09-TR2-HD-2830, CP09-TR2-HD-2840, CP09-TR2-HD-2860, CP09-TR2-HD-2950, CP09-TR2-HD-3020, CP09-TR2-HD-3050, CP09-TR2-HD-3060, CP09-PR-HD-DY-1020, CP09-PR-HD-A-1020 FS+7d, CP09-TR1-EW-1030 FS+3d, CP09-TR1-EW-1040 FS+3d, CP09-TR1-IR-1140 FS+3d, CP09-TR1-EL-1060 FS+3d, CP09-TR2-EW-1060 FS+3d, CP09-TR2-EW-1070 FS+3d, CP09-TR2-IR-1250 FS+3d, CP09-TR2-EL-1100 FS+3d, CP09-TR1-RW-1320, CP09-TR1-RW-1330, CP09-TR1-RW-1430, CP09-TR1-RW-1440, CP09-TR1-EL-1070, CP09-TR1-HD-2380, CP09-TR1-HD-2130, CP09-TR1-HD-1910, CP09-TR1-HD-1860, CP09-TR1-HD-2000, CP09-TR1-HD-2040, CP09-TR1-HD-2050, CP09-TR1-HD-2070, CP09-TR1-HD-2160, CP09-TR1-HD-2230, CP09-TR1-HD-2390, CP09-TR1-HD-2400 |  |  |  |  | -159d | 0d |  |  |  |  | HS | MS#01 |  |  |
| CP09-TC-MS1-HD-1050 |  | Final Testing & Commissioning of Hardscape Works | 7d | 2026-07-21 | 2026-07-28 | CP09-TC-MS1-HD-1040 |  |  |  |  | -158d | 1d |  |  |  |  | HS | MS#01 |  |  |

| ID | WBS | Activity | Duration | Start | Finish | Predecessors | Total float | Free float | CP09_Milestone-7 | CP09-Trade |
| --- | --- | --- | --- | --- | --- | --- | --- | --- | --- | --- |
|  | 5 | **Section # 01** |  | 2026-07-19 | 2026-08-03 |  |  |  |  |  |
|  | 3 | **Softscape** |  | 2026-07-19 | 2026-08-03 |  |  |  |  |  |
| CP09-TC-SE1-SF-1060 |  | Pre-Commissioning of Softscape Works | 7d | 2026-07-19 | 2026-07-26 | CP09-TR2-IR-1290, CP09-TR2-IR-1300, CP09-TR2-IR-1310, CP09-TR2-SF-1340, CP09-TR2-SF-1350, CP09-TR2-SF-1360, CP09-TR2-SF-1370, CP09-TR2-SF-1380, CP09-TR2-SF-1390, CP09-TR2-SF-1400, CP09-TR2-SF-1430, CP09-TR2-SF-1440, CP09-TR2-SF-1450, CP09-TR2-SF-1470, CP09-TR2-PE-3160, CP09-TR2-PE-3170, CP09-TR2-FN-3110, CP09-TR2-FN-3120, CP09-TR2-FN-3080, CP09-TR2-FN-3130, CP09-TR2-FN-3140, CP09-TR2-FN-3150, CP09-TR2-FN-3100, CP09-TR2-FN-3070, CP09-TR2-SN-3260, CP09-TR2-SN-3270, CP09-TR2-SN-3280, CP09-TR2-SN-3230, CP09-TR2-SN-3240, CP09-TR2-SN-3250, CP09-TR1-HD-2130, CP09-TR1-HD-2050, CP09-TR1-HD-2040, CP09-TR1-HD-2000, CP09-TR1-HD-1860, CP09-TR1-HD-1910, CP09-EN-TR1-A-1660, CP09-PR-FN-DY-1020, CP09-TR1-HD-2390, CP09-TR1-HD-2400, CP09-TR2-HD-2920, CP09-TR2-HD-2840, CP09-TR2-HD-2830, CP09-TR2-HD-2800, CP09-TR2-HD-2670, CP09-TR2-HD-2720, CP09-EN-TR2-A-1930, CP09-EN-TR1-A-1730, CP09-PR-EL-DY-1100, CP09-EN-TR2-A-2000, CP09-TR1-HD-2380, CP09-PR-HD-DY-1020, CP09-TR2-HD-3040, CP09-PR-HD-A-1020 FS+7d, CP09-TR1-EW-1030 FS+3d, CP09-TR1-EW-1040 FS+3d, CP09-TR1-IR-1140 FS+3d, CP09-TR1-EL-1060 FS+3d, CP09-TR2-EW-1060 FS+3d, CP09-TR2-EW-1070 FS+3d, CP09-TR2-IR-1250 FS+3d, CP09-TR2-EL-1100 FS+3d, CP09-TR1-IR-1180, CP09-TR1-IR-1190, CP09-TR1-IR-1200, CP09-TR1-SF-1180, CP09-TR1-SF-1190, CP09-TR1-SF-1200, CP09-TR1-SF-1210, CP09-TR1-SF-1220, CP09-TR1-SF-1230, CP09-TR1-SF-1240, CP09-TR1-SF-1270, CP09-TR1-SF-1280, CP09-TR1-SF-1290, CP09-TR1-SF-1310, CP09-TR1-PE-2500, CP09-TR1-PE-2510, CP09-TR1-FN-2450, CP09-TR1-FN-2460, CP09-TR1-FN-2420, CP09-TR1-FN-2470, CP09-TR1-FN-2480, CP09-TR1-FN-2490, CP09-TR1-FN-2440, CP09-TR1-FN-2410, CP09-TR1-SN-2600, CP09-TR1-SN-2610, CP09-TR1-SN-2620, CP09-TR1-SN-2570, CP09-TR1-SN-2580, CP09-TR1-SN-2590 | -168d | 0d | MS#01 |  |
| CP09-TC-SE1-SF-1070 |  | Final Testing & Commissioning of Softscape Works | 7d | 2026-07-27 | 2026-08-03 | CP09-TC-SE1-SF-1060 | -166d | 2d | MS#01 |  |
|  | 1 | **Milestone # 02** |  | 2026-07-20 | 2026-08-06 |  |  |  |  |  |
|  | 1 | **Swimmimg Pool** |  | 2026-07-20 | 2026-08-05 |  |  |  |  |  |
| CP09-TC-MS2-SW-1000 |  | Pre-Commissioning of Swimmimg Pool & MR | 7d | 2026-07-20 | 2026-07-28 | CP09-TR3-SW-1320, CP09-TR3-SW-1360, CP09-TR3-SW-1140, CP09-TR3-SW-1270, CP09-TR4-SW-1630, CP09-TR4-SW-1670, CP09-TR4-SW-1510, CP09-TR4-SW-1710 | -168.06d | 0d | MS#02 |  |
| CP09-TC-MS2-SW-1010 |  | Final Testing & Commissioning of Swimmimg Pool & MR | 7d | 2026-07-28 | 2026-08-05 | CP09-TC-MS2-SW-1000 | -166.06d | 2d | MS#02 |  |
|  | 2 | **Hardscape** |  | 2026-07-21 | 2026-08-06 |  |  |  |  |  |
| CP09-TC-MS2-HD-1020 |  | Pre-Commissioning of Hardscape Works | 7d | 2026-07-21 | 2026-07-29 | CP09-TR3-RW-1200, CP09-TR3-RW-1220, CP09-TR3-RW-1190, CP09-TR3-RW-1210, CP09-TR3-HD-1050, CP09-TR3-HD-1260, CP09-TR3-HD-1520, CP09-TR3-HD-1530, CP09-TR3-HD-1600, CP09-TR3-HD-1360, CP09-TR3-HD-1450, CP09-TR3-HD-1460, CP09-TR3-HD-1540, CP09-TR3-HD-1340, CP09-TR3-HD-1550, CP09-TR3-HD-1570, CP09-TR3-HD-1590, CP09-TR3-HD-1690, CP09-TR3-HD-1810, CP09-TR3-HD-1610, CP09-TR3-HD-1620, CP09-TR3-EL-1030, CP09-TR4-RW-1320, CP09-TR4-RW-1330, CP09-TR4-RW-1430, CP09-TR4-RW-1440, CP09-TR4-HD-2380, CP09-TR4-HD-2130, CP09-TR4-HD-1910, CP09-TR4-HD-1860, CP09-TR4-HD-1960, CP09-TR4-HD-2000, CP09-TR4-HD-2040, CP09-TR4-HD-2050, CP09-TR4-HD-2070, CP09-TR4-HD-2160, CP09-TR4-HD-2230, CP09-TR4-HD-2320, CP09-TR4-HD-2330, CP09-TR4-HD-2340, CP09-TR4-HD-2350, CP09-TR4-HD-2390, CP09-TR4-HD-2400, CP09-TR4-EL-1070 | -169.44d | 0d | MS#02 | HS |
| CP09-TC-MS2-HD-1030 |  | Final Testing & Commissioning of Hardscape Works | 7d | 2026-07-29 | 2026-08-06 | CP09-TC-MS2-HD-1020 | -167.44d | 2d | MS#02 | HS |
|  | 6 | **Section # 02** |  | 2026-08-31 | 2026-09-16 |  |  |  |  |  |
|  | 3 | **Softscape** |  | 2026-08-31 | 2026-09-16 |  |  |  |  |  |
| CP09-TC-SE2-SF-1040 |  | Pre-Commissioning of Softscape Works | 7d | 2026-08-31 | 2026-09-08 | CP09-TR3-FN-1700, CP09-TR3-FN-1710, CP09-TR3-FN-1720, CP09-TR3-FN-1730, CP09-TR3-FN-1740, CP09-TR3-FN-1750, CP09-TR3-FN-1760, CP09-TR3-FN-1770, CP09-TR3-FN-1780, CP09-TR3-SN-1630, CP09-TR3-SN-1640, CP09-TR3-SN-1650, CP09-TR3-SN-1660, CP09-TR3-SN-1670, CP09-TR3-SN-1680, CP09-TR3-PE-1790, CP09-TR3-PE-1800, CP09-TR4-SN-2570, CP09-TR4-SN-2580, CP09-TR4-SN-2590, CP09-TR4-SN-2600, CP09-TR4-SN-2610, CP09-TR4-SN-2620, CP09-TR4-FN-2410, CP09-TR4-FN-2420, CP09-TR4-FN-2430, CP09-TR4-FN-2440, CP09-TR4-FN-2450, CP09-TR4-FN-2460, CP09-TR4-FN-2470, CP09-TR4-FN-2480, CP09-TR4-FN-2490, CP09-TR4-PE-2500, CP09-TR4-PE-2510, CP09-TR3-SF-1010, CP09-TR3-IR-1040, CP09-TR3-IR-1050, CP09-TR3-IR-1060, CP09-TR3-IR-1070, CP09-TR3-IR-1080, CP09-TR3-IR-1090, CP09-TR3-IR-1100, CP09-TR3-SF-1030, CP09-TR3-SF-1040, CP09-TR3-SF-1050, CP09-TR3-SF-1070, CP09-TR3-SF-1080, CP09-TR3-SF-1090, CP09-TR3-SF-1100, CP09-TR3-SF-1060, CP09-TR3-SF-1110, CP09-TR3-SF-1130, CP09-TR3-SF-1140, CP09-TR3-SF-1150, CP09-TR3-SF-1120, CP09-TR4-SF-1160, CP09-TR4-IR-1150, CP09-TR4-IR-1160, CP09-TR4-IR-1170, CP09-TR4-IR-1180, CP09-TR4-IR-1190, CP09-TR4-IR-1200, CP09-TR4-IR-1210, CP09-TR4-SF-1180, CP09-TR4-SF-1220, CP09-TR4-SF-1240, CP09-TR4-SF-1230, CP09-TR4-SF-1190, CP09-TR4-SF-1200, CP09-TR4-SF-1210, CP09-TR4-SF-1260, CP09-TR4-SF-1270, CP09-TR4-SF-1280, CP09-TR4-SF-1290, CP09-TR4-SF-1300, CP09-TR4-SF-1310 | -204.94d | 0d | MS#02 |  |
| CP09-TC-SE2-SF-1050 |  | Final Testing & Commissioning of Softscape Works | 7d | 2026-09-08 | 2026-09-16 | CP09-TC-SE2-SF-1040 | -202.94d | 2d | MS#02 |  |
|  | 2 | **Milestone # 03** |  | 2026-08-10 | 2026-09-16 |  |  |  |  |  |
|  | 1 | **Swimmimg Pool** |  | 2026-08-10 | 2026-08-26 |  |  |  |  |  |
| CP09-TC-MS3-SW-1020 |  | Pre-Commissioning of Swimmimg Pool & MR | 7d | 2026-08-10 | 2026-08-18 | CP09-TR5-SW-1990, CP09-TR5-SW-2030, CP09-TR5-SW-2040, CP09-TR5-SW-1870, CP09-TR5-SW-2070, CP09-TR6-SW-2350, CP09-TR6-SW-2390, CP09-TR6-SW-2400, CP09-TR6-SW-2230, CP09-TR6-SW-2430 | -201.06d | 0d | MS#03 |  |
| CP09-TC-MS3-SW-1030 |  | Final Testing & Commissioning of Swimmimg Pool & MR | 7d | 2026-08-18 | 2026-08-26 | CP09-TC-MS3-SW-1020 | -185.06d | 2d | MS#03 |  |
|  | 2 | **Hardscape** |  | 2026-08-31 | 2026-09-16 |  |  |  |  |  |
| CP09-TC-MS3-HD-1040 |  | Pre-Commissioning of Hardscape Works | 7d | 2026-08-31 | 2026-09-08 | CP09-TR5-RW-1540, CP09-TR5-RW-1550, CP09-TR5-RW-1650, CP09-TR5-RW-1660, CP09-TR5-HD-2940, CP09-TR5-HD-2720, CP09-TR5-HD-2670, CP09-TR5-HD-2770, CP09-TR5-HD-2810, CP09-TR5-HD-2850, CP09-TR5-HD-2880, CP09-TR5-HD-2970, CP09-TR5-HD-3040, CP09-TR5-HD-3130, CP09-TR5-HD-3140, CP09-TR5-HD-3150, CP09-TR5-HD-3160, CP09-TR5-HD-3200, CP09-TR5-HD-3210, CP09-TR6-RW-1760, CP09-TR6-RW-1770, CP09-TR6-RW-1870, CP09-TR6-RW-1880, CP09-TR6-HD-3750, CP09-TR6-HD-3530, CP09-TR6-HD-3480, CP09-TR6-HD-3580, CP09-TR6-HD-3620, CP09-TR6-HD-3660, CP09-TR6-HD-3690, CP09-TR6-HD-3780, CP09-TR6-HD-3850, CP09-TR6-HD-3940, CP09-TR6-HD-3950, CP09-TR6-HD-3960, CP09-TR6-HD-3970, CP09-TR6-HD-4010, CP09-TR6-HD-4020 | -205.81d | 0d | MS#03 | HS |
| CP09-TC-MS3-HD-1050 |  | Final Testing & Commissioning of Hardscape Works | 7d | 2026-09-08 | 2026-09-16 | CP09-TC-MS3-HD-1040 | -203.81d | 2d | MS#03 | HS |
|  | 7 | **Section # 03** |  | 2026-09-06 | 2026-09-29 |  |  |  |  |  |
|  | 3 | **Softscape** |  | 2026-09-06 | 2026-09-29 |  |  |  |  |  |
| CP09-TC-SE3-SF-1060 |  | Pre-Commissioning of Softscape Works | 10d | 2026-09-06 | 2026-09-17 | CP09-TR5-SN-3380, CP09-TR5-SN-3390, CP09-TR5-SN-3400, CP09-TR5-SN-3410, CP09-TR5-SN-3420, CP09-TR5-SN-3430, CP09-TR5-FN-3220, CP09-TR5-FN-3230, CP09-TR5-FN-3240, CP09-TR5-FN-3250, CP09-TR5-FN-3260, CP09-TR5-FN-3270, CP09-TR5-FN-3280, CP09-TR5-FN-3290, CP09-TR5-FN-3300, CP09-TR5-PE-3310, CP09-TR5-PE-3320, CP09-TR6-SN-4190, CP09-TR6-SN-4200, CP09-TR6-SN-4210, CP09-TR6-SN-4220, CP09-TR6-SN-4230, CP09-TR6-SN-4240, CP09-TR6-FN-4030, CP09-TR6-FN-4040, CP09-TR6-FN-4050, CP09-TR6-FN-4060, CP09-TR6-FN-4070, CP09-TR6-FN-4080, CP09-TR6-FN-4090, CP09-TR6-FN-4100, CP09-TR6-FN-4110, CP09-TR6-PE-4120, CP09-TR6-PE-4130, CP09-TR5-IR-1290, CP09-TR5-IR-1300, CP09-TR5-IR-1310, CP09-TR5-IR-1320, CP09-TR5-EL-1110, CP09-TR5-SF-1340, CP09-TR5-SF-1350, CP09-TR5-SF-1360, CP09-TR5-SF-1370, CP09-TR5-SF-1380, CP09-TR5-SF-1390, CP09-TR5-SF-1400, CP09-TR5-SF-1420, CP09-TR5-SF-1430, CP09-TR5-SF-1440, CP09-TR5-SF-1450, CP09-TR5-SF-1460, CP09-TR5-SF-1470, CP09-TR6-IR-1400, CP09-TR6-IR-1410, CP09-TR6-IR-1420, CP09-TR6-IR-1430, CP09-TR6-EL-1150, CP09-TR6-SF-1500, CP09-TR6-SF-1510, CP09-TR6-SF-1520, CP09-TR6-SF-1530, CP09-TR6-SF-1540, CP09-TR6-SF-1550, CP09-TR6-SF-1560, CP09-TR6-SF-1580, CP09-TR6-SF-1590, CP09-TR6-SF-1600, CP09-TR6-SF-1610, CP09-TR6-SF-1620, CP09-TR6-SF-1630 | -214.69d | 0d | MS#03 |  |
| CP09-TC-SE3-SF-1070 |  | Final Testing & Commissioning of Softscape Works | 10d | 2026-09-17 | 2026-09-29 | CP09-TC-SE3-SF-1060 | -214.69d | 0d | MS#03 |  |

| ID | WBS | Activity | Duration | Start | Finish | Predecessors | Total float | Free float | CP09_Milestone-7 | CP09-Trade |
| --- | --- | --- | --- | --- | --- | --- | --- | --- | --- | --- |
|  | 3 | **Milestone # 04** |  | 2026-10-01 | 2026-10-20 |  |  |  |  |  |
|  | 1 | **Swimmimg Pool** |  | 2026-10-04 | 2026-10-20 |  |  |  |  |  |
| CP09-TC-MS4-SW-1040 |  | Pre-Commissioning of Swimmimg Pool & MR | 7d | 2026-10-04 | 2026-10-12 | CP09-TR8-SW-2580, CP09-TR8-SW-2590, CP09-TR8-SW-2790, CP09-TR8-SW-2800, CP09-TR8-SW-2710, CP09-TR8-SW-2750, CP09-TR8-SW-2760, CP09-TR8-SW-2940, CP09-TR8-SW-2950, CP09-TR8-SW-3150, CP09-TR8-SW-3160, CP09-TR8-SW-3070, CP09-TR8-SW-3110, CP09-TR8-SW-3120, CP09-TR8-HD-2350, CP09-TR8-HD-5170, CP09-TR7-SW-2580, CP09-TR7-SW-2590, CP09-TR7-SW-2790, CP09-TR7-SW-2800, CP09-TR7-SW-2710, CP09-TR7-SW-2750, CP09-TR7-SW-2760, CP09-TR7-SW-2940, CP09-TR7-SW-2950, CP09-TR7-SW-3150, CP09-TR7-SW-3160, CP09-TR7-SW-3070, CP09-TR7-SW-3110, CP09-TR7-SW-3120, CP09-TR7-HD-2350, CP09-TR7-HD-5170 | -232.94d | 0d | MS#04 |  |
| CP09-TC-MS4-SW-1050 |  | Final Testing & Commissioning of Swimmimg Pool & MR | 7d | 2026-10-12 | 2026-10-20 | CP09-TC-MS4-SW-1040 | -232.94d | 0d | MS#04 |  |
|  | 2 | **Hardscape** |  | 2026-10-01 | 2026-10-18 |  |  |  |  |  |
| CP09-TC-MS4-HD-1060 |  | Pre-Commissioning of Hardscape Works | 7d | 2026-10-01 | 2026-10-10 | CP09-TR8-RW-1980, CP09-TR8-RW-1990, CP09-TR8-RW-2090, CP09-TR8-RW-2100, CP09-TR8-EL-1190, CP09-TR8-HD-4560, CP09-TR8-HD-4340, CP09-TR8-HD-4290, CP09-TR8-HD-4390, CP09-TR8-HD-4430, CP09-TR8-HD-4470, CP09-TR8-HD-4480, CP09-TR8-HD-4500, CP09-TR8-HD-4590, CP09-TR8-HD-4660, CP09-TR8-HD-4820, CP09-TR8-HD-4830, CP09-TR8-HD-2320, CP09-TR8-HD-2330, CP09-TR8-HD-2340, CP09-TR8-HD-5140, CP09-TR8-HD-5150, CP09-TR8-HD-5160, CP09-TR7-RW-1980, CP09-TR7-RW-1990, CP09-TR7-RW-2090, CP09-TR7-RW-2100, CP09-TR7-EL-1190, CP09-TR7-HD-4560, CP09-TR7-HD-4340, CP09-TR7-HD-4290, CP09-TR7-HD-4390, CP09-TR7-HD-4430, CP09-TR7-HD-4470, CP09-TR7-HD-4480, CP09-TR7-HD-4500, CP09-TR7-HD-4590, CP09-TR7-HD-4660, CP09-TR7-HD-4820, CP09-TR7-HD-4830, CP09-TR7-HD-2320, CP09-TR7-HD-2330, CP09-TR7-HD-2340, CP09-TR7-HD-5140, CP09-TR7-HD-5150, CP09-TR7-HD-5160 | -236.12d | 0d | MS#04 | HS |
| CP09-TC-MS4-HD-1070 |  | Final Testing & Commissioning of Hardscape Works | 7d | 2026-10-10 | 2026-10-18 | CP09-TC-MS4-HD-1060 | -230.12d | 6d | MS#04 | HS |
|  | 8 | **Section # 04** |  | 2026-10-13 | 2026-11-05 |  |  |  |  |  |
|  | 3 | **Softscape** |  | 2026-10-13 | 2026-11-05 |  |  |  |  |  |
| CP09-TC-SE4-SF-1080 |  | Pre-Commissioning of Softscape Works | 10d | 2026-10-13 | 2026-10-25 | CP09-TR7-PE-4940, CP09-TR7-PE-4930, CP09-TR7-FN-4920, CP09-TR7-FN-4910, CP09-TR7-FN-4900, CP09-TR7-FN-4890, CP09-TR7-FN-4880, CP09-TR7-FN-4870, CP09-TR7-FN-4860, CP09-TR7-FN-4850, CP09-TR7-FN-4840, CP09-TR7-SN-5000, CP09-TR7-SN-5010, CP09-TR7-SN-5020, CP09-TR7-SN-5030, CP09-TR7-SN-5040, CP09-TR7-SN-5050, CP09-TR8-IR-1510, CP09-TR8-IR-1520, CP09-TR8-IR-1530, CP09-TR8-IR-1540, CP09-TR8-SF-1660, CP09-TR8-SF-1670, CP09-TR8-SF-1680, CP09-TR8-SF-1690, CP09-TR8-SF-1700, CP09-TR8-SF-1710, CP09-TR8-SF-1720, CP09-TR8-SF-1740, CP09-TR8-SF-1750, CP09-TR8-SF-1760, CP09-TR8-SF-1770, CP09-TR8-SF-1780, CP09-TR8-SF-1790, CP09-TR8-PE-4940, CP09-TR8-PE-4930, CP09-TR8-FN-4920, CP09-TR8-FN-4910, CP09-TR8-FN-4900, CP09-TR8-FN-4890, CP09-TR8-FN-4880, CP09-TR8-FN-4870, CP09-TR8-FN-4860, CP09-TR8-FN-4850, CP09-TR8-FN-4840, CP09-TR8-SN-5000, CP09-TR8-SN-5010, CP09-TR8-SN-5020, CP09-TR8-SN-5030, CP09-TR8-SN-5040, CP09-TR8-SN-5050, CP09-TR7-IR-1510, CP09-TR7-IR-1520, CP09-TR7-IR-1530, CP09-TR7-IR-1540, CP09-TR7-SF-1660, CP09-TR7-SF-1670, CP09-TR7-SF-1680, CP09-TR7-SF-1690, CP09-TR7-SF-1700, CP09-TR7-SF-1710, CP09-TR7-SF-1720, CP09-TR7-SF-1740, CP09-TR7-SF-1750, CP09-TR7-SF-1760, CP09-TR7-SF-1770, CP09-TR7-SF-1780, CP09-TR7-SF-1790 | -249.44d | 0d | MS#04 |  |
| CP09-TC-SE4-SF-1090 |  | Final Testing & Commissioning of Softscape Works | 10d | 2026-10-25 | 2026-11-05 | CP09-TC-SE4-SF-1080 | -245.44d | 4d | MS#04 |  |
|  | 6 | **Handing over & As Built Drwaings** |  | 2026-07-19 | 2026-11-18 |  |  |  |  |  |
|  | 4 | **Milestone # 01** |  | 2026-07-19 | 2026-08-04 |  |  |  |  |  |
|  | 2 | **Hardscape** |  | 2026-07-19 | 2026-08-04 |  |  |  |  |  |
| CP09-HO-MS1-HD-1080 |  | Close Snagging for Hardscape Works | 5d | 2026-07-19 | 2026-07-23 | CP09-TC-MS1-HD-1040 SS+3d, CP09-TC-MS1-HD-1040 FF+3d | -159d | 0d | MS#01 | HS |
| CP09-HO-MS1-HD-1090 |  | Submit As-Built Drawings | 4d | 2026-07-23 | 2026-07-27 | CP09-HO-MS1-HD-1080 SS+3d, CP09-HO-MS1-HD-1080 FF+3d | -159d | 0d | MS#01 | HS |
| CP09-HO-MS1-HD-1100 |  | Approve As-Built Drawings | 8d | 2026-07-27 | 2026-08-04 | CP09-HO-MS1-HD-1090 SS+3d, CP09-HO-MS1-HD-1090 FF+3d | -159d | 0d | MS#01 | HS |
| CP09-HO-MS1-HD-1110 |  | Handingover | 5d | 2026-07-30 | 2026-08-04 | CP09-HO-MS1-HD-1100 FF, CP09-TC-MS1-HD-1050 | -159d | 0d | MS#01 | HS |
|  | 5 | **Section # 01** |  | 2026-07-22 | 2026-08-13 |  |  |  |  |  |
|  | 3 | **Softscape** |  | 2026-07-22 | 2026-08-13 |  |  |  |  |  |
| CP09-HO-SE1-SF-1120 |  | Close Snagging for Softscape Works | 7d | 2026-07-22 | 2026-07-29 | CP09-TC-SE1-SF-1060 SS+3d, CP09-TC-SE1-SF-1060 FF+3d | -168d | 0d | MS#01 |  |
| CP09-HO-SE1-SF-1130 |  | Submit As-Built Drawings | 7d | 2026-07-26 | 2026-08-02 | CP09-HO-SE1-SF-1120 SS+3d, CP09-HO-SE1-SF-1120 FF+3d | -168d | 0d | MS#01 |  |
| CP09-HO-SE1-SF-1140 |  | Approve As-Built Drawings | 14d | 2026-07-29 | 2026-08-13 | CP09-HO-SE1-SF-1130 SS+3d, CP09-HO-SE1-SF-1130 FF+3d | -168d | 0d | MS#01 |  |
| CP09-HO-SE1-SF-1150 |  | Handingover | 7d | 2026-08-06 | 2026-08-13 | CP09-HO-SE1-SF-1140 FF, CP09-TC-SE1-SF-1070 | -168d | 0d | MS#01 |  |

| ID | WBS | Activity | Duration | Start | Finish | Predecessors | Total float | Free float | CP09_Milestone-7 | CP09-Trade |
| --- | --- | --- | --- | --- | --- | --- | --- | --- | --- | --- |
|  | 1 | **Milestone # 02** |  | 2026-07-23 | 2026-08-17 |  |  |  |  |  |
|  | 1 | **Swimmimg Pool** |  | 2026-07-23 | 2026-08-16 |  |  |  |  |  |
| CP09-HO-MS2-SW-1000 |  | Close Snagging for Swimming Pool & MR | 7d | 2026-07-23 | 2026-08-01 | CP09-TC-MS2-SW-1000 SS+3d, CP09-TC-MS2-SW-1000 FF+3d | -168.06d | 0d | MS#02 |  |
| CP09-HO-MS2-SW-1010 |  | Submit As-Built Drawings | 7d | 2026-07-27 | 2026-08-04 | CP09-HO-MS2-SW-1000 SS+3d, CP09-HO-MS2-SW-1000 FF+3d | -168.06d | 0d | MS#02 |  |
| CP09-HO-MS2-SW-1020 |  | Approve As-Built Drawings | 14d | 2026-07-30 | 2026-08-16 | CP09-HO-MS2-SW-1010 SS+3d, CP09-HO-MS2-SW-1010 FF+3d | -168.06d | 0d | MS#02 |  |
| CP09-HO-MS2-SW-1030 |  | Handingover | 7d | 2026-08-08 | 2026-08-16 | CP09-TC-MS2-SW-1010, CP09-HO-MS2-SW-1020 FF | -168.06d | 1.38d | MS#02 |  |
|  | 2 | **Hardscape** |  | 2026-07-25 | 2026-08-17 |  |  |  |  |  |
| CP09-HO-MS2-HD-1040 |  | Close Snagging for Hardscape Works | 7d | 2026-07-25 | 2026-08-02 | CP09-TC-MS2-HD-1020 SS+3d, CP09-TC-MS2-HD-1020 FF+3d | -169.44d | 0d | MS#02 | HS |
| CP09-HO-MS2-HD-1050 |  | Submit As-Built Drawings | 7d | 2026-07-28 | 2026-08-05 | CP09-HO-MS2-HD-1040 SS+3d, CP09-HO-MS2-HD-1040 FF+3d | -169.44d | 0d | MS#02 | HS |
| CP09-HO-MS2-HD-1060 |  | Approve As-Built Drawings | 14d | 2026-08-01 | 2026-08-17 | CP09-HO-MS2-HD-1050 SS+3d, CP09-HO-MS2-HD-1050 FF+3d | -169.44d | 0d | MS#02 | HS |
| CP09-HO-MS2-HD-1070 |  | Handingover | 7d | 2026-08-09 | 2026-08-17 | CP09-HO-MS2-HD-1060 FF, CP09-TC-MS2-HD-1030 | -169.44d | 0d | MS#02 | HS |
|  | 6 | **Section # 02** |  | 2026-09-03 | 2026-09-27 |  |  |  |  |  |
|  | 3 | **Softscape** |  | 2026-09-03 | 2026-09-27 |  |  |  |  |  |
| CP09-HO-SE2-SF-1080 |  | Close Snagging for Softscape Works | 7d | 2026-09-03 | 2026-09-12 | CP09-TC-SE2-SF-1040 SS+3d, CP09-TC-SE2-SF-1040 FF+3d | -204.94d | 0d | MS#02 |  |
| CP09-HO-SE2-SF-1090 |  | Submit As-Built Drawings | 7d | 2026-09-07 | 2026-09-15 | CP09-HO-SE2-SF-1080 SS+3d, CP09-HO-SE2-SF-1080 FF+3d | -204.94d | 0d | MS#02 |  |
| CP09-HO-SE2-SF-1100 |  | Approve As-Built Drawings | 14d | 2026-09-10 | 2026-09-27 | CP09-HO-SE2-SF-1090 SS+3d, CP09-HO-SE2-SF-1090 FF+3d | -204.94d | 0d | MS#02 |  |
| CP09-HO-SE2-SF-1110 |  | Handingover | 7d | 2026-09-19 | 2026-09-27 | CP09-HO-SE2-SF-1100 FF, CP09-TC-SE2-SF-1050 | -204.94d | 0d | MS#02 |  |
|  | 2 | **Milestone # 03** |  | 2026-08-13 | 2026-09-27 |  |  |  |  |  |
|  | 1 | **Swimmimg Pool** |  | 2026-08-13 | 2026-09-06 |  |  |  |  |  |
| CP09-HO-MS3-SW-1040 |  | Close Snagging for Swimming Pool & MR | 7d | 2026-08-13 | 2026-08-22 | CP09-TC-MS3-SW-1020 SS+3d, CP09-TC-MS3-SW-1020 FF+3d | -201.06d | 0d | MS#03 |  |
| CP09-HO-MS3-SW-1050 |  | Submit As-Built Drawings | 7d | 2026-08-17 | 2026-08-25 | CP09-HO-MS3-SW-1040 SS+3d, CP09-HO-MS3-SW-1040 FF+3d | -187.06d | 0d | MS#03 |  |
| CP09-HO-MS3-SW-1060 |  | Approve As-Built Drawings | 14d | 2026-08-20 | 2026-09-06 | CP09-HO-MS3-SW-1050 SS+3d, CP09-HO-MS3-SW-1050 FF+3d | -187.06d | 0d | MS#03 |  |
| CP09-HO-MS3-SW-1070 |  | Handingover | 7d | 2026-08-29 | 2026-09-06 | CP09-HO-MS3-SW-1060 FF, CP09-TC-MS3-SW-1030 | -187.06d | 18.75d | MS#03 |  |
|  | 2 | **Hardscape** |  | 2026-09-03 | 2026-09-27 |  |  |  |  |  |
| CP09-HO-MS3-HD-1080 |  | Close Snagging for Hardscape Works | 7d | 2026-09-03 | 2026-09-12 | CP09-TC-MS3-HD-1040 FF+3d, CP09-TC-MS3-HD-1040 SS+3d | -205.81d | 0d | MS#03 | HS |
| CP09-HO-MS3-HD-1090 |  | Submit As-Built Drawings | 7d | 2026-09-07 | 2026-09-15 | CP09-HO-MS3-HD-1080 SS+3d, CP09-HO-MS3-HD-1080 FF+3d | -205.81d | 0d | MS#03 | HS |
| CP09-HO-MS3-HD-1100 |  | Approve As-Built Drawings | 14d | 2026-09-10 | 2026-09-27 | CP09-HO-MS3-HD-1090 SS+3d, CP09-HO-MS3-HD-1090 FF+3d | -205.81d | 0d | MS#03 | HS |
| CP09-HO-MS3-HD-1110 |  | Handingover | 7d | 2026-09-19 | 2026-09-27 | CP09-HO-MS3-HD-1100 FF, CP09-TC-MS3-HD-1050 | -205.81d | 0d | MS#03 | HS |

| ID | WBS | Activity | Duration | Start | Finish | Predecessors | Total float | Free float | CP09_Milestone-7 | CP09-Trade |
| --- | --- | --- | --- | --- | --- | --- | --- | --- | --- | --- |
|  | 7 | **Section # 03** |  | 2026-09-14 | 2026-10-07 |  |  |  |  |  |
|  | 3 | **Softscape** |  | 2026-09-14 | 2026-10-07 |  |  |  |  |  |
| CP09-HO-SE3-SF-1120 |  | Close Snagging for Softscape Works | 7d | 2026-09-14 | 2026-09-22 | CP09-TC-SE3-SF-1060 SS+4d, CP09-TC-SE3-SF-1060 FF+4d | -214.69d | 0d | MS#03 |  |
| CP09-HO-SE3-SF-1130 |  | Submit As-Built Drawings | 7d | 2026-09-17 | 2026-09-26 | CP09-HO-SE3-SF-1120 SS+3d, CP09-HO-SE3-SF-1120 FF+3d | -214.69d | 0d | MS#03 |  |
| CP09-HO-SE3-SF-1140 |  | Approve As-Built Drawings | 14d | 2026-09-21 | 2026-10-07 | CP09-HO-SE3-SF-1130 SS+3d, CP09-HO-SE3-SF-1130 FF+3d | -214.69d | 0d | MS#03 |  |
| CP09-HO-SE3-SF-1150 |  | Handingover | 7d | 2026-09-29 | 2026-10-07 | CP09-HO-SE3-SF-1140 FF, CP09-TC-SE3-SF-1070 | -214.69d | 0d | MS#03 |  |
|  | 3 | **Milestone # 04** |  | 2026-08-22 | 2026-11-02 |  |  |  |  |  |
|  | 1 | **Swimmimg Pool** |  | 2026-08-22 | 2026-10-28 |  |  |  |  |  |
| CP09-HO-MS4-SW-1080 |  | Close Snagging for Swimming Pool & MR | 7d | 2026-08-22 | 2026-08-30 | CP09-HO-MS3-SW-1040 | -201.06d | 0d | MS#04 |  |
| CP09-HO-MS4-SW-1090 |  | Submit As-Built Drawings | 7d | 2026-08-25 | 2026-09-02 | CP09-HO-MS4-SW-1080 SS+3d, CP09-HO-MS4-SW-1080 FF+3d | -201.06d | 0d | MS#04 |  |
| CP09-HO-MS4-SW-1100 |  | Approve As-Built Drawings | 14d | 2026-08-29 | 2026-09-14 | CP09-HO-MS4-SW-1090 SS+3d, CP09-HO-MS4-SW-1090 FF+3d | -201.06d | 31.88d | MS#04 |  |
| CP09-HO-MS4-SW-1110 |  | Handingover | 7d | 2026-10-20 | 2026-10-28 | CP09-HO-MS4-SW-1100, CP09-TC-MS4-SW-1050 | -232.94d | 3.19d | MS#04 |  |
|  | 2 | **Hardscape** |  | 2026-10-10 | 2026-11-02 |  |  |  |  |  |
| CP09-HO-MS4-HD-1120 |  | Close Snagging for Hardscape Works | 7d | 2026-10-10 | 2026-10-18 | CP09-TC-MS4-HD-1060 | -236.12d | 0d | MS#04 | HS |
| CP09-HO-MS4-HD-1130 |  | Submit As-Built Drawings | 7d | 2026-10-13 | 2026-10-21 | CP09-HO-MS4-HD-1120 SS+3d, CP09-HO-MS4-HD-1120 FF+3d | -236.12d | 0d | MS#04 | HS |
| CP09-HO-MS4-HD-1140 |  | Approve As-Built Drawings | 14d | 2026-10-17 | 2026-11-02 | CP09-HO-MS4-HD-1130 SS+3d, CP09-HO-MS4-HD-1130 FF+3d | -236.12d | 0d | MS#04 | HS |
| CP09-HO-MS4-HD-1150 |  | Handingover | 7d | 2026-10-25 | 2026-11-02 | CP09-HO-MS4-HD-1140 FF, CP09-TC-MS4-HD-1070 | -236.12d | 0d | MS#04 | HS |
|  | 8 | **Section # 04** |  | 2026-10-25 | 2026-11-18 |  |  |  |  |  |
|  | 3 | **Softscape** |  | 2026-10-25 | 2026-11-18 |  |  |  |  |  |
| CP09-HO-SE4-SF-1160 |  | Close Snagging for Softscape Works | 7d | 2026-10-25 | 2026-11-02 | CP09-TC-SE4-SF-1080 | -249.44d | 0d | MS#04 |  |
| CP09-HO-SE4-SF-1170 |  | Submit As-Built Drawings | 7d | 2026-10-28 | 2026-11-05 | CP09-HO-SE4-SF-1160 SS+3d, CP09-HO-SE4-SF-1160 FF+3d | -249.44d | 0d | MS#04 |  |
| CP09-HO-SE4-SF-1180 |  | Approve As-Built Drawings | 14d | 2026-11-02 | 2026-11-18 | CP09-HO-SE4-SF-1170 SS+4d, CP09-HO-SE4-SF-1170 FF+4d | -249.44d | 0d | MS#04 |  |
| CP09-HO-SE4-SF-1190 |  | Handingover | 7d | 2026-11-10 | 2026-11-18 | CP09-HO-SE4-SF-1180 FF, CP09-TC-SE4-SF-1090 | -249.44d | 0d | MS#04 |  |

## Activity codes

| Code | Value | Meaning |
| --- | --- | --- |
| CP09-Trade | E-W | Earth Work |
| CP09-Trade | EL-W | Electrical works |
| CP09-Trade | HS | Hardscape |
| CP09-Trade | IRR-W | Irrigation Works |
| CP09-Trade | LA-F | Landscape Furniture |
| CP09-Trade | LFS | Lighting For sooftscape |
| CP09-Trade | PF-E | Play Field Equipment |
| CP09-Trade | RE&CW | Retaining & cheek Walls |
| CP09-Trade | SIN | Sinage |
| CP09-Trade | SP&MR | swimming Pool & Mechnical Room |
| CP09-Trade | SS | Softscape |
| CP09_Discipline-7 | CON | Construction |
| CP09_Discipline-7 | ENG | Engineering |
| CP09_Discipline-7 | PRO | Procurment |
| CP09_Milestone-7 | MS#01 | Milestone # 01 |
| CP09_Milestone-7 | MS#02 | Milestone # 02 |
| CP09_Milestone-7 | MS#03 | Milestone # 03 |
| CP09_Milestone-7 | MS#04 | Milestone # 04 |
| CP09_Terrace-7 | TR01 | Terrace # 01 |
| CP09_Terrace-7 | TR02 | Terrace # 02 |
| CP09_Terrace-7 | TR03 | Terrace # 03 |
| CP09_Terrace-7 | TR04 | Terrace # 04 |
| CP09_Terrace-7 | TR05 | Terrace # 05 |
| CP09_Terrace-7 | TR06 | Terrace # 06 |
| CP09_Terrace-7 | TR07 | Terrace # 07 |
| CP09_Terrace-7 | TR08 | Terrace # 08 |
| DES | HD | Hardscape |
| DES | SO | Softscape |
| Hardscape | CON | Concrete In Situs |
| Hardscape | CRST | Crushed Stone |
| Hardscape | CURB | Curb |
| Hardscape | GRV | Garvel Layer |
| Hardscape | HND | Handrails |
| Hardscape | INTK | Interlock |
| Hardscape | LGRV | Loose Gravel |
| Hardscape | MRB | Marble |
| Hardscape | PLSHW | Pool Shower |
| Hardscape | SEAT | Block Seat |
| Hardscape | SING | Sinage |
| Hardscape | SND | Clean Sand |
| Hardscape | STP | Marble Steps |
| Hardscape | WPC | Wooden Floor Boards |
| Networks | ELEC | Electrical |
| Networks | IRR | Irrigation |
| Softscape | FRNT | Furntiure |
| Softscape | LHT | Lighting |
| Softscape | P.EQ | Play Equipment |
| Softscape | PLNT | Planting |
| Swimming Pool | SP01 | (New Code Value) |
| Swimming Pool | SP02 | (New Code Value) |
| Swimming Pool | SP03 | (New Code Value) |
| Swimming Pool | SP04 | (New Code Value) |
| Swimming Pool | SP05 | (New Code Value) |
| Swimming Pool | SP06 | (New Code Value) |
| Swimming Pool | SP07 | (New Code Value) |
| Swimming Pool | SP08 | (New Code Value) |
| Walls | CHW | (New Code Value) |
| Walls | RW | (New Code Value) |
